# EMO001 - Master Schedule Implementation_rev0

Schedule from MS Project, 2026-06-01 to 2026-10-20, status date 2026-07-17, A marks actual dates.

## Calendars

- Standard: Mon-Fri 08:00-12:00, 13:00-17:00; Sat-Sun off.

## Schedule

| ID | WBS | Task | Duration | Start | Finish | Predecessors | Complete | Remaining | Baseline start | Baseline finish | Baseline duration | Total slack | Free slack | Constraint | Work | Actual work | % Previsto | Text3 | Status1 | %Desvio Padrão | % Previsto Reprog. | Text12 | Text15 | Text19 | Disciplina | NA DOCUMENT NUMBER |
| --- | --- | --- | --- | --- | --- | --- | --- | --- | --- | --- | --- | --- | --- | --- | --- | --- | --- | --- | --- | --- | --- | --- | --- | --- | --- | --- |
| 1 | 1 | **CHS - ETHANOL PLANT** | 102d | 2026-06-01 A | 2026-10-20 |  | 16% | 85.39d | 2026-06-01 | 2026-10-20 | 102d | 0d |  |  | 10064h | 1400.79h | 336381,25% | 13,92% | On Time | -5,26% | 19,18% | 19,18% | -5,26% | PLANTA DE METAIS REFRATÁRIOS |  |  |
| 2 | 1.1 | **Milestone** | 102d | 2026-06-01 A | 2026-10-20 |  | 92% | 8.05d | 2026-06-01 | 2026-10-20 | 102d | 0d |  |  | 280.05h | 280.02h | 180% | 99,99% | On Time | 0,00% | 99,99% | 99,99% | 0,00% |  |  |  |
| 3 | 1.1.1 | Purchase Order (CHS) | 0d | 2026-06-01 A | 2026-06-01 A |  | 100% |  | 2026-06-01 | 2026-06-01 | 0d |  |  |  | 0.01h | 0.01h | 60% | 100% | Concluded | 0,00% | 100% | 100% | 0,00% |  | Management |  |
| 4 | 1.1.2 | Kick-off Meeting | 0d | 2026-06-02 A | 2026-06-02 A | 3FS+1d | 100% |  | 2026-06-02 | 2026-06-02 | 0d |  |  |  | 0.01h | 0.01h | 60% | 100% | Concluded | 0,00% | 100% | 100% | 0,00% |  | Management |  |
| 5 | 1.1.3 | Engineering Schedule | 5d | 2026-06-02 A | 2026-06-09 A | 3FS+1d | 100% |  | 2026-06-02 | 2026-06-09 | 5d |  |  | start no earlier than 2026-05-25 | 40h | 40h | 60% | 100% | Concluded | 0,00% | 100% | 100% | 0,00% |  | Management | CHS001-000-GP0-SC-001 |
| 6 | 1.1.4 | Master Document List | 5d | 2026-06-02 A | 2026-06-09 A | 3FS+1d | 100% |  | 2026-06-02 | 2026-06-09 | 5d |  |  |  | 40h | 40h |  | 100% | Concluded | 0,00% | 100% | 100% | 0,00% |  | Management | CHS001-000-GP0-DL-001 |
| 7 | 1.1.5 | Coordination Standard | 25d | 2026-06-02 A | 2026-07-07 A | 3FS+1d | 100% |  | 2026-06-02 | 2026-07-07 | 25d |  |  |  | 200h | 200h |  | 100% | Concluded | 0,00% | 100% | 100% | 0,00% |  | Management | CHS001-000-GP0-PR-001 |
| 8 | 1.1.6 | 30% DR | 1d | 2026-08-12 | 2026-08-12 | 28 |  |  | 2026-08-12 | 2026-08-12 | 1d | 49d |  |  | 0.01h |  |  | 0% | On Time | 0,00% | 0% | 0% | 0,00% |  | Management |  |
| 9 | 1.1.7 | 60% DR | 1d | 2026-09-28 | 2026-09-28 | 198 |  |  | 2026-09-28 | 2026-09-28 | 1d | 16d |  |  | 0.01h |  |  | 0% | On Time | 0,00% | 0% | 0% | 0,00% |  | Management |  |
| 10 | 1.1.8 | 90%DR | 1d | 2026-10-20 | 2026-10-20 | 499 |  |  | 2026-10-20 | 2026-10-20 | 1d | 0d |  |  | 0.01h |  |  | 0% | On Time | 0,00% | 0% | 0% | 0,00% |  | Management |  |
| 11 | 1.2 | **WFX Deliverables** | 29d | 2026-06-09 A | 2026-07-20 |  | 75% | 7.25d | 2026-06-09 | 2026-07-20 | 29d | 4.5d |  |  | 0.04h | 0.03h |  | 75% | On Time | 0,00% | 75% | 75% | 0,00% |  | WFX |  |
| 12 | 1.2.1 | Simulation - Preliminary | 0d | 2026-06-19 A | 2026-06-19 A | 3FS+14d | 100% |  | 2026-06-19 | 2026-06-19 | 0d |  |  |  | 0.01h | 0.01h |  | 100% | Concluded | 0,00% | 100% | 100% | 0,00% |  | WFX |  |
| 13 | 1.2.2 | Design Criterias | 0d | 2026-06-09 A | 2026-06-09 A | 3FS+6d | 100% |  | 2026-06-09 | 2026-06-09 | 0d |  |  |  | 0.01h | 0.01h |  | 100% | Concluded | 0,00% | 100% | 100% | 0,00% |  | WFX |  |
| 14 | 1.2.3 | Automation Philosofy | 0d | 2026-06-09 A | 2026-06-09 A | 3FS+6d | 100% |  | 2026-06-09 | 2026-06-09 | 0d |  |  |  | 0.01h | 0.01h |  | 100% | Concluded | 0,00% | 100% | 100% | 0,00% |  | WFX |  |
| 15 | 1.2.4 | Simulation - Concluded | 0d | 2026-07-20 | 2026-07-20 | 12FS+21d |  |  | 2026-07-20 | 2026-07-20 | 0d | 3d | 0d |  | 0.01h |  |  | 0% | On Time | 0,00% | 0% | 0% | 0,00% |  | WFX |  |
| 16 | 1.3 | **CHS Deliverables** | 10d | 2026-06-01 A | 2026-06-15 A |  | 100% |  | 2026-06-01 | 2026-06-15 | 10d |  |  |  | 0.07h | 0.07h |  | 100% | Concluded | 0,00% | 100% | 100% | 0,00% |  | CHS |  |
| 17 | 1.3.1 | Soil Analisys | 10d | 2026-06-01 A | 2026-06-15 A | 3 | 100% |  | 2026-06-01 | 2026-06-15 | 10d |  |  |  | 0.01h | 0.01h |  | 100% | Concluded | 0,00% | 100% | 100% | 0,00% |  | CHS |  |
| 18 | 1.3.2 | topographic surveys | 10d | 2026-06-01 A | 2026-06-15 A | 3 | 100% |  | 2026-06-01 | 2026-06-15 | 10d |  |  |  | 0.01h | 0.01h |  | 100% | Concluded | 0,00% | 100% | 100% | 0,00% |  | CHS |  |
| 19 | 1.3.3 | Internal criterias, specifications, and standards | 10d | 2026-06-01 A | 2026-06-15 A | 3 | 100% |  | 2026-06-01 | 2026-06-15 | 10d |  |  |  | 0.01h | 0.01h |  | 100% | Concluded | 0,00% | 100% | 100% | 0,00% |  | CHS |  |
| 20 | 1.3.4 | Existing PFDs and P&IDs | 10d | 2026-06-01 A | 2026-06-15 A | 3 | 100% |  | 2026-06-01 | 2026-06-15 | 10d |  |  |  | 0.01h | 0.01h |  | 100% | Concluded | 0,00% | 100% | 100% | 0,00% |  | CHS |  |
| 21 | 1.3.5 | Existing equipment List | 10d | 2026-06-01 A | 2026-06-15 A | 3 | 100% |  | 2026-06-01 | 2026-06-15 | 10d |  |  |  | 0.01h | 0.01h |  | 100% | Concluded | 0,00% | 100% | 100% | 0,00% |  | CHS |  |
| 22 | 1.3.6 | Existing Equipment Data sheets | 10d | 2026-06-01 A | 2026-06-15 A | 3 | 100% |  | 2026-06-01 | 2026-06-15 | 10d |  |  |  | 0.01h | 0.01h |  | 100% | Concluded | 0,00% | 100% | 100% | 0,00% |  | CHS |  |
| 23 | 1.3.7 | Piping and electric existing documents | 10d | 2026-06-01 A | 2026-06-15 A | 3 | 100% |  | 2026-06-01 | 2026-06-15 | 10d |  |  |  | 0.01h | 0.01h |  | 100% | Concluded | 0,00% | 100% | 100% | 0,00% |  | CHS |  |
| 24 | 1.4 | **Field Activies** | 42d | 2026-07-20 | 2026-09-16 |  |  |  | 2026-07-20 | 2026-09-16 | 42d | 25d |  |  | 300.01h |  |  | 0% | On Time | 0,00% | 0% | 0% | 0,00% |  |  |  |
| 25 | 1.4.1 | 3D Escaner | 10d | 2026-07-20 | 2026-08-03 | 3FS+35d |  |  | 2026-07-20 | 2026-08-03 | 10d | 25d | 0d | start no earlier than 2026-07-20 | 150h |  |  | 0% | On Time | 0,00% | 0% | 0% | 0,00% |  |  |  |
| 26 | 1.4.2 | Cloud Point | 10d | 2026-08-03 | 2026-08-17 | 25 |  |  | 2026-08-03 | 2026-08-17 | 10d | 25d | 0d |  | 150h |  |  | 0% | On Time | 0,00% | 0% | 0% | 0,00% |  |  |  |
| 27 | 1.4.3 | Site Visit 01 | 10d | 2026-09-02 | 2026-09-16 | 26FS+12d |  |  | 2026-09-02 | 2026-09-16 | 10d | 25d |  |  | 0.01h |  |  | 0% | On Time | 0,00% | 0% | 0% | 0,00% |  |  |  |

| ID | WBS | Task | Duration | Start | Finish | Predecessors | Complete | Remaining | Baseline start | Baseline finish | Baseline duration | Total slack | Free slack | Constraint | Work | Actual work | Text3 | Status1 | %Desvio Padrão | % Previsto Reprog. | Text12 | Text15 | Fase | Disciplina | NA DOCUMENT NUMBER |
| --- | --- | --- | --- | --- | --- | --- | --- | --- | --- | --- | --- | --- | --- | --- | --- | --- | --- | --- | --- | --- | --- | --- | --- | --- | --- |
| 28 | 1.5 | **Engineering - 30%** | 38d | 2026-06-19 A | 2026-08-11 |  | 44% | 21.16d | 2026-06-19 | 2026-08-11 | 38d | 0d |  |  | 2854.82h | 1120.67h | 39,26% | On Time | -18,55% | 57,81% | 57,81% | -18,55% | 30% |  |  |
| 29 | 1.5.1 | **Process** | 38d | 2026-06-19 A | 2026-08-11 |  | 48% | 19.79d | 2026-06-19 | 2026-08-11 | 38d | 0d |  |  | 1700h | 753.24h | 44,31% | On Time | -10,64% | 54,95% | 54,95% | -10,64% | 30% | Process |  |
| 30 | 1.5.1.1 | **Process Design Criteria** | 20d | 2026-06-19 A | 2026-07-17 |  | 20% | 16d | 2026-06-19 | 2026-07-17 | 20d | 0.1d |  |  | 24h | 4.8h | 20% | On Time | -80,00% | 100% | 100% | -80,00% | 30% | Process |  |
| 31 | 1.5.1.1.1 | Process Design Criteria | 20d | 2026-06-19 A | 2026-07-17 | 12 | 20% | 16d | 2026-06-19 | 2026-07-17 | 20d | 0.1d | 0d |  | 24h | 4.8h | 20% | On Time | -80,00% | 100% | 100% | -80,00% | 30% | Process | CHS001-000-PC6-TS-001 |
| 32 | 1.5.1.2 | **Process Flow Diagram - PFDs** | 20d | 2026-07-01 A | 2026-07-29 |  | 65% | 7.01d | 2026-07-01 | 2026-07-29 | 20d | 4.5d | 0d |  | 416h | 270.4h | 65% | On Time | 0,03% | 64,97% | 64,97% | 0,03% | 30% | Process |  |
| 33 | 1.5.1.2.1 | Process Flow Diagram -01 | 20d | 2026-07-01 A | 2026-07-29 | 12SS, 15FF+7d | 65% | 7.01d | 2026-07-01 | 2026-07-29 | 20d | 4.5d |  | start no earlier than 2026-06-19 | 16h | 10.4h | 65% | On Time | 0,03% | 64,97% | 64,97% | 0,03% | 30% | Process | CHS001-000-PC2-DR-001 |
| 34 | 1.5.1.2.2 | Process Flow Diagram -02 | 20d | 2026-07-01 A | 2026-07-29 | 12SS, 15FF+7d | 65% | 7.01d | 2026-07-01 | 2026-07-29 | 20d | 4.5d |  |  | 16h | 10.4h | 65% | On Time | 0,03% | 64,97% | 64,97% | 0,03% | 30% | Process | CHS001-000-PC2-DR-002 |
| 35 | 1.5.1.2.3 | Process Flow Diagram -03 | 20d | 2026-07-01 A | 2026-07-29 | 12SS, 15FF+7d | 65% | 7.01d | 2026-07-01 | 2026-07-29 | 20d | 4.5d |  |  | 16h | 10.4h | 65% | On Time | 0,03% | 64,97% | 64,97% | 0,03% | 30% | Process | CHS001-000-PC2-DR-003 |
| 36 | 1.5.1.2.4 | Process Flow Diagram -04 | 20d | 2026-07-01 A | 2026-07-29 | 12SS, 15FF+7d | 65% | 7.01d | 2026-07-01 | 2026-07-29 | 20d | 4.5d |  |  | 16h | 10.4h | 65% | On Time | 0,03% | 64,97% | 64,97% | 0,03% | 30% | Process | CHS001-000-PC2-DR-004 |
| 37 | 1.5.1.2.5 | Process Flow Diagram -05 | 20d | 2026-07-01 A | 2026-07-29 | 12SS, 15FF+7d | 65% | 7.01d | 2026-07-01 | 2026-07-29 | 20d | 4.5d |  |  | 16h | 10.4h | 65% | On Time | 0,03% | 64,97% | 64,97% | 0,03% | 30% | Process | CHS001-000-PC2-DR-005 |
| 38 | 1.5.1.2.6 | Process Flow Diagram -06 | 20d | 2026-07-01 A | 2026-07-29 | 12SS, 15FF+7d | 65% | 7.01d | 2026-07-01 | 2026-07-29 | 20d | 4.5d |  |  | 16h | 10.4h | 65% | On Time | 0,03% | 64,97% | 64,97% | 0,03% | 30% | Process | CHS001-000-PC2-DR-006 |
| 39 | 1.5.1.2.7 | Process Flow Diagram -07 | 20d | 2026-07-01 A | 2026-07-29 | 12SS, 15FF+7d | 65% | 7.01d | 2026-07-01 | 2026-07-29 | 20d | 4.5d |  |  | 16h | 10.4h | 65% | On Time | 0,03% | 64,97% | 64,97% | 0,03% | 30% | Process | CHS001-000-PC2-DR-007 |
| 40 | 1.5.1.2.8 | Process Flow Diagram -08 | 20d | 2026-07-01 A | 2026-07-29 | 12SS, 15FF+7d | 65% | 7.01d | 2026-07-01 | 2026-07-29 | 20d | 4.5d |  |  | 16h | 10.4h | 65% | On Time | 0,03% | 64,97% | 64,97% | 0,03% | 30% | Process | CHS001-000-PC2-DR-008 |
| 41 | 1.5.1.2.9 | Process Flow Diagram -09 | 20d | 2026-07-01 A | 2026-07-29 | 12SS, 15FF+7d | 65% | 7.01d | 2026-07-01 | 2026-07-29 | 20d | 4.5d |  |  | 16h | 10.4h | 65% | On Time | 0,03% | 64,97% | 64,97% | 0,03% | 30% | Process | CHS001-000-PC2-DR-009 |
| 42 | 1.5.1.2.10 | Process Flow Diagram -10 | 20d | 2026-07-01 A | 2026-07-29 | 12SS, 15FF+7d | 65% | 7.01d | 2026-07-01 | 2026-07-29 | 20d | 4.5d |  |  | 16h | 10.4h | 65% | On Time | 0,03% | 64,97% | 64,97% | 0,03% | 30% | Process | CHS001-000-PC2-DR-010 |
| 43 | 1.5.1.2.11 | Process Flow Diagram -11 | 20d | 2026-07-01 A | 2026-07-29 | 12SS, 15FF+7d | 65% | 7.01d | 2026-07-01 | 2026-07-29 | 20d | 4.5d |  |  | 16h | 10.4h | 65% | On Time | 0,03% | 64,97% | 64,97% | 0,03% | 30% | Process | CHS001-000-PC2-DR-011 |
| 44 | 1.5.1.2.12 | Process Flow Diagram -12 | 20d | 2026-07-01 A | 2026-07-29 | 12SS, 15FF+7d | 65% | 7.01d | 2026-07-01 | 2026-07-29 | 20d | 4.5d |  |  | 16h | 10.4h | 65% | On Time | 0,03% | 64,97% | 64,97% | 0,03% | 30% | Process | CHS001-000-PC2-DR-012 |
| 45 | 1.5.1.2.13 | Process Flow Diagram -13 | 20d | 2026-07-01 A | 2026-07-29 | 12SS, 15FF+7d | 65% | 7.01d | 2026-07-01 | 2026-07-29 | 20d | 4.5d |  |  | 16h | 10.4h | 65% | On Time | 0,03% | 64,97% | 64,97% | 0,03% | 30% | Process | CHS001-000-PC2-DR-013 |
| 46 | 1.5.1.2.14 | Process Flow Diagram -14 | 20d | 2026-07-01 A | 2026-07-29 | 12SS, 15FF+7d | 65% | 7.01d | 2026-07-01 | 2026-07-29 | 20d | 4.5d |  |  | 16h | 10.4h | 65% | On Time | 0,03% | 64,97% | 64,97% | 0,03% | 30% | Process | CHS001-000-PC2-DR-014 |
| 47 | 1.5.1.2.15 | Process Flow Diagram -15 | 20d | 2026-07-01 A | 2026-07-29 | 12SS, 15FF+7d | 65% | 7.01d | 2026-07-01 | 2026-07-29 | 20d | 4.5d |  |  | 16h | 10.4h | 65% | On Time | 0,03% | 64,97% | 64,97% | 0,03% | 30% | Process | CHS001-000-PC2-DR-015 |
| 48 | 1.5.1.2.16 | Process Flow Diagram -16 | 20d | 2026-07-01 A | 2026-07-29 | 12SS, 15FF+7d | 65% | 7.01d | 2026-07-01 | 2026-07-29 | 20d | 4.5d |  |  | 16h | 10.4h | 65% | On Time | 0,03% | 64,97% | 64,97% | 0,03% | 30% | Process | CHS001-000-PC2-DR-016 |
| 49 | 1.5.1.2.17 | Process Flow Diagram -17 | 20d | 2026-07-01 A | 2026-07-29 | 12SS, 15FF+7d | 65% | 7.01d | 2026-07-01 | 2026-07-29 | 20d | 4.5d |  |  | 16h | 10.4h | 65% | On Time | 0,03% | 64,97% | 64,97% | 0,03% | 30% | Process | CHS001-000-PC2-DR-017 |
| 50 | 1.5.1.2.18 | Process Flow Diagram -18 | 20d | 2026-07-01 A | 2026-07-29 | 12SS, 15FF+7d | 65% | 7.01d | 2026-07-01 | 2026-07-29 | 20d | 4.5d |  |  | 16h | 10.4h | 65% | On Time | 0,03% | 64,97% | 64,97% | 0,03% | 30% | Process | CHS001-000-PC2-DR-018 |
| 51 | 1.5.1.2.19 | Process Flow Diagram -19 | 20d | 2026-07-01 A | 2026-07-29 | 12SS, 15FF+7d | 65% | 7.01d | 2026-07-01 | 2026-07-29 | 20d | 4.5d |  |  | 16h | 10.4h | 65% | On Time | 0,03% | 64,97% | 64,97% | 0,03% | 30% | Process | CHS001-000-PC2-DR-019 |
| 52 | 1.5.1.2.20 | Process Flow Diagram -20 | 20d | 2026-07-01 A | 2026-07-29 | 12SS, 15FF+7d | 65% | 7.01d | 2026-07-01 | 2026-07-29 | 20d | 4.5d |  |  | 16h | 10.4h | 65% | On Time | 0,03% | 64,97% | 64,97% | 0,03% | 30% | Process | CHS001-000-PC2-DR-020 |
| 53 | 1.5.1.2.21 | Process Flow Diagram -21 | 20d | 2026-07-01 A | 2026-07-29 | 12SS, 15FF+7d | 65% | 7.01d | 2026-07-01 | 2026-07-29 | 20d | 4.5d |  |  | 16h | 10.4h | 65% | On Time | 0,03% | 64,97% | 64,97% | 0,03% | 30% | Process | CHS001-000-PC2-DR-021 |
| 54 | 1.5.1.2.22 | Process Flow Diagram -22 | 20d | 2026-07-01 A | 2026-07-29 | 12SS, 15FF+7d | 65% | 7.01d | 2026-07-01 | 2026-07-29 | 20d | 4.5d |  |  | 16h | 10.4h | 65% | On Time | 0,03% | 64,97% | 64,97% | 0,03% | 30% | Process | CHS001-000-PC2-DR-022 |
| 55 | 1.5.1.2.23 | Process Flow Diagram -23 | 20d | 2026-07-01 A | 2026-07-29 | 12SS, 15FF+7d | 65% | 7.01d | 2026-07-01 | 2026-07-29 | 20d | 4.5d |  |  | 16h | 10.4h | 65% | On Time | 0,03% | 64,97% | 64,97% | 0,03% | 30% | Process | CHS001-000-PC2-DR-023 |
| 56 | 1.5.1.2.24 | Process Flow Diagram -24 | 20d | 2026-07-01 A | 2026-07-29 | 12SS, 15FF+7d | 65% | 7.01d | 2026-07-01 | 2026-07-29 | 20d | 4.5d |  |  | 16h | 10.4h | 65% | On Time | 0,03% | 64,97% | 64,97% | 0,03% | 30% | Process | CHS001-000-PC2-DR-024 |
| 57 | 1.5.1.2.25 | Process Flow Diagram -25 | 20d | 2026-07-01 A | 2026-07-29 | 12SS, 15FF+7d | 65% | 7.01d | 2026-07-01 | 2026-07-29 | 20d | 4.5d |  |  | 16h | 10.4h | 65% | On Time | 0,03% | 64,97% | 64,97% | 0,03% | 30% | Process | CHS001-000-PC2-DR-025 |
| 58 | 1.5.1.2.26 | Process Flow Diagram -26 | 20d | 2026-07-01 A | 2026-07-29 | 12SS, 15FF+7d | 65% | 7.01d | 2026-07-01 | 2026-07-29 | 20d | 4.5d |  |  | 16h | 10.4h | 65% | On Time | 0,03% | 64,97% | 64,97% | 0,03% | 30% | Process | CHS001-000-PC2-DR-026 |

| ID | WBS | Task | Duration | Start | Finish | Predecessors | Complete | Remaining | Baseline start | Baseline finish | Baseline duration | Total slack | Work | Actual work | Text3 | Status1 | Disciplina | %Desvio Padrão | % Previsto Reprog. | Text12 | Text15 | Fase | NA DOCUMENT NUMBER |
| --- | --- | --- | --- | --- | --- | --- | --- | --- | --- | --- | --- | --- | --- | --- | --- | --- | --- | --- | --- | --- | --- | --- | --- |
| 59 | 1.5.1.3 | **Process Instrumentation Diagram PI&Ds** | 32.01d | 2026-06-25 A | 2026-08-10 |  | 39% | 19.54d | 2026-06-25 | 2026-08-10 | 32.01d | 1.99d | 960h | 374.4h | 39% | On Time | Process | -14,11% | 53,11% | 53,11% | -14,11% | 30% |  |
| 60 | 1.5.1.3.1 | Process Instrumentation Diagram - 01 | 15d | 2026-06-25 A | 2026-08-10 | 32FS-7d | 30% | 10.51d | 2026-06-25 | 2026-08-10 | 15d | 1.99d | 16h | 4.8h | 30% | On Time | Process | -23,11% | 53,11% | 53,11% | -23,11% | 30% | CHS001-000-PC3-DR-001 |
| 61 | 1.5.1.3.2 | Process Instrumentation Diagram - 02 | 15d | 2026-06-25 A | 2026-08-10 | 32FS-7d | 30% | 10.51d | 2026-06-25 | 2026-08-10 | 15d | 1.99d | 16h | 4.8h | 30% | On Time | Process | -23,11% | 53,11% | 53,11% | -23,11% | 30% | CHS001-000-PC3-DR-002 |
| 62 | 1.5.1.3.3 | Process Instrumentation Diagram - 03 | 15d | 2026-06-25 A | 2026-08-10 | 32FS-7d | 30% | 10.51d | 2026-06-25 | 2026-08-10 | 15d | 1.99d | 16h | 4.8h | 30% | On Time | Process | -23,11% | 53,11% | 53,11% | -23,11% | 30% | CHS001-000-PC3-DR-003 |
| 63 | 1.5.1.3.4 | Process Instrumentation Diagram - 04 | 15d | 2026-06-25 A | 2026-08-10 | 32FS-7d | 30% | 10.51d | 2026-06-25 | 2026-08-10 | 15d | 1.99d | 16h | 4.8h | 30% | On Time | Process | -23,11% | 53,11% | 53,11% | -23,11% | 30% | CHS001-000-PC3-DR-004 |
| 64 | 1.5.1.3.5 | Process Instrumentation Diagram - 05 | 15d | 2026-06-25 A | 2026-08-10 | 32FS-7d | 30% | 10.51d | 2026-06-25 | 2026-08-10 | 15d | 1.99d | 16h | 4.8h | 30% | On Time | Process | -23,11% | 53,11% | 53,11% | -23,11% | 30% | CHS001-000-PC3-DR-005 |
| 65 | 1.5.1.3.6 | Process Instrumentation Diagram - 06 | 15d | 2026-06-25 A | 2026-08-10 | 32FS-7d | 30% | 10.51d | 2026-06-25 | 2026-08-10 | 15d | 1.99d | 16h | 4.8h | 30% | On Time | Process | -23,11% | 53,11% | 53,11% | -23,11% | 30% | CHS001-000-PC3-DR-006 |
| 66 | 1.5.1.3.7 | Process Instrumentation Diagram - 07 | 15d | 2026-06-25 A | 2026-08-10 | 32FS-7d | 30% | 10.51d | 2026-06-25 | 2026-08-10 | 15d | 1.99d | 16h | 4.8h | 30% | On Time | Process | -23,11% | 53,11% | 53,11% | -23,11% | 30% | CHS001-000-PC3-DR-007 |
| 67 | 1.5.1.3.8 | Process Instrumentation Diagram - 08 | 15d | 2026-06-25 A | 2026-08-10 | 32FS-7d | 30% | 10.51d | 2026-06-25 | 2026-08-10 | 15d | 1.99d | 16h | 4.8h | 30% | On Time | Process | -23,11% | 53,11% | 53,11% | -23,11% | 30% | CHS001-000-PC3-DR-008 |
| 68 | 1.5.1.3.9 | Process Instrumentation Diagram - 09 | 15d | 2026-06-25 A | 2026-08-10 | 32FS-7d | 30% | 10.51d | 2026-06-25 | 2026-08-10 | 15d | 1.99d | 16h | 4.8h | 30% | On Time | Process | -23,11% | 53,11% | 53,11% | -23,11% | 30% | CHS001-000-PC3-DR-009 |
| 69 | 1.5.1.3.10 | Process Instrumentation Diagram - 10 | 15d | 2026-06-25 A | 2026-08-10 | 32FS-7d | 30% | 10.51d | 2026-06-25 | 2026-08-10 | 15d | 1.99d | 16h | 4.8h | 30% | On Time | Process | -23,11% | 53,11% | 53,11% | -23,11% | 30% | CHS001-000-PC3-DR-010 |
| 70 | 1.5.1.3.11 | Process Instrumentation Diagram - 11 | 15d | 2026-06-25 A | 2026-08-10 | 32FS-7d | 30% | 10.51d | 2026-06-25 | 2026-08-10 | 15d | 1.99d | 16h | 4.8h | 30% | On Time | Process | -23,11% | 53,11% | 53,11% | -23,11% | 30% | CHS001-000-PC3-DR-011 |
| 71 | 1.5.1.3.12 | Process Instrumentation Diagram - 12 | 15d | 2026-06-25 A | 2026-08-10 | 32FS-7d | 30% | 10.51d | 2026-06-25 | 2026-08-10 | 15d | 1.99d | 16h | 4.8h | 30% | On Time | Process | -23,11% | 53,11% | 53,11% | -23,11% | 30% | CHS001-000-PC3-DR-012 |
| 72 | 1.5.1.3.13 | Process Instrumentation Diagram - 13 | 15d | 2026-06-25 A | 2026-08-10 | 32FS-7d | 30% | 10.51d | 2026-06-25 | 2026-08-10 | 15d | 1.99d | 16h | 4.8h | 30% | On Time | Process | -23,11% | 53,11% | 53,11% | -23,11% | 30% | CHS001-000-PC3-DR-013 |
| 73 | 1.5.1.3.14 | Process Instrumentation Diagram - 14 | 15d | 2026-06-25 A | 2026-08-10 | 32FS-7d | 30% | 10.51d | 2026-06-25 | 2026-08-10 | 15d | 1.99d | 16h | 4.8h | 30% | On Time | Process | -23,11% | 53,11% | 53,11% | -23,11% | 30% | CHS001-000-PC3-DR-014 |
| 74 | 1.5.1.3.15 | Process Instrumentation Diagram - 15 | 15d | 2026-06-25 A | 2026-08-10 | 32FS-7d | 30% | 10.51d | 2026-06-25 | 2026-08-10 | 15d | 1.99d | 16h | 4.8h | 30% | On Time | Process | -23,11% | 53,11% | 53,11% | -23,11% | 30% | CHS001-000-PC3-DR-015 |
| 75 | 1.5.1.3.16 | Process Instrumentation Diagram - 16 | 15d | 2026-06-25 A | 2026-08-10 | 32FS-7d | 30% | 10.51d | 2026-06-25 | 2026-08-10 | 15d | 1.99d | 16h | 4.8h | 30% | On Time | Process | -23,11% | 53,11% | 53,11% | -23,11% | 30% | CHS001-000-PC3-DR-016 |
| 76 | 1.5.1.3.17 | Process Instrumentation Diagram - 17 | 15d | 2026-06-25 A | 2026-08-10 | 32FS-7d | 30% | 10.51d | 2026-06-25 | 2026-08-10 | 15d | 1.99d | 16h | 4.8h | 30% | On Time | Process | -23,11% | 53,11% | 53,11% | -23,11% | 30% | CHS001-000-PC3-DR-017 |
| 77 | 1.5.1.3.18 | Process Instrumentation Diagram - 18 | 15d | 2026-06-25 A | 2026-08-10 | 32FS-7d | 30% | 10.51d | 2026-06-25 | 2026-08-10 | 15d | 1.99d | 16h | 4.8h | 30% | On Time | Process | -23,11% | 53,11% | 53,11% | -23,11% | 30% | CHS001-000-PC3-DR-018 |
| 78 | 1.5.1.3.19 | Process Instrumentation Diagram - 19 | 15d | 2026-06-25 A | 2026-08-10 | 32FS-7d | 30% | 10.51d | 2026-06-25 | 2026-08-10 | 15d | 1.99d | 16h | 4.8h | 30% | On Time | Process | -23,11% | 53,11% | 53,11% | -23,11% | 30% | CHS001-000-PC3-DR-019 |
| 79 | 1.5.1.3.20 | Process Instrumentation Diagram - 20 | 15d | 2026-06-25 A | 2026-08-10 | 32FS-7d | 30% | 10.51d | 2026-06-25 | 2026-08-10 | 15d | 1.99d | 16h | 4.8h | 30% | On Time | Process | -23,11% | 53,11% | 53,11% | -23,11% | 30% | CHS001-000-PC3-DR-020 |
| 80 | 1.5.1.3.21 | Process Instrumentation Diagram - 21 | 15d | 2026-06-25 A | 2026-08-10 | 32FS-7d | 30% | 10.51d | 2026-06-25 | 2026-08-10 | 15d | 1.99d | 16h | 4.8h | 30% | On Time | Process | -23,11% | 53,11% | 53,11% | -23,11% | 30% | CHS001-000-PC3-DR-021 |
| 81 | 1.5.1.3.22 | Process Instrumentation Diagram - 22 | 15d | 2026-06-25 A | 2026-08-10 | 32FS-7d | 30% | 10.51d | 2026-06-25 | 2026-08-10 | 15d | 1.99d | 16h | 4.8h | 30% | On Time | Process | -23,11% | 53,11% | 53,11% | -23,11% | 30% | CHS001-000-PC3-DR-022 |
| 82 | 1.5.1.3.23 | Process Instrumentation Diagram - 23 | 15d | 2026-06-25 A | 2026-08-10 | 32FS-7d | 30% | 10.51d | 2026-06-25 | 2026-08-10 | 15d | 1.99d | 16h | 4.8h | 30% | On Time | Process | -23,11% | 53,11% | 53,11% | -23,11% | 30% | CHS001-000-PC3-DR-023 |
| 83 | 1.5.1.3.24 | Process Instrumentation Diagram - 24 | 15d | 2026-06-25 A | 2026-08-10 | 32FS-7d | 30% | 10.51d | 2026-06-25 | 2026-08-10 | 15d | 1.99d | 16h | 4.8h | 30% | On Time | Process | -23,11% | 53,11% | 53,11% | -23,11% | 30% | CHS001-000-PC3-DR-024 |
| 84 | 1.5.1.3.25 | Process Instrumentation Diagram - 25 | 15d | 2026-06-25 A | 2026-08-10 | 32FS-7d | 30% | 10.51d | 2026-06-25 | 2026-08-10 | 15d | 1.99d | 16h | 4.8h | 30% | On Time | Process | -23,11% | 53,11% | 53,11% | -23,11% | 30% | CHS001-000-PC3-DR-025 |
| 85 | 1.5.1.3.26 | Process Instrumentation Diagram - 26 | 15d | 2026-06-25 A | 2026-08-10 | 32FS-7d | 30% | 10.51d | 2026-06-25 | 2026-08-10 | 15d | 1.99d | 16h | 4.8h | 30% | On Time | Process | -23,11% | 53,11% | 53,11% | -23,11% | 30% | CHS001-000-PC3-DR-026 |
| 86 | 1.5.1.3.27 | Process Instrumentation Diagram - 27 | 15d | 2026-06-25 A | 2026-08-10 | 32FS-7d | 30% | 10.51d | 2026-06-25 | 2026-08-10 | 15d | 1.99d | 16h | 4.8h | 30% | On Time | Process | -23,11% | 53,11% | 53,11% | -23,11% | 30% | CHS001-000-PC3-DR-027 |
| 87 | 1.5.1.3.28 | Process Instrumentation Diagram - 28 | 15d | 2026-06-25 A | 2026-08-10 | 32FS-7d | 30% | 10.51d | 2026-06-25 | 2026-08-10 | 15d | 1.99d | 16h | 4.8h | 30% | On Time | Process | -23,11% | 53,11% | 53,11% | -23,11% | 30% | CHS001-000-PC3-DR-028 |
| 88 | 1.5.1.3.29 | Process Instrumentation Diagram - 29 | 15d | 2026-06-25 A | 2026-08-10 | 32FS-7d | 30% | 10.51d | 2026-06-25 | 2026-08-10 | 15d | 1.99d | 16h | 4.8h | 30% | On Time | Process | -23,11% | 53,11% | 53,11% | -23,11% | 30% | CHS001-000-PC3-DR-029 |
| 89 | 1.5.1.3.30 | Process Instrumentation Diagram - 30 | 15d | 2026-06-25 A | 2026-08-10 | 32FS-7d | 30% | 10.51d | 2026-06-25 | 2026-08-10 | 15d | 1.99d | 16h | 4.8h | 30% | On Time | Process | -23,11% | 53,11% | 53,11% | -23,11% | 30% | CHS001-000-PC3-DR-030 |
| 90 | 1.5.1.3.31 | Process Instrumentation Diagram - 31 | 15d | 2026-06-25 A | 2026-08-10 | 32FS-7d | 30% | 10.51d | 2026-06-25 | 2026-08-10 | 15d | 1.99d | 16h | 4.8h | 30% | On Time | Process | -23,11% | 53,11% | 53,11% | -23,11% | 30% | CHS001-000-PC3-DR-031 |
| 91 | 1.5.1.3.32 | Process Instrumentation Diagram - 32 | 15d | 2026-06-25 A | 2026-08-10 | 32FS-7d | 30% | 10.51d | 2026-06-25 | 2026-08-10 | 15d | 1.99d | 16h | 4.8h | 30% | On Time | Process | -23,11% | 53,11% | 53,11% | -23,11% | 30% | CHS001-000-PC3-DR-032 |
| 92 | 1.5.1.3.33 | Process Instrumentation Diagram - 33 | 15d | 2026-06-25 A | 2026-08-10 | 32FS-7d | 30% | 10.51d | 2026-06-25 | 2026-08-10 | 15d | 1.99d | 16h | 4.8h | 30% | On Time | Process | -23,11% | 53,11% | 53,11% | -23,11% | 30% | CHS001-000-PC3-DR-033 |
| 93 | 1.5.1.3.34 | Process Instrumentation Diagram - 34 | 15d | 2026-06-25 A | 2026-08-10 | 32FS-7d | 30% | 10.51d | 2026-06-25 | 2026-08-10 | 15d | 1.99d | 16h | 4.8h | 30% | On Time | Process | -23,11% | 53,11% | 53,11% | -23,11% | 30% | CHS001-000-PC3-DR-034 |
| 94 | 1.5.1.3.35 | Process Instrumentation Diagram - 35 | 15d | 2026-06-25 A | 2026-08-10 | 32FS-7d | 30% | 10.51d | 2026-06-25 | 2026-08-10 | 15d | 1.99d | 16h | 4.8h | 30% | On Time | Process | -23,11% | 53,11% | 53,11% | -23,11% | 30% | CHS001-000-PC3-DR-035 |
| 95 | 1.5.1.3.36 | Process Instrumentation Diagram - 36 | 15d | 2026-06-25 A | 2026-08-10 | 32FS-7d | 30% | 10.51d | 2026-06-25 | 2026-08-10 | 15d | 1.99d | 16h | 4.8h | 30% | On Time | Process | -23,11% | 53,11% | 53,11% | -23,11% | 30% | CHS001-000-PC3-DR-036 |
| 96 | 1.5.1.3.37 | Process Instrumentation Diagram - 37 | 15d | 2026-06-25 A | 2026-08-10 | 32FS-7d | 30% | 10.51d | 2026-06-25 | 2026-08-10 | 15d | 1.99d | 16h | 4.8h | 30% | On Time | Process | -23,11% | 53,11% | 53,11% | -23,11% | 30% | CHS001-000-PC3-DR-037 |
| 97 | 1.5.1.3.38 | Process Instrumentation Diagram - 38 | 15d | 2026-06-25 A | 2026-08-10 | 32FS-7d | 30% | 10.51d | 2026-06-25 | 2026-08-10 | 15d | 1.99d | 16h | 4.8h | 30% | On Time | Process | -23,11% | 53,11% | 53,11% | -23,11% | 30% | CHS001-000-PC3-DR-038 |
| 98 | 1.5.1.3.39 | Process Instrumentation Diagram - 39 | 15d | 2026-06-25 A | 2026-08-10 | 32FS-7d | 30% | 10.51d | 2026-06-25 | 2026-08-10 | 15d | 1.99d | 16h | 4.8h | 30% | On Time | Process | -23,11% | 53,11% | 53,11% | -23,11% | 30% | CHS001-000-PC3-DR-039 |
| 99 | 1.5.1.3.40 | Process Instrumentation Diagram - 40 | 15d | 2026-06-25 A | 2026-08-10 | 32FS-7d | 30% | 10.51d | 2026-06-25 | 2026-08-10 | 15d | 1.99d | 16h | 4.8h | 30% | On Time | Process | -23,11% | 53,11% | 53,11% | -23,11% | 30% | CHS001-000-PC3-DR-040 |
| 100 | 1.5.1.3.41 | Process Instrumentation Diagram - 41 | 15d | 2026-06-25 A | 2026-08-10 | 32FS-7d | 30% | 10.51d | 2026-06-25 | 2026-08-10 | 15d | 1.99d | 16h | 4.8h | 30% | On Time | Process | -23,11% | 53,11% | 53,11% | -23,11% | 30% | CHS001-000-PC3-DR-041 |
| 101 | 1.5.1.3.42 | Process Instrumentation Diagram - 42 | 15d | 2026-06-25 A | 2026-08-10 | 32FS-7d | 30% | 10.51d | 2026-06-25 | 2026-08-10 | 15d | 1.99d | 16h | 4.8h | 30% | On Time | Process | -23,11% | 53,11% | 53,11% | -23,11% | 30% | CHS001-000-PC3-DR-042 |
| 102 | 1.5.1.3.43 | Process Instrumentation Diagram - 43 | 15d | 2026-06-25 A | 2026-08-10 | 32FS-7d | 60% | 6.01d | 2026-06-25 | 2026-08-10 | 15d | 1.99d | 16h | 9.6h | 60% | On Time | Process | 6,89% | 53,11% | 53,11% | 6,89% | 30% | CHS001-000-PC3-DR-043 |
| 103 | 1.5.1.3.44 | Process Instrumentation Diagram - 44 | 15d | 2026-06-25 A | 2026-08-10 | 32FS-7d | 60% | 6.01d | 2026-06-25 | 2026-08-10 | 15d | 1.99d | 16h | 9.6h | 60% | On Time | Process | 6,89% | 53,11% | 53,11% | 6,89% | 30% | CHS001-000-PC3-DR-044 |
| 104 | 1.5.1.3.45 | Process Instrumentation Diagram - 45 | 15d | 2026-06-25 A | 2026-08-10 | 32FS-7d | 60% | 6.01d | 2026-06-25 | 2026-08-10 | 15d | 1.99d | 16h | 9.6h | 60% | On Time | Process | 6,89% | 53,11% | 53,11% | 6,89% | 30% | CHS001-000-PC3-DR-045 |
| 105 | 1.5.1.3.46 | Process Instrumentation Diagram - 46 | 15d | 2026-06-25 A | 2026-08-10 | 32FS-7d | 60% | 6.01d | 2026-06-25 | 2026-08-10 | 15d | 1.99d | 16h | 9.6h | 60% | On Time | Process | 6,89% | 53,11% | 53,11% | 6,89% | 30% | CHS001-000-PC3-DR-046 |
| 106 | 1.5.1.3.47 | Process Instrumentation Diagram - 47 | 15d | 2026-06-25 A | 2026-08-10 | 32FS-7d | 60% | 6.01d | 2026-06-25 | 2026-08-10 | 15d | 1.99d | 16h | 9.6h | 60% | On Time | Process | 6,89% | 53,11% | 53,11% | 6,89% | 30% | CHS001-000-PC3-DR-047 |
| 107 | 1.5.1.3.48 | Process Instrumentation Diagram - 48 | 15d | 2026-06-25 A | 2026-08-10 | 32FS-7d | 60% | 6.01d | 2026-06-25 | 2026-08-10 | 15d | 1.99d | 16h | 9.6h | 60% | On Time | Process | 6,89% | 53,11% | 53,11% | 6,89% | 30% | CHS001-000-PC3-DR-048 |
| 108 | 1.5.1.3.49 | Process Instrumentation Diagram - 49 | 15d | 2026-06-25 A | 2026-08-10 | 32FS-7d | 60% | 6.01d | 2026-06-25 | 2026-08-10 | 15d | 1.99d | 16h | 9.6h | 60% | On Time | Process | 6,89% | 53,11% | 53,11% | 6,89% | 30% | CHS001-000-PC3-DR-049 |
| 109 | 1.5.1.3.50 | Process Instrumentation Diagram - 50 | 15d | 2026-06-25 A | 2026-08-10 | 32FS-7d | 60% | 6.01d | 2026-06-25 | 2026-08-10 | 15d | 1.99d | 16h | 9.6h | 60% | On Time | Process | 6,89% | 53,11% | 53,11% | 6,89% | 30% | CHS001-000-PC3-DR-050 |
| 110 | 1.5.1.3.51 | Process Instrumentation Diagram - 51 | 15d | 2026-06-25 A | 2026-08-10 | 32FS-7d | 60% | 6.01d | 2026-06-25 | 2026-08-10 | 15d | 1.99d | 16h | 9.6h | 60% | On Time | Process | 6,89% | 53,11% | 53,11% | 6,89% | 30% | CHS001-000-PC3-DR-051 |
| 111 | 1.5.1.3.52 | Process Instrumentation Diagram - 52 | 15d | 2026-06-25 A | 2026-08-10 | 32FS-7d | 60% | 6.01d | 2026-06-25 | 2026-08-10 | 15d | 1.99d | 16h | 9.6h | 60% | On Time | Process | 6,89% | 53,11% | 53,11% | 6,89% | 30% | CHS001-000-PC3-DR-052 |
| 112 | 1.5.1.3.53 | Process Instrumentation Diagram - 53 | 15d | 2026-06-25 A | 2026-08-10 | 32FS-7d | 60% | 6.01d | 2026-06-25 | 2026-08-10 | 15d | 1.99d | 16h | 9.6h | 60% | On Time | Process | 6,89% | 53,11% | 53,11% | 6,89% | 30% | CHS001-000-PC3-DR-053 |
| 113 | 1.5.1.3.54 | Process Instrumentation Diagram - 54 | 15d | 2026-06-25 A | 2026-08-10 | 32FS-7d | 60% | 6.01d | 2026-06-25 | 2026-08-10 | 15d | 1.99d | 16h | 9.6h | 60% | On Time | Process | 6,89% | 53,11% | 53,11% | 6,89% | 30% | CHS001-000-PC3-DR-054 |
| 114 | 1.5.1.3.55 | Process Instrumentation Diagram - 55 | 15d | 2026-06-25 A | 2026-08-10 | 32FS-7d | 60% | 6.01d | 2026-06-25 | 2026-08-10 | 15d | 1.99d | 16h | 9.6h | 60% | On Time | Process | 6,89% | 53,11% | 53,11% | 6,89% | 30% | CHS001-000-PC3-DR-055 |
| 115 | 1.5.1.3.56 | Process Instrumentation Diagram - 56 | 15d | 2026-06-25 A | 2026-08-10 | 32FS-7d | 60% | 6.01d | 2026-06-25 | 2026-08-10 | 15d | 1.99d | 16h | 9.6h | 60% | On Time | Process | 6,89% | 53,11% | 53,11% | 6,89% | 30% | CHS001-000-PC3-DR-056 |
| 116 | 1.5.1.3.57 | Process Instrumentation Diagram - 57 | 15d | 2026-06-25 A | 2026-08-10 | 32FS-7d | 60% | 6.01d | 2026-06-25 | 2026-08-10 | 15d | 1.99d | 16h | 9.6h | 60% | On Time | Process | 6,89% | 53,11% | 53,11% | 6,89% | 30% | CHS001-000-PC3-DR-057 |
| 117 | 1.5.1.3.58 | Process Instrumentation Diagram - 58 | 15d | 2026-06-25 A | 2026-08-10 | 32FS-7d | 60% | 6.01d | 2026-06-25 | 2026-08-10 | 15d | 1.99d | 16h | 9.6h | 60% | On Time | Process | 6,89% | 53,11% | 53,11% | 6,89% | 30% | CHS001-000-PC3-DR-058 |
| 118 | 1.5.1.3.59 | Process Instrumentation Diagram - 59 | 15d | 2026-06-25 A | 2026-08-10 | 32FS-7d | 60% | 6.01d | 2026-06-25 | 2026-08-10 | 15d | 1.99d | 16h | 9.6h | 60% | On Time | Process | 6,89% | 53,11% | 53,11% | 6,89% | 30% | CHS001-000-PC3-DR-059 |
| 119 | 1.5.1.3.60 | Process Instrumentation Diagram - 60 | 15d | 2026-06-25 A | 2026-08-10 | 32FS-7d | 60% | 6.01d | 2026-06-25 | 2026-08-10 | 15d | 1.99d | 16h | 9.6h | 60% | On Time | Process | 6,89% | 53,11% | 53,11% | 6,89% | 30% | CHS001-000-PC3-DR-060 |

| ID | WBS | Task | Duration | Start | Finish | Predecessors | Complete | Remaining | Baseline start | Baseline finish | Baseline duration | Total slack | Work | Actual work | Text3 | Status1 | Disciplina | %Desvio Padrão | % Previsto Reprog. | Text12 | Text15 | Fase | NA DOCUMENT NUMBER |
| --- | --- | --- | --- | --- | --- | --- | --- | --- | --- | --- | --- | --- | --- | --- | --- | --- | --- | --- | --- | --- | --- | --- | --- |
| 120 | 1.5.1.4 | **Calculation Sheet** | 30d | 2026-07-01 A | 2026-08-11 |  | 40% | 18d | 2026-07-01 | 2026-08-11 | 30d | 0d | 300h | 103.64h | 34,55% | On Time | Process | -8,78% | 43,33% | 43,33% | -8,78% | 30% |  |
| 121 | 1.5.1.4.1 | Calculation Sheet - Existing and new Equipments | 30d | 2026-07-01 A | 2026-08-11 | 12 | 40% | 18d | 2026-07-01 | 2026-08-11 | 30d | 0d | 300h | 103.64h | 34,55% | On Time | Process | -8,78% | 43,33% | 43,33% | -8,78% | 30% | CHS001-000-PC5-CS-004 |
| 122 | 1.5.2 | **Instrumentation and automation Design Criteria** | 5d | 2026-07-17 A | 2026-07-24 |  | 10% | 4.5d | 2026-07-17 | 2026-07-24 | 5d | 13d | 24h | 2.4h | 10% | On Time | Instrumentation | -9,92% | 19,92% | 19,92% | -9,92% | 30% |  |
| 123 | 1.5.2.1 | Instrumentation and automation Design Criteria | 5d | 2026-07-17 A | 2026-07-24 | 31 | 10% | 4.5d | 2026-07-17 | 2026-07-24 | 5d | 13d | 24h | 2.4h | 10% | On Time | Instrumentation | -9,92% | 19,92% | 19,92% | -9,92% | 30% | CHS001-000-IA6-TS-001 |
| 124 | 1.5.3 | **Mechanical** | 33d | 2026-06-26 A | 2026-08-11 |  | 40% | 19.88d | 2026-06-26 | 2026-08-11 | 33d | 0d | 394.82h | 199.8h | 50,61% | On Time | Mechanical | -29,33% | 79,94% | 79,94% | -29,33% | 30% |  |
| 125 | 1.5.3.1 | **Mechanical Design Criteria** | 5d | 2026-07-17 A | 2026-07-24 |  | 10% | 4.5d | 2026-07-17 | 2026-07-24 | 5d | 13d | 24h | 2.4h | 10% | On Time | Mechanical | -9,92% | 19,92% | 19,92% | -9,92% | 30% |  |
| 126 | 1.5.3.1.1 | Mechanical Design Criteria | 5d | 2026-07-17 A | 2026-07-24 | 31 | 10% | 4.5d | 2026-07-17 | 2026-07-24 | 5d | 13d | 24h | 2.4h | 10% | On Time | Mechanical | -9,92% | 19,92% | 19,92% | -9,92% | 30% | CHS001-000-ME1-TS-001 |
| 127 | 1.5.3.2 | **List** | 10d | 2026-07-29 A | 2026-08-11 |  | 20% | 8d | 2026-07-29 | 2026-08-11 | 10d | 0d | 60h | 12h | 20% | On Time | Mechanical | 20,00% | 0% | 0% | 20,00% | 30% |  |
| 128 | 1.5.3.2.1 | Mechanical Equipment List | 10d | 2026-07-29 A | 2026-08-11 | 12, 121FF | 20% | 8d | 2026-07-29 | 2026-08-11 | 10d | 0d | 60h | 12h | 20% | On Time | Mechanical | 20,00% | 0% | 0% | 20,00% | 30% | CHS001-000-ME8-LI-001 |
| 129 | 1.5.3.3 | **Mechanical Datasheet** | 15d | 2026-06-26 A | 2026-07-17 |  | 26% | 11.09d | 2026-06-26 | 2026-07-17 | 15d | 18d | 206.82h | 112.6h | 54,44% | On Time | Mechanical | -45,56% | 100% | 100% | -45,56% | 30% |  |
| 130 | 1.5.3.3.1 | Mechanical Datasheet- Vessels and Tanks | 15d | 2026-06-26 A | 2026-07-17 | 12FS+5d | 34% | 9.97d | 2026-06-26 | 2026-07-17 | 15d | 18d | 7.66h | 5.36h | 70% | On Time | Mechanical | -30,00% | 100% | 100% | -30,00% | 30% | CHS001-000-ME7-DS-001 |
| 131 | 1.5.3.3.2 | Mechanical Datasheet- Process Pumps | 15d | 2026-06-26 A | 2026-07-17 | 12FS+5d | 34% | 9.97d | 2026-06-26 | 2026-07-17 | 15d | 18d | 7.66h | 5.36h | 70% | On Time | Mechanical | -30,00% | 100% | 100% | -30,00% | 30% | CHS001-000-ME7-DS-002 |
| 132 | 1.5.3.3.3 | Mechanical Datasheet- Feed Heater | 15d | 2026-06-26 A | 2026-07-17 | 12FS+5d | 34% | 9.97d | 2026-06-26 | 2026-07-17 | 15d | 18d | 7.66h | 5.36h | 70% | On Time | Mechanical | -30,00% | 100% | 100% | -30,00% | 30% | CHS001-000-ME7-DS-003 |
| 133 | 1.5.3.3.4 | Mechanical Datasheet- Beer Column Internals | 15d | 2026-06-26 A | 2026-07-17 | 12FS+5d | 34% | 9.97d | 2026-06-26 | 2026-07-17 | 15d | 18d | 7.66h | 5.36h | 70% | On Time | Mechanical | -30,00% | 100% | 100% | -30,00% | 30% | CHS001-000-ME7-DS-004 |
| 134 | 1.5.3.3.5 | Mechanical Datasheet- Reboiler | 15d | 2026-06-26 A | 2026-07-17 | 12FS+5d | 34% | 9.97d | 2026-06-26 | 2026-07-17 | 15d | 18d | 7.66h | 5.36h | 70% | On Time | Mechanical | -30,00% | 100% | 100% | -30,00% | 30% | CHS001-000-ME7-DS-005 |
| 135 | 1.5.3.3.6 | Mechanical Datasheet- Superheater | 15d | 2026-06-26 A | 2026-07-17 | 12FS+5d | 34% | 9.97d | 2026-06-26 | 2026-07-17 | 15d | 18d | 7.66h | 5.36h | 70% | On Time | Mechanical | -30,00% | 100% | 100% | -30,00% | 30% | CHS001-000-ME7-DS-006 |
| 136 | 1.5.3.3.7 | Mechanical Datasheet- Liquid Filters | 15d | 2026-06-26 A | 2026-07-17 | 12FS+5d | 19% | 12.13d | 2026-06-26 | 2026-07-17 | 15d | 18d | 7.66h | 3.06h | 40% | On Time | Mechanical | -60,00% | 100% | 100% | -60,00% | 30% | CHS001-000-ME7-DS-007 |
| 137 | 1.5.3.3.8 | Mechanical Datasheet- Stripper Collumn | 15d | 2026-06-26 A | 2026-07-17 | 12FS+5d | 34% | 9.97d | 2026-06-26 | 2026-07-17 | 15d | 18d | 7.66h | 5.36h | 70% | On Time | Mechanical | -30,00% | 100% | 100% | -30,00% | 30% | CHS001-000-ME7-DS-008 |
| 138 | 1.5.3.3.9 | Mechanical Datasheet- Stripper Collumns Internals | 15d | 2026-06-26 A | 2026-07-17 | 12FS+5d | 34% | 9.97d | 2026-06-26 | 2026-07-17 | 15d | 18d | 7.66h | 5.36h | 70% | On Time | Mechanical | -30,00% | 100% | 100% | -30,00% | 30% | CHS001-000-ME7-DS-009 |
| 139 | 1.5.3.3.10 | Mechanical Datasheet- Electrical Heat Tracing Modules | 15d | 2026-06-26 A | 2026-07-17 | 12FS+5d | 34% | 9.97d | 2026-06-26 | 2026-07-17 | 15d | 18d | 7.66h | 5.36h | 70% | On Time | Mechanical | -30,00% | 100% | 100% | -30,00% | 30% | CHS001-000-ME7-DS-010 |
| 140 | 1.5.3.3.11 | Mechanical Datasheet- Vapor Filters | 15d | 2026-06-26 A | 2026-07-17 | 12FS+5d | 34% | 9.97d | 2026-06-26 | 2026-07-17 | 15d | 18d | 7.66h | 5.36h | 70% | On Time | Mechanical | -30,00% | 100% | 100% | -30,00% | 30% | CHS001-000-ME7-DS-011 |
| 141 | 1.5.3.3.12 | Mechanical Datasheet- Heat Exchangers | 15d | 2026-06-26 A | 2026-07-17 | 12FS+5d | 34% | 9.97d | 2026-06-26 | 2026-07-17 | 15d | 18d | 7.66h | 5.36h | 70% | On Time | Mechanical | -30,00% | 100% | 100% | -30,00% | 30% | CHS001-000-ME7-DS-012 |
| 142 | 1.5.3.3.13 | Mechanical Datasheet- Evaporators | 15d | 2026-06-26 A | 2026-07-17 | 12FS+5d | 34% | 9.97d | 2026-06-26 | 2026-07-17 | 15d | 18d | 7.66h | 5.36h | 70% | On Time | Mechanical | -30,00% | 100% | 100% | -30,00% | 30% | CHS001-000-ME7-DS-013 |
| 143 | 1.5.3.3.14 | Mechanical Datasheet- 014 | 15d | 2026-06-26 A | 2026-07-17 | 12FS+5d | 34% | 9.97d | 2026-06-26 | 2026-07-17 | 15d | 18d | 7.66h | 5.36h | 70% | On Time | Mechanical | -30,00% | 100% | 100% | -30,00% | 30% | CHS001-000-ME7-DS-014 |
| 144 | 1.5.3.3.15 | Mechanical Datasheet- 015 | 15d | 2026-06-26 A | 2026-07-17 | 12FS+5d | 19% | 12.13d | 2026-06-26 | 2026-07-17 | 15d | 18d | 7.66h | 3.06h | 40% | On Time | Mechanical | -60,00% | 100% | 100% | -60,00% | 30% | CHS001-000-ME7-DS-015 |
| 145 | 1.5.3.3.16 | Mechanical Datasheet- Rectifier Bottom Heater | 15d | 2026-06-26 A | 2026-07-17 | 12FS+5d | 19% | 12.13d | 2026-06-26 | 2026-07-17 | 15d | 18d | 7.66h | 3.06h | 40% | On Time | Mechanical | -60,00% | 100% | 100% | -60,00% | 30% | CHS001-000-ME7-DS-016 |
| 146 | 1.5.3.3.17 | Mechanical Datasheet- 190p Heater | 15d | 2026-06-26 A | 2026-07-17 | 12FS+5d | 19% | 12.13d | 2026-06-26 | 2026-07-17 | 15d | 18d | 7.66h | 3.06h | 40% | On Time | Mechanical | -60,00% | 100% | 100% | -60,00% | 30% | CHS001-000-ME7-DS-017 |
| 147 | 1.5.3.3.18 | Mechanical Datasheet- Permeate Condenser | 15d | 2026-06-26 A | 2026-07-17 | 12FS+5d | 19% | 12.13d | 2026-06-26 | 2026-07-17 | 15d | 18d | 7.66h | 3.06h | 40% | On Time | Mechanical | -60,00% | 100% | 100% | -60,00% | 30% | CHS001-000-ME7-DS-018 |
| 148 | 1.5.3.3.19 | Mechanical Datasheet- 019 | 15d | 2026-06-26 A | 2026-07-17 | 12FS+5d | 19% | 12.13d | 2026-06-26 | 2026-07-17 | 15d | 18d | 7.66h | 3.06h | 40% | On Time | Mechanical | -60,00% | 100% | 100% | -60,00% | 30% | CHS001-000-ME7-DS-019 |
| 149 | 1.5.3.3.20 | Mechanical Datasheet- Rectifier Bottom Vessel | 15d | 2026-06-26 A | 2026-07-17 | 12FS+5d | 19% | 12.13d | 2026-06-26 | 2026-07-17 | 15d | 18d | 7.66h | 3.06h | 40% | On Time | Mechanical | -60,00% | 100% | 100% | -60,00% | 30% | CHS001-000-ME7-DS-020 |
| 150 | 1.5.3.3.21 | Mechanical Datasheet- 021 | 15d | 2026-06-26 A | 2026-07-17 | 12FS+5d | 19% | 12.13d | 2026-06-26 | 2026-07-17 | 15d | 18d | 7.66h | 3.06h | 40% | On Time | Mechanical | -60,00% | 100% | 100% | -60,00% | 30% | CHS001-000-ME7-DS-021 |
| 151 | 1.5.3.3.22 | Mechanical Datasheet- Steam Condensate Vessel | 15d | 2026-06-26 A | 2026-07-17 | 12FS+5d | 19% | 12.13d | 2026-06-26 | 2026-07-17 | 15d | 18d | 7.66h | 3.06h | 40% | On Time | Mechanical | -60,00% | 100% | 100% | -60,00% | 30% | CHS001-000-ME7-DS-022 |
| 152 | 1.5.3.3.23 | Mechanical Datasheet- Permeate Vessel | 15d | 2026-06-26 A | 2026-07-17 | 12FS+5d | 19% | 12.13d | 2026-06-26 | 2026-07-17 | 15d | 18d | 7.66h | 3.06h | 40% | On Time | Mechanical | -60,00% | 100% | 100% | -60,00% | 30% | CHS001-000-ME7-DS-023 |
| 153 | 1.5.3.3.24 | Mechanical Datasheet- Rectifier Condenser vacuum pump - train 01 | 15d | 2026-06-26 A | 2026-07-17 | 12FS+5d | 19% | 12.13d | 2026-06-26 | 2026-07-17 | 15d | 18d | 7.66h | 3.06h | 40% | On Time | Mechanical | -60,00% | 100% | 100% | -60,00% | 30% | CHS001-000-ME7-DS-024 |
| 154 | 1.5.3.3.25 | Mechanical Datasheet- Rectifier Condenser vacuum pump - train 02 | 15d | 2026-06-26 A | 2026-07-17 | 12FS+5d | 19% | 12.13d | 2026-06-26 | 2026-07-17 | 15d | 18d | 7.66h | 3.06h | 40% | On Time | Mechanical | -60,00% | 100% | 100% | -60,00% | 30% | CHS001-000-ME7-DS-025 |
| 155 | 1.5.3.3.26 | Mechanical Datasheet- Dehydration vacuum pump - Train 01 | 15d | 2026-06-26 A | 2026-07-17 | 12FS+5d | 19% | 12.13d | 2026-06-26 | 2026-07-17 | 15d | 18d | 7.66h | 3.06h | 40% | On Time | Mechanical | -60,00% | 100% | 100% | -60,00% | 30% | CHS001-000-ME7-DS-026 |
| 156 | 1.5.3.3.27 | Mechanical Datasheet- Dehydration vacuum pump - Train 02 | 15d | 2026-06-26 A | 2026-07-17 | 12FS+5d | 19% | 12.13d | 2026-06-26 | 2026-07-17 | 15d | 18d | 7.66h | 3.06h | 40% | On Time | Mechanical | -60,00% | 100% | 100% | -60,00% | 30% | CHS001-000-ME7-DS-027 |

| ID | WBS | Task | Duration | Start | Finish | Predecessors | Complete | Remaining | Baseline start | Baseline finish | Baseline duration | Total slack | Work | Actual work | Text3 | Status1 | Disciplina | %Desvio Padrão | % Previsto Reprog. | Text12 | Text15 | Fase | NA DOCUMENT NUMBER |
| --- | --- | --- | --- | --- | --- | --- | --- | --- | --- | --- | --- | --- | --- | --- | --- | --- | --- | --- | --- | --- | --- | --- | --- |
| 157 | 1.5.3.4 | **Technical Specification** | 15d | 2026-06-26 A | 2026-07-17 |  | 70% | 4.5d | 2026-06-26 | 2026-07-17 | 15d | 18d | 104h | 72.8h | 70% | On Time | Mechanical | -30,00% | 100% | 100% | -30,00% | 30% |  |
| 158 | 1.5.3.4.1 | Plate Heat Exchangers Technical Specification | 15d | 2026-06-26 A | 2026-07-17 | 12FS+5d | 70% | 4.5d | 2026-06-26 | 2026-07-17 | 15d | 18d | 8h | 5.6h | 70% | On Time | Mechanical | -30,00% | 100% | 100% | -30,00% | 30% | CHS001-000-ME6-TS-001 |
| 159 | 1.5.3.4.2 | Process Pumps Technical Specification | 15d | 2026-06-26 A | 2026-07-17 | 12FS+5d | 70% | 4.5d | 2026-06-26 | 2026-07-17 | 15d | 18d | 8h | 5.6h | 70% | On Time | Mechanical | -30,00% | 100% | 100% | -30,00% | 30% | CHS001-000-ME6-TS-002 |
| 160 | 1.5.3.4.3 | Filters Technical Specification | 15d | 2026-06-26 A | 2026-07-17 | 12FS+5d | 70% | 4.5d | 2026-06-26 | 2026-07-17 | 15d | 18d | 8h | 5.6h | 70% | On Time | Mechanical | -30,00% | 100% | 100% | -30,00% | 30% | CHS001-000-ME6-TS-003 |
| 161 | 1.5.3.4.4 | Vessels And Tanks Technical Specification | 15d | 2026-06-26 A | 2026-07-17 | 12FS+5d | 70% | 4.5d | 2026-06-26 | 2026-07-17 | 15d | 18d | 8h | 5.6h | 70% | On Time | Mechanical | -30,00% | 100% | 100% | -30,00% | 30% | CHS001-000-ME6-TS-004 |
| 162 | 1.5.3.4.5 | Striper Column Technical Specification | 15d | 2026-06-26 A | 2026-07-17 | 12FS+5d | 70% | 4.5d | 2026-06-26 | 2026-07-17 | 15d | 18d | 8h | 5.6h | 70% | On Time | Mechanical | -30,00% | 100% | 100% | -30,00% | 30% | CHS001-000-ME6-TS-005 |
| 163 | 1.5.3.4.6 | Reboiler Technical Specification | 15d | 2026-06-26 A | 2026-07-17 | 12FS+5d | 70% | 4.5d | 2026-06-26 | 2026-07-17 | 15d | 18d | 8h | 5.6h | 70% | On Time | Mechanical | -30,00% | 100% | 100% | -30,00% | 30% | CHS001-000-ME6-TS-006 |
| 164 | 1.5.3.4.7 | Super Heater Technical Specification | 15d | 2026-06-26 A | 2026-07-17 | 12FS+5d | 70% | 4.5d | 2026-06-26 | 2026-07-17 | 15d | 18d | 8h | 5.6h | 70% | On Time | Mechanical | -30,00% | 100% | 100% | -30,00% | 30% | CHS001-000-ME6-TS-007 |
| 165 | 1.5.3.4.8 | Technical Specification - Stripper Collumn | 15d | 2026-06-26 A | 2026-07-17 | 12FS+5d | 70% | 4.5d | 2026-06-26 | 2026-07-17 | 15d | 18d | 8h | 5.6h | 70% | On Time | Mechanical | -30,00% | 100% | 100% | -30,00% | 30% | CHS001-000-ME6-TS-008 |
| 166 | 1.5.3.4.9 | Technical Specification - Stripper Collumns Internals | 15d | 2026-06-26 A | 2026-07-17 | 12FS+5d | 70% | 4.5d | 2026-06-26 | 2026-07-17 | 15d | 18d | 8h | 5.6h | 70% | On Time | Mechanical | -30,00% | 100% | 100% | -30,00% | 30% | CHS001-000-ME6-TS-009 |
| 167 | 1.5.3.4.10 | Technical Specification - Electrical Heat Tracing Modules | 15d | 2026-06-26 A | 2026-07-17 | 12FS+5d | 70% | 4.5d | 2026-06-26 | 2026-07-17 | 15d | 18d | 8h | 5.6h | 70% | On Time | Mechanical | -30,00% | 100% | 100% | -30,00% | 30% | CHS001-000-ME6-TS-010 |
| 168 | 1.5.3.4.11 | Technical Specification - Vapor Filters | 15d | 2026-06-26 A | 2026-07-17 | 12FS+5d | 70% | 4.5d | 2026-06-26 | 2026-07-17 | 15d | 18d | 8h | 5.6h | 70% | On Time | Mechanical | -30,00% | 100% | 100% | -30,00% | 30% | CHS001-000-ME6-TS-011 |
| 169 | 1.5.3.4.12 | Technical Specification - Heat Exchangers | 15d | 2026-06-26 A | 2026-07-17 | 12FS+5d | 70% | 4.5d | 2026-06-26 | 2026-07-17 | 15d | 18d | 8h | 5.6h | 70% | On Time | Mechanical | -30,00% | 100% | 100% | -30,00% | 30% | CHS001-000-ME6-TS-012 |
| 170 | 1.5.3.4.13 | Technical Specification - Evaporators | 15d | 2026-06-26 A | 2026-07-17 | 12FS+5d | 70% | 4.5d | 2026-06-26 | 2026-07-17 | 15d | 18d | 8h | 5.6h | 70% | On Time | Mechanical | -30,00% | 100% | 100% | -30,00% | 30% | CHS001-000-ME6-TS-013 |
| 171 | 1.5.4 | **Piping** | 10d | 2026-07-17 A | 2026-07-31 |  | 3% | 9.75d | 2026-07-17 | 2026-07-31 | 10d | 8d | 64h | 2.4h | 3,75% | On Time | Piping | -33,59% | 37,34% | 37,34% | -33,59% | 30% |  |
| 172 | 1.5.4.1 | **Piping Design Criteria** | 1d | 2026-07-17 A | 2026-07-20 |  | 10% | 0.9d | 2026-07-17 | 2026-07-20 | 1d | 17d | 24h | 2.4h | 10% | On Time | Piping | -89,58% | 99,58% | 99,58% | -89,58% | 30% |  |
| 173 | 1.5.4.1.1 | Piping Design Criteria | 1d | 2026-07-17 A | 2026-07-20 | 31 | 10% | 0.9d | 2026-07-17 | 2026-07-20 | 1d | 17d | 24h | 2.4h | 10% | On Time | Piping | -89,58% | 99,58% | 99,58% | -89,58% | 30% | CHS001-000-PI1-TS-001 |
| 174 | 1.5.4.2 | **General Arrangement** | 3d | 2026-07-28 | 2026-07-31 |  |  |  | 2026-07-28 | 2026-07-31 | 3d | 8d | 40h |  | 0% | On Time | Piping | 0,00% | 0% | 0% | 0,00% | 30% |  |
| 175 | 1.5.4.2.1 | General Arrangement | 3d | 2026-07-28 | 2026-07-31 | 194, 195, 196, 197 |  |  | 2026-07-28 | 2026-07-31 | 3d | 8d | 40h |  | 0% | On Time | Piping | 0,00% | 0% | 0% | 0,00% | 30% | CHS001-000-PI2-DR-001 |
| 176 | 1.5.5 | **Electrical** | 18d | 2026-07-17 | 2026-08-11 |  |  |  | 2026-07-17 | 2026-08-11 | 18d | 0d | 96h |  | 0% | On Time | Electrical | -4,98% | 4,98% | 4,98% | -4,98% | 30% |  |
| 177 | 1.5.5.1 | **Electrical Design Criteria** | 5d | 2026-07-17 | 2026-07-24 |  |  |  | 2026-07-17 | 2026-07-24 | 5d | 13d | 24h |  | 0% | On Time | Electrical | -19,92% | 19,92% | 19,92% | -19,92% | 30% |  |
| 178 | 1.5.5.1.1 | Electrical Design Criteria | 5d | 2026-07-17 | 2026-07-24 | 31 |  |  | 2026-07-17 | 2026-07-24 | 5d | 13d | 24h |  | 0% | On Time | Electrical | -19,92% | 19,92% | 19,92% | -19,92% | 30% | CHS001-000-EL1-TS-001 |
| 179 | 1.5.5.2 | **Lists** | 10d | 2026-07-29 | 2026-08-11 |  |  |  | 2026-07-29 | 2026-08-11 | 10d | 0d | 48h |  | 0% | On Time | Electrical | 0,00% | 0% | 0% | 0,00% | 30% |  |
| 180 | 1.5.5.2.1 | Electrical Load List | 10d | 2026-07-29 | 2026-08-11 | 12, 121FF |  |  | 2026-07-29 | 2026-08-11 | 10d | 0d | 24h |  | 0% | On Time | Electrical | 0,00% | 0% | 0% | 0,00% | 30% | CHS001-000-EL2-LI-001 |
| 181 | 1.5.5.2.2 | Electrical Equipment List | 10d | 2026-07-29 | 2026-08-11 | 12, 121FF |  |  | 2026-07-29 | 2026-08-11 | 10d | 0d | 24h |  | 0% | On Time | Electrical | 0,00% | 0% | 0% | 0,00% | 30% | CHS001-000-EL2-LI-002 |

| ID | WBS | Task | Duration | Start | Finish | Predecessors | Complete | Remaining | Baseline start | Baseline finish | Baseline duration | Total slack | Free slack | Work | Actual work | Text3 | Status1 | Disciplina | %Desvio Padrão | % Previsto Reprog. | Text12 | Text15 | Fase | NA DOCUMENT NUMBER |
| --- | --- | --- | --- | --- | --- | --- | --- | --- | --- | --- | --- | --- | --- | --- | --- | --- | --- | --- | --- | --- | --- | --- | --- | --- |
| 182 | 1.5.5.3 | **Single Line Diagram** | 10d | 2026-07-29 | 2026-08-11 |  |  |  | 2026-07-29 | 2026-08-11 | 10d | 0d |  | 24h |  | 0% | On Time | Electrical | 0,00% | 0% | 0% | 0,00% | 30% |  |
| 183 | 1.5.5.3.1 | Single Line Diagram | 10d | 2026-07-29 | 2026-08-11 | 12, 121FF |  |  | 2026-07-29 | 2026-08-11 | 10d | 0d |  | 24h |  | 0% | On Time | Electrical | 0,00% | 0% | 0% | 0,00% | 30% | CHS001-000-EL2-DR-001 |
| 184 | 1.5.6 | **Civil** | 5d | 2026-07-17 | 2026-07-24 |  |  |  | 2026-07-17 | 2026-07-24 | 5d | 13d |  | 24h |  | 0% | On Time | Civil | -19,92% | 19,92% | 19,92% | -19,92% | 30% |  |
| 185 | 1.5.6.1 | **Civil Design Criteria** | 5d | 2026-07-17 | 2026-07-24 |  |  |  | 2026-07-17 | 2026-07-24 | 5d | 13d |  | 24h |  | 0% | On Time | Civil | -19,92% | 19,92% | 19,92% | -19,92% | 30% |  |
| 186 | 1.5.6.1.1 | Civil Design Criteria | 5d | 2026-07-17 | 2026-07-24 | 31 |  |  | 2026-07-17 | 2026-07-24 | 5d | 13d |  | 24h |  | 0% | On Time | Civil | -19,92% | 19,92% | 19,92% | -19,92% | 30% | CHS001-000-CV1-TS-001 |
| 187 | 1.5.7 | **Steel Structure** | 5d | 2026-07-17 | 2026-07-24 |  |  |  | 2026-07-17 | 2026-07-24 | 5d | 13d |  | 24h |  | 0% | On Time | Steel Structure | -19,92% | 19,92% | 19,92% | -19,92% | 30% |  |
| 188 | 1.5.7.1 | **Steel Structure Design Criteria** | 5d | 2026-07-17 | 2026-07-24 |  |  |  | 2026-07-17 | 2026-07-24 | 5d | 13d |  | 24h |  | 0% | On Time | Steel Structure | -19,92% | 19,92% | 19,92% | -19,92% | 30% |  |
| 189 | 1.5.7.1.1 | Steel Structure Design Criteria | 5d | 2026-07-17 | 2026-07-24 | 31 |  |  | 2026-07-17 | 2026-07-24 | 5d | 13d |  | 24h |  | 0% | On Time | Steel Structure | -19,92% | 19,92% | 19,92% | -19,92% | 30% | CHS001-000-ST1-TS-001 |
| 190 | 1.5.8 | **Infrastructure** | 5d | 2026-07-17 | 2026-07-24 |  |  |  | 2026-07-17 | 2026-07-24 | 5d | 13d |  | 24h |  | 0% | On Time | Infrastructure | -19,92% | 19,92% | 19,92% | -19,92% | 30% |  |
| 191 | 1.5.8.1 | **Infraestrucutre Desing Criteria** | 5d | 2026-07-17 | 2026-07-24 |  |  |  | 2026-07-17 | 2026-07-24 | 5d | 13d |  | 24h |  | 0% | On Time | Infrastructure | -19,92% | 19,92% | 19,92% | -19,92% | 30% |  |
| 192 | 1.5.8.1.1 | Infraestrucutre Desing Criteria | 5d | 2026-07-17 | 2026-07-24 | 31 |  |  | 2026-07-17 | 2026-07-24 | 5d | 13d |  | 24h |  | 0% | On Time | Infrastructure | -19,92% | 19,92% | 19,92% | -19,92% | 30% | CHS001-000-IH1-TS-001 |
| 193 | 1.5.9 | **3D MODEL** | 20d | 2026-06-30 A | 2026-07-28 |  | 45% | 11d | 2026-06-30 | 2026-07-28 | 20d | 8d |  | 504h | 162.83h | 32,31% | On Time | 3D | -37,68% | 69,99% | 69,99% | -37,68% | 30% |  |
| 194 | 1.5.9.1 | Civil | 20d | 2026-06-30 A | 2026-07-28 | 12SS+7d | 45% | 11d | 2026-06-30 | 2026-07-28 | 20d | 8d | 0d | 24h | 7.75h | 32,31% | On Time | 3D | -37,68% | 69,99% | 69,99% | -37,68% | 30% | CHS001-000-CVM-3D-001 |
| 195 | 1.5.9.2 | Steel Structure | 20d | 2026-06-30 A | 2026-07-28 | 12SS+7d | 45% | 11d | 2026-06-30 | 2026-07-28 | 20d | 8d | 0d | 40h | 12.92h | 32,31% | On Time | 3D | -37,68% | 69,99% | 69,99% | -37,68% | 30% | CHS001-000-STM-3D-001 |
| 196 | 1.5.9.3 | Mechanical Equipments | 20d | 2026-06-30 A | 2026-07-28 | 12SS+7d | 45% | 11d | 2026-06-30 | 2026-07-28 | 20d | 8d | 0d | 40h | 12.92h | 32,31% | On Time | 3D | -37,68% | 69,99% | 69,99% | -37,68% | 30% | CHS001-000-MEM-3D-001 |
| 197 | 1.5.9.4 | Piping | 20d | 2026-06-30 A | 2026-07-28 | 12SS+7d | 45% | 11d | 2026-06-30 | 2026-07-28 | 20d | 8d | 0d | 400h | 129.23h | 32,31% | On Time | 3D | -37,68% | 69,99% | 69,99% | -37,68% | 30% | CHS001-000-PIM-3D-001 |
| 198 | 1.6 | **Engineering - 60%** | 33d | 2026-08-12 | 2026-09-25 |  |  |  | 2026-08-12 | 2026-09-25 | 33d | 0d |  | 5425h |  | 0% | On Time |  | 0,00% | 0% | 0% | 0,00% | 60% |  |
| 199 | 1.6.1 | **Process** | 27d | 2026-08-12 | 2026-09-17 |  |  |  | 2026-08-12 | 2026-09-17 | 27d | 1d |  | 1768h |  | 0% | On Time | Process | 0,00% | 0% | 0% | 0,00% | 60% |  |
| 200 | 1.6.1.1 | **Process Design Criteria** | 5d | 2026-08-12 | 2026-08-18 |  |  |  | 2026-08-12 | 2026-08-18 | 5d | 28d |  | 8h |  | 0% | On Time | Process | 0,00% | 0% | 0% | 0,00% | 60% |  |
| 201 | 1.6.1.1.1 | Process Design Criteria | 5d | 2026-08-12 | 2026-08-18 | 28 |  |  | 2026-08-12 | 2026-08-18 | 5d | 28d |  | 8h |  | 0% | On Time | Process | 0,00% | 0% | 0% | 0,00% | 60% | CHS001-000-PC6-TS-001 |
| 202 | 1.6.1.2 | **Process Flow Diagram - PFDs** | 10d | 2026-08-12 | 2026-08-25 |  |  |  | 2026-08-12 | 2026-08-25 | 10d | 11d | 0d | 104h |  | 0% | On Time | Process | 0,00% | 0% | 0% | 0,00% | 60% |  |
| 203 | 1.6.1.2.1 | Process Flow Diagram -01 | 10d | 2026-08-12 | 2026-08-25 | 28 |  |  | 2026-08-12 | 2026-08-25 | 10d | 11d |  | 4h |  | 0% | On Time | Process | 0,00% | 0% | 0% | 0,00% | 60% | CHS001-000-PC2-DR-001 |
| 204 | 1.6.1.2.2 | Process Flow Diagram -02 | 10d | 2026-08-12 | 2026-08-25 | 28 |  |  | 2026-08-12 | 2026-08-25 | 10d | 11d |  | 4h |  | 0% | On Time | Process | 0,00% | 0% | 0% | 0,00% | 60% | CHS001-000-PC2-DR-002 |
| 205 | 1.6.1.2.3 | Process Flow Diagram -03 | 10d | 2026-08-12 | 2026-08-25 | 28 |  |  | 2026-08-12 | 2026-08-25 | 10d | 11d |  | 4h |  | 0% | On Time | Process | 0,00% | 0% | 0% | 0,00% | 60% | CHS001-000-PC2-DR-003 |
| 206 | 1.6.1.2.4 | Process Flow Diagram -04 | 10d | 2026-08-12 | 2026-08-25 | 28 |  |  | 2026-08-12 | 2026-08-25 | 10d | 11d |  | 4h |  | 0% | On Time | Process | 0,00% | 0% | 0% | 0,00% | 60% | CHS001-000-PC2-DR-004 |
| 207 | 1.6.1.2.5 | Process Flow Diagram -05 | 10d | 2026-08-12 | 2026-08-25 | 28 |  |  | 2026-08-12 | 2026-08-25 | 10d | 11d |  | 4h |  | 0% | On Time | Process | 0,00% | 0% | 0% | 0,00% | 60% | CHS001-000-PC2-DR-005 |
| 208 | 1.6.1.2.6 | Process Flow Diagram -06 | 10d | 2026-08-12 | 2026-08-25 | 28 |  |  | 2026-08-12 | 2026-08-25 | 10d | 11d |  | 4h |  | 0% | On Time | Process | 0,00% | 0% | 0% | 0,00% | 60% | CHS001-000-PC2-DR-006 |
| 209 | 1.6.1.2.7 | Process Flow Diagram -07 | 10d | 2026-08-12 | 2026-08-25 | 28 |  |  | 2026-08-12 | 2026-08-25 | 10d | 11d |  | 4h |  | 0% | On Time | Process | 0,00% | 0% | 0% | 0,00% | 60% | CHS001-000-PC2-DR-007 |
| 210 | 1.6.1.2.8 | Process Flow Diagram -08 | 10d | 2026-08-12 | 2026-08-25 | 28 |  |  | 2026-08-12 | 2026-08-25 | 10d | 11d |  | 4h |  | 0% | On Time | Process | 0,00% | 0% | 0% | 0,00% | 60% | CHS001-000-PC2-DR-008 |
| 211 | 1.6.1.2.9 | Process Flow Diagram -09 | 10d | 2026-08-12 | 2026-08-25 | 28 |  |  | 2026-08-12 | 2026-08-25 | 10d | 11d |  | 4h |  | 0% | On Time | Process | 0,00% | 0% | 0% | 0,00% | 60% | CHS001-000-PC2-DR-009 |
| 212 | 1.6.1.2.10 | Process Flow Diagram -10 | 10d | 2026-08-12 | 2026-08-25 | 28 |  |  | 2026-08-12 | 2026-08-25 | 10d | 11d |  | 4h |  | 0% | On Time | Process | 0,00% | 0% | 0% | 0,00% | 60% | CHS001-000-PC2-DR-010 |
| 213 | 1.6.1.2.11 | Process Flow Diagram -11 | 10d | 2026-08-12 | 2026-08-25 | 28 |  |  | 2026-08-12 | 2026-08-25 | 10d | 11d |  | 4h |  | 0% | On Time | Process | 0,00% | 0% | 0% | 0,00% | 60% | CHS001-000-PC2-DR-011 |
| 214 | 1.6.1.2.12 | Process Flow Diagram -12 | 10d | 2026-08-12 | 2026-08-25 | 28 |  |  | 2026-08-12 | 2026-08-25 | 10d | 11d |  | 4h |  | 0% | On Time | Process | 0,00% | 0% | 0% | 0,00% | 60% | CHS001-000-PC2-DR-012 |
| 215 | 1.6.1.2.13 | Process Flow Diagram -13 | 10d | 2026-08-12 | 2026-08-25 | 28 |  |  | 2026-08-12 | 2026-08-25 | 10d | 11d |  | 4h |  | 0% | On Time | Process | 0,00% | 0% | 0% | 0,00% | 60% | CHS001-000-PC2-DR-013 |
| 216 | 1.6.1.2.14 | Process Flow Diagram -14 | 10d | 2026-08-12 | 2026-08-25 | 28 |  |  | 2026-08-12 | 2026-08-25 | 10d | 11d |  | 4h |  | 0% | On Time | Process | 0,00% | 0% | 0% | 0,00% | 60% | CHS001-000-PC2-DR-014 |
| 217 | 1.6.1.2.15 | Process Flow Diagram -15 | 10d | 2026-08-12 | 2026-08-25 | 28 |  |  | 2026-08-12 | 2026-08-25 | 10d | 11d |  | 4h |  | 0% | On Time | Process | 0,00% | 0% | 0% | 0,00% | 60% | CHS001-000-PC2-DR-015 |
| 218 | 1.6.1.2.16 | Process Flow Diagram -16 | 10d | 2026-08-12 | 2026-08-25 | 28 |  |  | 2026-08-12 | 2026-08-25 | 10d | 11d |  | 4h |  | 0% | On Time | Process | 0,00% | 0% | 0% | 0,00% | 60% | CHS001-000-PC2-DR-016 |
| 219 | 1.6.1.2.17 | Process Flow Diagram -17 | 10d | 2026-08-12 | 2026-08-25 | 28 |  |  | 2026-08-12 | 2026-08-25 | 10d | 11d |  | 4h |  | 0% | On Time | Process | 0,00% | 0% | 0% | 0,00% | 60% | CHS001-000-PC2-DR-017 |
| 220 | 1.6.1.2.18 | Process Flow Diagram -18 | 10d | 2026-08-12 | 2026-08-25 | 28 |  |  | 2026-08-12 | 2026-08-25 | 10d | 11d |  | 4h |  | 0% | On Time | Process | 0,00% | 0% | 0% | 0,00% | 60% | CHS001-000-PC2-DR-018 |
| 221 | 1.6.1.2.19 | Process Flow Diagram -19 | 10d | 2026-08-12 | 2026-08-25 | 28 |  |  | 2026-08-12 | 2026-08-25 | 10d | 11d |  | 4h |  | 0% | On Time | Process | 0,00% | 0% | 0% | 0,00% | 60% | CHS001-000-PC2-DR-019 |
| 222 | 1.6.1.2.20 | Process Flow Diagram -20 | 10d | 2026-08-12 | 2026-08-25 | 28 |  |  | 2026-08-12 | 2026-08-25 | 10d | 11d |  | 4h |  | 0% | On Time | Process | 0,00% | 0% | 0% | 0,00% | 60% | CHS001-000-PC2-DR-020 |
| 223 | 1.6.1.2.21 | Process Flow Diagram -21 | 10d | 2026-08-12 | 2026-08-25 | 28 |  |  | 2026-08-12 | 2026-08-25 | 10d | 11d |  | 4h |  | 0% | On Time | Process | 0,00% | 0% | 0% | 0,00% | 60% | CHS001-000-PC2-DR-021 |
| 224 | 1.6.1.2.22 | Process Flow Diagram -22 | 10d | 2026-08-12 | 2026-08-25 | 28 |  |  | 2026-08-12 | 2026-08-25 | 10d | 11d |  | 4h |  | 0% | On Time | Process | 0,00% | 0% | 0% | 0,00% | 60% | CHS001-000-PC2-DR-022 |
| 225 | 1.6.1.2.23 | Process Flow Diagram -23 | 10d | 2026-08-12 | 2026-08-25 | 28 |  |  | 2026-08-12 | 2026-08-25 | 10d | 11d |  | 4h |  | 0% | On Time | Process | 0,00% | 0% | 0% | 0,00% | 60% | CHS001-000-PC2-DR-023 |
| 226 | 1.6.1.2.24 | Process Flow Diagram -24 | 10d | 2026-08-12 | 2026-08-25 | 28 |  |  | 2026-08-12 | 2026-08-25 | 10d | 11d |  | 4h |  | 0% | On Time | Process | 0,00% | 0% | 0% | 0,00% | 60% | CHS001-000-PC2-DR-024 |
| 227 | 1.6.1.2.25 | Process Flow Diagram -25 | 10d | 2026-08-12 | 2026-08-25 | 28 |  |  | 2026-08-12 | 2026-08-25 | 10d | 11d |  | 4h |  | 0% | On Time | Process | 0,00% | 0% | 0% | 0,00% | 60% | CHS001-000-PC2-DR-025 |
| 228 | 1.6.1.2.26 | Process Flow Diagram -26 | 10d | 2026-08-12 | 2026-08-25 | 28 |  |  | 2026-08-12 | 2026-08-25 | 10d | 11d |  | 4h |  | 0% | On Time | Process | 0,00% | 0% | 0% | 0,00% | 60% | CHS001-000-PC2-DR-026 |

| ID | WBS | Task | Duration | Start | Finish | Predecessors | Baseline start | Baseline finish | Baseline duration | Total slack | Free slack | Work | Text3 | Status1 | Disciplina | %Desvio Padrão | % Previsto Reprog. | Text12 | Text15 | Fase | NA DOCUMENT NUMBER |
| --- | --- | --- | --- | --- | --- | --- | --- | --- | --- | --- | --- | --- | --- | --- | --- | --- | --- | --- | --- | --- | --- |
| 229 | 1.6.1.3 | **Process Instrumentation Diagram PI&Ds** | 20d | 2026-08-12 | 2026-09-08 |  | 2026-08-12 | 2026-09-08 | 20d | 1d | 0d | 960h | 0% | On Time | Process | 0,00% | 0% | 0% | 0,00% | 60% |  |
| 230 | 1.6.1.3.1 | Process Instrumentation Diagram - 01 | 20d | 2026-08-12 | 2026-09-08 | 28 | 2026-08-12 | 2026-09-08 | 20d | 1d |  | 16h | 0% | On Time | Process | 0,00% | 0% | 0% | 0,00% | 60% | CHS001-000-PC3-DR-001 |
| 231 | 1.6.1.3.2 | Process Instrumentation Diagram - 02 | 20d | 2026-08-12 | 2026-09-08 | 28 | 2026-08-12 | 2026-09-08 | 20d | 1d |  | 16h | 0% | On Time | Process | 0,00% | 0% | 0% | 0,00% | 60% | CHS001-000-PC3-DR-002 |
| 232 | 1.6.1.3.3 | Process Instrumentation Diagram - 03 | 20d | 2026-08-12 | 2026-09-08 | 28 | 2026-08-12 | 2026-09-08 | 20d | 1d |  | 16h | 0% | On Time | Process | 0,00% | 0% | 0% | 0,00% | 60% | CHS001-000-PC3-DR-003 |
| 233 | 1.6.1.3.4 | Process Instrumentation Diagram - 04 | 20d | 2026-08-12 | 2026-09-08 | 28 | 2026-08-12 | 2026-09-08 | 20d | 1d |  | 16h | 0% | On Time | Process | 0,00% | 0% | 0% | 0,00% | 60% | CHS001-000-PC3-DR-004 |
| 234 | 1.6.1.3.5 | Process Instrumentation Diagram - 05 | 20d | 2026-08-12 | 2026-09-08 | 28 | 2026-08-12 | 2026-09-08 | 20d | 1d |  | 16h | 0% | On Time | Process | 0,00% | 0% | 0% | 0,00% | 60% | CHS001-000-PC3-DR-005 |
| 235 | 1.6.1.3.6 | Process Instrumentation Diagram - 06 | 20d | 2026-08-12 | 2026-09-08 | 28 | 2026-08-12 | 2026-09-08 | 20d | 1d |  | 16h | 0% | On Time | Process | 0,00% | 0% | 0% | 0,00% | 60% | CHS001-000-PC3-DR-006 |
| 236 | 1.6.1.3.7 | Process Instrumentation Diagram - 07 | 20d | 2026-08-12 | 2026-09-08 | 28 | 2026-08-12 | 2026-09-08 | 20d | 1d |  | 16h | 0% | On Time | Process | 0,00% | 0% | 0% | 0,00% | 60% | CHS001-000-PC3-DR-007 |
| 237 | 1.6.1.3.8 | Process Instrumentation Diagram - 08 | 20d | 2026-08-12 | 2026-09-08 | 28 | 2026-08-12 | 2026-09-08 | 20d | 1d |  | 16h | 0% | On Time | Process | 0,00% | 0% | 0% | 0,00% | 60% | CHS001-000-PC3-DR-008 |
| 238 | 1.6.1.3.9 | Process Instrumentation Diagram - 09 | 20d | 2026-08-12 | 2026-09-08 | 28 | 2026-08-12 | 2026-09-08 | 20d | 1d |  | 16h | 0% | On Time | Process | 0,00% | 0% | 0% | 0,00% | 60% | CHS001-000-PC3-DR-009 |
| 239 | 1.6.1.3.10 | Process Instrumentation Diagram - 10 | 20d | 2026-08-12 | 2026-09-08 | 28 | 2026-08-12 | 2026-09-08 | 20d | 1d |  | 16h | 0% | On Time | Process | 0,00% | 0% | 0% | 0,00% | 60% | CHS001-000-PC3-DR-010 |
| 240 | 1.6.1.3.11 | Process Instrumentation Diagram - 11 | 20d | 2026-08-12 | 2026-09-08 | 28 | 2026-08-12 | 2026-09-08 | 20d | 1d |  | 16h | 0% | On Time | Process | 0,00% | 0% | 0% | 0,00% | 60% | CHS001-000-PC3-DR-011 |
| 241 | 1.6.1.3.12 | Process Instrumentation Diagram - 12 | 20d | 2026-08-12 | 2026-09-08 | 28 | 2026-08-12 | 2026-09-08 | 20d | 1d |  | 16h | 0% | On Time | Process | 0,00% | 0% | 0% | 0,00% | 60% | CHS001-000-PC3-DR-012 |
| 242 | 1.6.1.3.13 | Process Instrumentation Diagram - 13 | 20d | 2026-08-12 | 2026-09-08 | 28 | 2026-08-12 | 2026-09-08 | 20d | 1d |  | 16h | 0% | On Time | Process | 0,00% | 0% | 0% | 0,00% | 60% | CHS001-000-PC3-DR-013 |
| 243 | 1.6.1.3.14 | Process Instrumentation Diagram - 14 | 20d | 2026-08-12 | 2026-09-08 | 28 | 2026-08-12 | 2026-09-08 | 20d | 1d |  | 16h | 0% | On Time | Process | 0,00% | 0% | 0% | 0,00% | 60% | CHS001-000-PC3-DR-014 |
| 244 | 1.6.1.3.15 | Process Instrumentation Diagram - 15 | 20d | 2026-08-12 | 2026-09-08 | 28 | 2026-08-12 | 2026-09-08 | 20d | 1d |  | 16h | 0% | On Time | Process | 0,00% | 0% | 0% | 0,00% | 60% | CHS001-000-PC3-DR-015 |
| 245 | 1.6.1.3.16 | Process Instrumentation Diagram - 16 | 20d | 2026-08-12 | 2026-09-08 | 28 | 2026-08-12 | 2026-09-08 | 20d | 1d |  | 16h | 0% | On Time | Process | 0,00% | 0% | 0% | 0,00% | 60% | CHS001-000-PC3-DR-016 |
| 246 | 1.6.1.3.17 | Process Instrumentation Diagram - 17 | 20d | 2026-08-12 | 2026-09-08 | 28 | 2026-08-12 | 2026-09-08 | 20d | 1d |  | 16h | 0% | On Time | Process | 0,00% | 0% | 0% | 0,00% | 60% | CHS001-000-PC3-DR-017 |
| 247 | 1.6.1.3.18 | Process Instrumentation Diagram - 18 | 20d | 2026-08-12 | 2026-09-08 | 28 | 2026-08-12 | 2026-09-08 | 20d | 1d |  | 16h | 0% | On Time | Process | 0,00% | 0% | 0% | 0,00% | 60% | CHS001-000-PC3-DR-018 |
| 248 | 1.6.1.3.19 | Process Instrumentation Diagram - 19 | 20d | 2026-08-12 | 2026-09-08 | 28 | 2026-08-12 | 2026-09-08 | 20d | 1d |  | 16h | 0% | On Time | Process | 0,00% | 0% | 0% | 0,00% | 60% | CHS001-000-PC3-DR-019 |
| 249 | 1.6.1.3.20 | Process Instrumentation Diagram - 20 | 20d | 2026-08-12 | 2026-09-08 | 28 | 2026-08-12 | 2026-09-08 | 20d | 1d |  | 16h | 0% | On Time | Process | 0,00% | 0% | 0% | 0,00% | 60% | CHS001-000-PC3-DR-020 |
| 250 | 1.6.1.3.21 | Process Instrumentation Diagram - 21 | 20d | 2026-08-12 | 2026-09-08 | 28 | 2026-08-12 | 2026-09-08 | 20d | 1d |  | 16h | 0% | On Time | Process | 0,00% | 0% | 0% | 0,00% | 60% | CHS001-000-PC3-DR-021 |
| 251 | 1.6.1.3.22 | Process Instrumentation Diagram - 22 | 20d | 2026-08-12 | 2026-09-08 | 28 | 2026-08-12 | 2026-09-08 | 20d | 1d |  | 16h | 0% | On Time | Process | 0,00% | 0% | 0% | 0,00% | 60% | CHS001-000-PC3-DR-022 |
| 252 | 1.6.1.3.23 | Process Instrumentation Diagram - 23 | 20d | 2026-08-12 | 2026-09-08 | 28 | 2026-08-12 | 2026-09-08 | 20d | 1d |  | 16h | 0% | On Time | Process | 0,00% | 0% | 0% | 0,00% | 60% | CHS001-000-PC3-DR-023 |
| 253 | 1.6.1.3.24 | Process Instrumentation Diagram - 24 | 20d | 2026-08-12 | 2026-09-08 | 28 | 2026-08-12 | 2026-09-08 | 20d | 1d |  | 16h | 0% | On Time | Process | 0,00% | 0% | 0% | 0,00% | 60% | CHS001-000-PC3-DR-024 |
| 254 | 1.6.1.3.25 | Process Instrumentation Diagram - 25 | 20d | 2026-08-12 | 2026-09-08 | 28 | 2026-08-12 | 2026-09-08 | 20d | 1d |  | 16h | 0% | On Time | Process | 0,00% | 0% | 0% | 0,00% | 60% | CHS001-000-PC3-DR-025 |
| 255 | 1.6.1.3.26 | Process Instrumentation Diagram - 26 | 20d | 2026-08-12 | 2026-09-08 | 28 | 2026-08-12 | 2026-09-08 | 20d | 1d |  | 16h | 0% | On Time | Process | 0,00% | 0% | 0% | 0,00% | 60% | CHS001-000-PC3-DR-026 |
| 256 | 1.6.1.3.27 | Process Instrumentation Diagram - 27 | 20d | 2026-08-12 | 2026-09-08 | 28 | 2026-08-12 | 2026-09-08 | 20d | 1d |  | 16h | 0% | On Time | Process | 0,00% | 0% | 0% | 0,00% | 60% | CHS001-000-PC3-DR-027 |
| 257 | 1.6.1.3.28 | Process Instrumentation Diagram - 28 | 20d | 2026-08-12 | 2026-09-08 | 28 | 2026-08-12 | 2026-09-08 | 20d | 1d |  | 16h | 0% | On Time | Process | 0,00% | 0% | 0% | 0,00% | 60% | CHS001-000-PC3-DR-028 |
| 258 | 1.6.1.3.29 | Process Instrumentation Diagram - 29 | 20d | 2026-08-12 | 2026-09-08 | 28 | 2026-08-12 | 2026-09-08 | 20d | 1d |  | 16h | 0% | On Time | Process | 0,00% | 0% | 0% | 0,00% | 60% | CHS001-000-PC3-DR-029 |
| 259 | 1.6.1.3.30 | Process Instrumentation Diagram - 30 | 20d | 2026-08-12 | 2026-09-08 | 28 | 2026-08-12 | 2026-09-08 | 20d | 1d |  | 16h | 0% | On Time | Process | 0,00% | 0% | 0% | 0,00% | 60% | CHS001-000-PC3-DR-030 |
| 260 | 1.6.1.3.31 | Process Instrumentation Diagram - 31 | 20d | 2026-08-12 | 2026-09-08 | 28 | 2026-08-12 | 2026-09-08 | 20d | 1d |  | 16h | 0% | On Time | Process | 0,00% | 0% | 0% | 0,00% | 60% | CHS001-000-PC3-DR-031 |
| 261 | 1.6.1.3.32 | Process Instrumentation Diagram - 32 | 20d | 2026-08-12 | 2026-09-08 | 28 | 2026-08-12 | 2026-09-08 | 20d | 1d |  | 16h | 0% | On Time | Process | 0,00% | 0% | 0% | 0,00% | 60% | CHS001-000-PC3-DR-032 |
| 262 | 1.6.1.3.33 | Process Instrumentation Diagram - 33 | 20d | 2026-08-12 | 2026-09-08 | 28 | 2026-08-12 | 2026-09-08 | 20d | 1d |  | 16h | 0% | On Time | Process | 0,00% | 0% | 0% | 0,00% | 60% | CHS001-000-PC3-DR-033 |
| 263 | 1.6.1.3.34 | Process Instrumentation Diagram - 34 | 20d | 2026-08-12 | 2026-09-08 | 28 | 2026-08-12 | 2026-09-08 | 20d | 1d |  | 16h | 0% | On Time | Process | 0,00% | 0% | 0% | 0,00% | 60% | CHS001-000-PC3-DR-034 |
| 264 | 1.6.1.3.35 | Process Instrumentation Diagram - 35 | 20d | 2026-08-12 | 2026-09-08 | 28 | 2026-08-12 | 2026-09-08 | 20d | 1d |  | 16h | 0% | On Time | Process | 0,00% | 0% | 0% | 0,00% | 60% | CHS001-000-PC3-DR-035 |
| 265 | 1.6.1.3.36 | Process Instrumentation Diagram - 36 | 20d | 2026-08-12 | 2026-09-08 | 28 | 2026-08-12 | 2026-09-08 | 20d | 1d |  | 16h | 0% | On Time | Process | 0,00% | 0% | 0% | 0,00% | 60% | CHS001-000-PC3-DR-036 |
| 266 | 1.6.1.3.37 | Process Instrumentation Diagram - 37 | 20d | 2026-08-12 | 2026-09-08 | 28 | 2026-08-12 | 2026-09-08 | 20d | 1d |  | 16h | 0% | On Time | Process | 0,00% | 0% | 0% | 0,00% | 60% | CHS001-000-PC3-DR-037 |
| 267 | 1.6.1.3.38 | Process Instrumentation Diagram - 38 | 20d | 2026-08-12 | 2026-09-08 | 28 | 2026-08-12 | 2026-09-08 | 20d | 1d |  | 16h | 0% | On Time | Process | 0,00% | 0% | 0% | 0,00% | 60% | CHS001-000-PC3-DR-038 |
| 268 | 1.6.1.3.39 | Process Instrumentation Diagram - 39 | 20d | 2026-08-12 | 2026-09-08 | 28 | 2026-08-12 | 2026-09-08 | 20d | 1d |  | 16h | 0% | On Time | Process | 0,00% | 0% | 0% | 0,00% | 60% | CHS001-000-PC3-DR-039 |
| 269 | 1.6.1.3.40 | Process Instrumentation Diagram - 40 | 20d | 2026-08-12 | 2026-09-08 | 28 | 2026-08-12 | 2026-09-08 | 20d | 1d |  | 16h | 0% | On Time | Process | 0,00% | 0% | 0% | 0,00% | 60% | CHS001-000-PC3-DR-040 |
| 270 | 1.6.1.3.41 | Process Instrumentation Diagram - 41 | 20d | 2026-08-12 | 2026-09-08 | 28 | 2026-08-12 | 2026-09-08 | 20d | 1d |  | 16h | 0% | On Time | Process | 0,00% | 0% | 0% | 0,00% | 60% | CHS001-000-PC3-DR-041 |
| 271 | 1.6.1.3.42 | Process Instrumentation Diagram - 42 | 20d | 2026-08-12 | 2026-09-08 | 28 | 2026-08-12 | 2026-09-08 | 20d | 1d |  | 16h | 0% | On Time | Process | 0,00% | 0% | 0% | 0,00% | 60% | CHS001-000-PC3-DR-042 |
| 272 | 1.6.1.3.43 | Process Instrumentation Diagram - 43 | 20d | 2026-08-12 | 2026-09-08 | 28 | 2026-08-12 | 2026-09-08 | 20d | 1d |  | 16h | 0% | On Time | Process | 0,00% | 0% | 0% | 0,00% | 60% | CHS001-000-PC3-DR-043 |
| 273 | 1.6.1.3.44 | Process Instrumentation Diagram - 44 | 20d | 2026-08-12 | 2026-09-08 | 28 | 2026-08-12 | 2026-09-08 | 20d | 1d |  | 16h | 0% | On Time | Process | 0,00% | 0% | 0% | 0,00% | 60% | CHS001-000-PC3-DR-044 |
| 274 | 1.6.1.3.45 | Process Instrumentation Diagram - 45 | 20d | 2026-08-12 | 2026-09-08 | 28 | 2026-08-12 | 2026-09-08 | 20d | 1d |  | 16h | 0% | On Time | Process | 0,00% | 0% | 0% | 0,00% | 60% | CHS001-000-PC3-DR-045 |
| 275 | 1.6.1.3.46 | Process Instrumentation Diagram - 46 | 20d | 2026-08-12 | 2026-09-08 | 28 | 2026-08-12 | 2026-09-08 | 20d | 1d |  | 16h | 0% | On Time | Process | 0,00% | 0% | 0% | 0,00% | 60% | CHS001-000-PC3-DR-046 |
| 276 | 1.6.1.3.47 | Process Instrumentation Diagram - 47 | 20d | 2026-08-12 | 2026-09-08 | 28 | 2026-08-12 | 2026-09-08 | 20d | 1d |  | 16h | 0% | On Time | Process | 0,00% | 0% | 0% | 0,00% | 60% | CHS001-000-PC3-DR-047 |
| 277 | 1.6.1.3.48 | Process Instrumentation Diagram - 48 | 20d | 2026-08-12 | 2026-09-08 | 28 | 2026-08-12 | 2026-09-08 | 20d | 1d |  | 16h | 0% | On Time | Process | 0,00% | 0% | 0% | 0,00% | 60% | CHS001-000-PC3-DR-048 |
| 278 | 1.6.1.3.49 | Process Instrumentation Diagram - 49 | 20d | 2026-08-12 | 2026-09-08 | 28 | 2026-08-12 | 2026-09-08 | 20d | 1d |  | 16h | 0% | On Time | Process | 0,00% | 0% | 0% | 0,00% | 60% | CHS001-000-PC3-DR-049 |
| 279 | 1.6.1.3.50 | Process Instrumentation Diagram - 50 | 20d | 2026-08-12 | 2026-09-08 | 28 | 2026-08-12 | 2026-09-08 | 20d | 1d |  | 16h | 0% | On Time | Process | 0,00% | 0% | 0% | 0,00% | 60% | CHS001-000-PC3-DR-050 |
| 280 | 1.6.1.3.51 | Process Instrumentation Diagram - 51 | 20d | 2026-08-12 | 2026-09-08 | 28 | 2026-08-12 | 2026-09-08 | 20d | 1d |  | 16h | 0% | On Time | Process | 0,00% | 0% | 0% | 0,00% | 60% | CHS001-000-PC3-DR-051 |
| 281 | 1.6.1.3.52 | Process Instrumentation Diagram - 52 | 20d | 2026-08-12 | 2026-09-08 | 28 | 2026-08-12 | 2026-09-08 | 20d | 1d |  | 16h | 0% | On Time | Process | 0,00% | 0% | 0% | 0,00% | 60% | CHS001-000-PC3-DR-052 |
| 282 | 1.6.1.3.53 | Process Instrumentation Diagram - 53 | 20d | 2026-08-12 | 2026-09-08 | 28 | 2026-08-12 | 2026-09-08 | 20d | 1d |  | 16h | 0% | On Time | Process | 0,00% | 0% | 0% | 0,00% | 60% | CHS001-000-PC3-DR-053 |
| 283 | 1.6.1.3.54 | Process Instrumentation Diagram - 54 | 20d | 2026-08-12 | 2026-09-08 | 28 | 2026-08-12 | 2026-09-08 | 20d | 1d |  | 16h | 0% | On Time | Process | 0,00% | 0% | 0% | 0,00% | 60% | CHS001-000-PC3-DR-054 |
| 284 | 1.6.1.3.55 | Process Instrumentation Diagram - 55 | 20d | 2026-08-12 | 2026-09-08 | 28 | 2026-08-12 | 2026-09-08 | 20d | 1d |  | 16h | 0% | On Time | Process | 0,00% | 0% | 0% | 0,00% | 60% | CHS001-000-PC3-DR-055 |
| 285 | 1.6.1.3.56 | Process Instrumentation Diagram - 56 | 20d | 2026-08-12 | 2026-09-08 | 28 | 2026-08-12 | 2026-09-08 | 20d | 1d |  | 16h | 0% | On Time | Process | 0,00% | 0% | 0% | 0,00% | 60% | CHS001-000-PC3-DR-056 |
| 286 | 1.6.1.3.57 | Process Instrumentation Diagram - 57 | 20d | 2026-08-12 | 2026-09-08 | 28 | 2026-08-12 | 2026-09-08 | 20d | 1d |  | 16h | 0% | On Time | Process | 0,00% | 0% | 0% | 0,00% | 60% | CHS001-000-PC3-DR-057 |
| 287 | 1.6.1.3.58 | Process Instrumentation Diagram - 58 | 20d | 2026-08-12 | 2026-09-08 | 28 | 2026-08-12 | 2026-09-08 | 20d | 1d |  | 16h | 0% | On Time | Process | 0,00% | 0% | 0% | 0,00% | 60% | CHS001-000-PC3-DR-058 |
| 288 | 1.6.1.3.59 | Process Instrumentation Diagram - 59 | 20d | 2026-08-12 | 2026-09-08 | 28 | 2026-08-12 | 2026-09-08 | 20d | 1d |  | 16h | 0% | On Time | Process | 0,00% | 0% | 0% | 0,00% | 60% | CHS001-000-PC3-DR-059 |
| 289 | 1.6.1.3.60 | Process Instrumentation Diagram - 60 | 20d | 2026-08-12 | 2026-09-08 | 28 | 2026-08-12 | 2026-09-08 | 20d | 1d |  | 16h | 0% | On Time | Process | 0,00% | 0% | 0% | 0,00% | 60% | CHS001-000-PC3-DR-060 |

| ID | WBS | Task | Duration | Start | Finish | Predecessors | Baseline start | Baseline finish | Baseline duration | Total slack | Free slack | Work | Text3 | Status1 | Disciplina | %Desvio Padrão | % Previsto Reprog. | Text12 | Text15 | Fase | NA DOCUMENT NUMBER |
| --- | --- | --- | --- | --- | --- | --- | --- | --- | --- | --- | --- | --- | --- | --- | --- | --- | --- | --- | --- | --- | --- |
| 290 | 1.6.1.4 | **Calculation Sheet** | 20d | 2026-08-12 | 2026-09-08 |  | 2026-08-12 | 2026-09-08 | 20d | 13d |  | 440h | 0% | On Time | Process | 0,00% | 0% | 0% | 0,00% | 60% |  |
| 291 | 1.6.1.4.1 | Calculation Sheet - Lines | 10d | 2026-08-26 | 2026-09-08 | 229FF | 2026-08-26 | 2026-09-08 | 10d | 13d |  | 200h | 0% | On Time | Process | 0,00% | 0% | 0% | 0,00% | 60% | CHS001-000-PC5-CS-001 |
| 292 | 1.6.1.4.2 | Calculation Sheet - Pumps | 10d | 2026-08-26 | 2026-09-08 | 229FF | 2026-08-26 | 2026-09-08 | 10d | 13d |  | 100h | 0% | On Time | Process | 0,00% | 0% | 0% | 0,00% | 60% | CHS001-000-PC5-CS-002 |
| 293 | 1.6.1.4.3 | Calculation Sheet- Control Valves | 10d | 2026-08-26 | 2026-09-08 | 229FF | 2026-08-26 | 2026-09-08 | 10d | 13d |  | 40h | 0% | On Time | Process | 0,00% | 0% | 0% | 0,00% | 60% | CHS001-000-PC5-CS-003 |
| 294 | 1.6.1.4.4 | Calculation Sheet - Existing and new Equipments | 20d | 2026-08-12 | 2026-09-08 | 28 | 2026-08-12 | 2026-09-08 | 20d | 13d |  | 100h | 0% | On Time | Process | 0,00% | 0% | 0% | 0,00% | 60% | CHS001-000-PC5-CS-004 |
| 295 | 1.6.1.5 | **Process Data Sheet** | 17d | 2026-08-26 | 2026-09-17 |  | 2026-08-26 | 2026-09-17 | 17d | 1d | 0d | 256h | 0% | On Time | Process | 0,00% | 0% | 0% | 0,00% | 60% |  |
| 296 | 1.6.1.5.1 | Process Data sheet - Area Classification | 7d | 2026-08-26 | 2026-09-03 | 202 | 2026-08-26 | 2026-09-03 | 7d | 11d |  | 24h | 0% | On Time | Process | 0,00% | 0% | 0% | 0,00% | 60% | CHS001-000-PC7-DS-001 |
| 297 | 1.6.1.5.2 | Process Data sheet - Pressure | 7d | 2026-09-09 | 2026-09-17 | 229 | 2026-09-09 | 2026-09-17 | 7d | 1d |  | 40h | 0% | On Time | Process | 0,00% | 0% | 0% | 0,00% | 60% | CHS001-000-PC7-DS-002 |
| 298 | 1.6.1.5.3 | Process Data sheet - Temperature | 7d | 2026-09-09 | 2026-09-17 | 229 | 2026-09-09 | 2026-09-17 | 7d | 1d |  | 40h | 0% | On Time | Process | 0,00% | 0% | 0% | 0,00% | 60% | CHS001-000-PC7-DS-003 |
| 299 | 1.6.1.5.4 | Process Data sheet - Flow | 7d | 2026-09-09 | 2026-09-17 | 229 | 2026-09-09 | 2026-09-17 | 7d | 1d |  | 40h | 0% | On Time | Process | 0,00% | 0% | 0% | 0,00% | 60% | CHS001-000-PC7-DS-004 |
| 300 | 1.6.1.5.5 | Process Data sheet - Level | 7d | 2026-09-09 | 2026-09-17 | 229 | 2026-09-09 | 2026-09-17 | 7d | 1d |  | 40h | 0% | On Time | Process | 0,00% | 0% | 0% | 0,00% | 60% | CHS001-000-PC7-DS-005 |
| 301 | 1.6.1.5.6 | Process Data sheet - Control Valves | 7d | 2026-09-09 | 2026-09-17 | 229 | 2026-09-09 | 2026-09-17 | 7d | 1d |  | 40h | 0% | On Time | Process | 0,00% | 0% | 0% | 0,00% | 60% | CHS001-000-PC7-DS-006 |
| 302 | 1.6.1.5.7 | Process Data sheet - ON-OFF Valves | 7d | 2026-09-09 | 2026-09-17 | 229 | 2026-09-09 | 2026-09-17 | 7d | 1d |  | 16h | 0% | On Time | Process | 0,00% | 0% | 0% | 0,00% | 60% | CHS001-000-PC7-DS-007 |
| 303 | 1.6.1.5.8 | Process Data sheet -Safety Valves | 7d | 2026-09-09 | 2026-09-17 | 229 | 2026-09-09 | 2026-09-17 | 7d | 1d |  | 16h | 0% | On Time | Process | 0,00% | 0% | 0% | 0,00% | 60% | CHS001-000-PC7-DS-008 |
| 304 | 1.6.2 | **Instrumentation** | 32d | 2026-08-12 | 2026-09-24 |  | 2026-08-12 | 2026-09-24 | 32d | 1d |  | 496h | 0% | On Time | Instrumentation | 0,00% | 0% | 0% | 0,00% | 60% |  |
| 305 | 1.6.2.1 | **Instrumentation and automation Design Criteria** | 5d | 2026-08-12 | 2026-08-18 |  | 2026-08-12 | 2026-08-18 | 5d | 28d |  | 8h | 0% | On Time | Instrumentation | 0,00% | 0% | 0% | 0,00% | 60% |  |
| 306 | 1.6.2.1.1 | Instrumentation and automation Design Criteria | 5d | 2026-08-12 | 2026-08-18 | 28 | 2026-08-12 | 2026-08-18 | 5d | 28d |  | 8h | 0% | On Time | Instrumentation | 0,00% | 0% | 0% | 0,00% | 60% | CHS001-000-IA6-TS-001 |
| 307 | 1.6.2.2 | **Descpritive Memorandum** | 5d | 2026-09-16 | 2026-09-22 |  | 2026-09-16 | 2026-09-22 | 5d | 3d |  | 24h | 0% | On Time | Instrumentation | 0,00% | 0% | 0% | 0,00% | 60% |  |
| 308 | 1.6.2.2.1 | Descpritive Memorandum | 5d | 2026-09-16 | 2026-09-22 | 334 | 2026-09-16 | 2026-09-22 | 5d | 3d |  | 24h | 0% | On Time | Instrumentation | 0,00% | 0% | 0% | 0,00% | 60% | CHS001-000-IA1-DM-001 |
| 309 | 1.6.2.3 | **Lists** | 7d | 2026-09-07 | 2026-09-15 |  | 2026-09-07 | 2026-09-15 | 7d | 8d |  | 144h | 0% | On Time | Instrumentation | 0,00% | 0% | 0% | 0,00% | 60% |  |
| 310 | 1.6.2.3.1 | Instrument List | 7d | 2026-09-07 | 2026-09-15 | 229FF+5d | 2026-09-07 | 2026-09-15 | 7d | 8d |  | 16h | 0% | On Time | Instrumentation | 0,00% | 0% | 0% | 0,00% | 60% | CHS001-000-IA2-LI-001 |
| 311 | 1.6.2.3.2 | IO List | 7d | 2026-09-07 | 2026-09-15 | 229FF+5d | 2026-09-07 | 2026-09-15 | 7d | 8d |  | 16h | 0% | On Time | Instrumentation | 0,00% | 0% | 0% | 0,00% | 60% | CHS001-000-IA2-LI-002 |
| 312 | 1.6.2.3.3 | Communication List | 7d | 2026-09-07 | 2026-09-15 | 229FF+5d | 2026-09-07 | 2026-09-15 | 7d | 8d |  | 16h | 0% | On Time | Instrumentation | 0,00% | 0% | 0% | 0,00% | 60% | CHS001-000-IA2-LI-003 |
| 313 | 1.6.2.3.4 | Equipment List | 7d | 2026-09-07 | 2026-09-15 | 229FF+5d | 2026-09-07 | 2026-09-15 | 7d | 8d |  | 16h | 0% | On Time | Instrumentation | 0,00% | 0% | 0% | 0,00% | 60% | CHS001-000-IA2-LI-004 |
| 314 | 1.6.2.3.5 | SIS Function List | 7d | 2026-09-07 | 2026-09-15 | 229FF+5d | 2026-09-07 | 2026-09-15 | 7d | 8d |  | 16h | 0% | On Time | Instrumentation | 0,00% | 0% | 0% | 0,00% | 60% | CHS001-000-IA2-LI-005 |
| 315 | 1.6.2.3.6 | Setpoints and Alarms List | 7d | 2026-09-07 | 2026-09-15 | 229FF+5d | 2026-09-07 | 2026-09-15 | 7d | 8d |  | 16h | 0% | On Time | Instrumentation | 0,00% | 0% | 0% | 0,00% | 60% | CHS001-000-IA2-LI-006 |
| 316 | 1.6.2.3.7 | Network Segment List | 7d | 2026-09-07 | 2026-09-15 | 229FF+5d | 2026-09-07 | 2026-09-15 | 7d | 8d |  | 16h | 0% | On Time | Instrumentation | 0,00% | 0% | 0% | 0,00% | 60% | CHS001-000-IA2-LI-007 |
| 317 | 1.6.2.3.8 | Pneumatic Consumers List | 7d | 2026-09-07 | 2026-09-15 | 229FF+5d | 2026-09-07 | 2026-09-15 | 7d | 8d |  | 16h | 0% | On Time | Instrumentation | 0,00% | 0% | 0% | 0,00% | 60% | CHS001-000-IA2-LI-008 |
| 318 | 1.6.2.3.9 | Electrical Load List | 7d | 2026-09-07 | 2026-09-15 | 229FF+5d | 2026-09-07 | 2026-09-15 | 7d | 8d |  | 16h | 0% | On Time | Instrumentation | 0,00% | 0% | 0% | 0,00% | 60% | CHS001-000-IA2-LI-009 |

| ID | WBS | Task | Duration | Start | Finish | Predecessors | Baseline start | Baseline finish | Baseline duration | Total slack | Free slack | Work | Text3 | Status1 | Disciplina | %Desvio Padrão | % Previsto Reprog. | Text12 | Text15 | Fase | NA DOCUMENT NUMBER |
| --- | --- | --- | --- | --- | --- | --- | --- | --- | --- | --- | --- | --- | --- | --- | --- | --- | --- | --- | --- | --- | --- |
| 319 | 1.6.2.4 | **Network Architecture** | 3d | 2026-08-12 | 2026-08-14 |  | 2026-08-12 | 2026-08-14 | 3d | 30d |  | 24h | 0% | On Time | Instrumentation | 0,00% | 0% | 0% | 0,00% | 60% |  |
| 320 | 1.6.2.4.1 | Network Architecture | 3d | 2026-08-12 | 2026-08-14 | 28 | 2026-08-12 | 2026-08-14 | 3d | 30d |  | 24h | 0% | On Time | Instrumentation | 0,00% | 0% | 0% | 0,00% | 60% | CHS001-000-IA3-DR-001 |
| 321 | 1.6.2.5 | **Instrument Data Sheet** | 15d | 2026-09-04 | 2026-09-24 |  | 2026-09-04 | 2026-09-24 | 15d | 1d |  | 176h | 0% | On Time | Instrumentation | 0,00% | 0% | 0% | 0,00% | 60% |  |
| 322 | 1.6.2.5.1 | Instrument data Sheet - Magnetic Flowmeters | 15d | 2026-09-04 | 2026-09-24 | 295FS-10d | 2026-09-04 | 2026-09-24 | 15d | 1d |  | 24h | 0% | On Time | Instrumentation | 0,00% | 0% | 0% | 0,00% | 60% | CHS001-000-IA7-DS-001 |
| 323 | 1.6.2.5.2 | Instrument Data Sheet - Coriolisis Flowmeters | 15d | 2026-09-04 | 2026-09-24 | 295FS-10d | 2026-09-04 | 2026-09-24 | 15d | 1d |  | 8h | 0% | On Time | Instrumentation | 0,00% | 0% | 0% | 0,00% | 60% | CHS001-000-IA7-DS-002 |
| 324 | 1.6.2.5.3 | Instrument Data Sheet - Diferencial Pressure Transmister | 15d | 2026-09-04 | 2026-09-24 | 295FS-10d | 2026-09-04 | 2026-09-24 | 15d | 1d |  | 24h | 0% | On Time | Instrumentation | 0,00% | 0% | 0% | 0,00% | 60% | CHS001-000-IA7-DS-003 |
| 325 | 1.6.2.5.4 | Instrument Data Sheet - Diferencial Level Transmister | 15d | 2026-09-04 | 2026-09-24 | 295FS-10d | 2026-09-04 | 2026-09-24 | 15d | 1d |  | 24h | 0% | On Time | Instrumentation | 0,00% | 0% | 0% | 0,00% | 60% | CHS001-000-IA7-DS-004 |
| 326 | 1.6.2.5.5 | Instrument Data Sheet - Radar Level Transmister | 15d | 2026-09-04 | 2026-09-24 | 295FS-10d | 2026-09-04 | 2026-09-24 | 15d | 1d |  | 8h | 0% | On Time | Instrumentation | 0,00% | 0% | 0% | 0,00% | 60% | CHS001-000-IA7-DS-005 |
| 327 | 1.6.2.5.6 | Instrument Data Sheet - Control Valves | 15d | 2026-09-04 | 2026-09-24 | 295FS-10d | 2026-09-04 | 2026-09-24 | 15d | 1d |  | 24h | 0% | On Time | Instrumentation | 0,00% | 0% | 0% | 0,00% | 60% | CHS001-000-IA7-DS-006 |
| 328 | 1.6.2.5.7 | Instrument Data Sheet - ON-OFF valves | 15d | 2026-09-04 | 2026-09-24 | 295FS-10d | 2026-09-04 | 2026-09-24 | 15d | 1d |  | 8h | 0% | On Time | Instrumentation | 0,00% | 0% | 0% | 0,00% | 60% | CHS001-000-IA7-DS-007 |
| 329 | 1.6.2.5.8 | Instrument Data Sheet - Safety Valves | 15d | 2026-09-04 | 2026-09-24 | 295FS-10d | 2026-09-04 | 2026-09-24 | 15d | 1d |  | 24h | 0% | On Time | Instrumentation | 0,00% | 0% | 0% | 0,00% | 60% | CHS001-000-IA7-DS-008 |
| 330 | 1.6.2.5.9 | Instrument Data Sheet - Level Switch | 15d | 2026-09-04 | 2026-09-24 | 295FS-10d | 2026-09-04 | 2026-09-24 | 15d | 1d |  | 16h | 0% | On Time | Instrumentation | 0,00% | 0% | 0% | 0,00% | 60% | CHS001-000-IA7-DS-009 |
| 331 | 1.6.2.5.10 | Instrument Data Sheet - Temperature Transmiter | 15d | 2026-09-04 | 2026-09-24 | 295FS-10d | 2026-09-04 | 2026-09-24 | 15d | 1d |  | 16h | 0% | On Time | Instrumentation | 0,00% | 0% | 0% | 0,00% | 60% | CHS001-000-IA7-DS-010 |
| 332 | 1.6.2.6 | **Technical Specification** | 15d | 2026-09-02 | 2026-09-22 |  | 2026-09-02 | 2026-09-22 | 15d | 3d |  | 40h | 0% | On Time | Instrumentation | 0,00% | 0% | 0% | 0,00% | 60% |  |
| 333 | 1.6.2.6.1 | Softwares, hardaware and Integration Services - Technical Specification | 15d | 2026-09-02 | 2026-09-22 | 334FS-10d | 2026-09-02 | 2026-09-22 | 15d | 3d |  | 40h | 0% | On Time | Instrumentation | 0,00% | 0% | 0% | 0,00% | 60% | CHS001-000-IA6-TS-002 |
| 334 | 1.6.2.7 | **Instrumenttion Plans** | 5d | 2026-09-09 | 2026-09-15 |  | 2026-09-09 | 2026-09-15 | 5d | 3d | 0d | 48h | 0% | On Time | Instrumentation | 0,00% | 0% | 0% | 0,00% | 60% |  |
| 335 | 1.6.2.7.1 | Control / Network Routing Plan-Part 01 | 5d | 2026-09-09 | 2026-09-15 | 491 | 2026-09-09 | 2026-09-15 | 5d | 3d |  | 16h | 0% | On Time | Instrumentation | 0,00% | 0% | 0% | 0,00% | 60% | CHS001-000-IA3-DR-005 |
| 336 | 1.6.2.7.2 | Control / Network Routing Plan-Part 02 | 5d | 2026-09-09 | 2026-09-15 | 491 | 2026-09-09 | 2026-09-15 | 5d | 3d |  | 16h | 0% | On Time | Instrumentation | 0,00% | 0% | 0% | 0,00% | 60% | CHS001-000-IA3-DR-006 |
| 337 | 1.6.2.7.3 | Instrumenttion location Plan | 5d | 2026-09-09 | 2026-09-15 | 491 | 2026-09-09 | 2026-09-15 | 5d | 3d |  | 16h | 0% | On Time | Instrumentation | 0,00% | 0% | 0% | 0,00% | 60% | CHS001-000-IA3-DR-008 |
| 338 | 1.6.2.8 | **Typical Installation Details** | 3d | 2026-09-16 | 2026-09-18 |  | 2026-09-16 | 2026-09-18 | 3d | 5d |  | 16h | 0% | On Time | Instrumentation | 0,00% | 0% | 0% | 0,00% | 60% |  |
| 339 | 1.6.2.8.1 | Typical Installation Details | 3d | 2026-09-16 | 2026-09-18 | 334 | 2026-09-16 | 2026-09-18 | 3d | 5d |  | 16h | 0% | On Time | Instrumentation | 0,00% | 0% | 0% | 0,00% | 60% | CHS001-000-IA3-DR-007 |
| 340 | 1.6.2.9 | **Material Take off** | 5d | 2026-09-09 | 2026-09-15 |  | 2026-09-09 | 2026-09-15 | 5d | 8d |  | 16h | 0% | On Time | Instrumentation | 0,00% | 0% | 0% | 0,00% | 60% |  |
| 341 | 1.6.2.9.1 | Material Take off | 5d | 2026-09-09 | 2026-09-15 | 491 | 2026-09-09 | 2026-09-15 | 5d | 8d |  | 16h | 0% | On Time | Instrumentation | 0,00% | 0% | 0% | 0,00% | 60% | CHS001-000-IA8-LI-001 |
| 342 | 1.6.3 | **Mechanical** | 28d | 2026-08-12 | 2026-09-18 |  | 2026-08-12 | 2026-09-18 | 28d | 5d |  | 280.98h | 0% | On Time | Mechanical | 0,00% | 0% | 0% | 0,00% | 60% |  |
| 343 | 1.6.3.1 | **Mechanical Design Criteria** | 2d | 2026-08-12 | 2026-08-13 |  | 2026-08-12 | 2026-08-13 | 2d | 31d |  | 24h | 0% | On Time | Mechanical | 0,00% | 0% | 0% | 0,00% | 60% |  |
| 344 | 1.6.3.1.1 | Mechanical Design Criteria | 2d | 2026-08-12 | 2026-08-13 | 28 | 2026-08-12 | 2026-08-13 | 2d | 31d |  | 24h | 0% | On Time | Mechanical | 0,00% | 0% | 0% | 0,00% | 60% | CHS001-000-ME1-TS-001 |

| ID | WBS | Task | Duration | Start | Finish | Predecessors | Baseline start | Baseline finish | Baseline duration | Total slack | Work | Text3 | Status1 | Disciplina | %Desvio Padrão | % Previsto Reprog. | Text12 | Text15 | Fase | NA DOCUMENT NUMBER |
| --- | --- | --- | --- | --- | --- | --- | --- | --- | --- | --- | --- | --- | --- | --- | --- | --- | --- | --- | --- | --- |
| 345 | 1.6.3.2 | **List** | 20d | 2026-08-24 | 2026-09-18 |  | 2026-08-24 | 2026-09-18 | 20d | 5d | 24h | 0% | On Time | Mechanical | 0,00% | 0% | 0% | 0,00% | 60% |  |
| 346 | 1.6.3.2.1 | Mechanical Equipment List | 20d | 2026-08-24 | 2026-09-18 | 229FS-12d | 2026-08-24 | 2026-09-18 | 20d | 5d | 24h | 0% | On Time | Mechanical | 0,00% | 0% | 0% | 0,00% | 60% | CHS001-000-ME8-LI-001 |
| 347 | 1.6.3.3 | **Mechanical Datasheet** | 20d | 2026-08-19 | 2026-09-15 |  | 2026-08-19 | 2026-09-15 | 20d | 8d | 154.98h | 0% | On Time | Mechanical | 0,00% | 0% | 0% | 0,00% | 60% |  |
| 348 | 1.6.3.3.1 | Mechanical Datasheet- Vessels and Tanks | 20d | 2026-08-19 | 2026-09-15 | 28, 229FS-15d | 2026-08-19 | 2026-09-15 | 20d | 8d | 5.74h | 0% | On Time | Mechanical | 0,00% | 0% | 0% | 0,00% | 60% | CHS001-000-ME7-DS-001 |
| 349 | 1.6.3.3.2 | Mechanical Datasheet- Process Pumps | 20d | 2026-08-19 | 2026-09-15 | 28, 229FS-15d | 2026-08-19 | 2026-09-15 | 20d | 8d | 5.74h | 0% | On Time | Mechanical | 0,00% | 0% | 0% | 0,00% | 60% | CHS001-000-ME7-DS-002 |
| 350 | 1.6.3.3.3 | Mechanical Datasheet- Feed Heater | 20d | 2026-08-19 | 2026-09-15 | 28, 229FS-15d | 2026-08-19 | 2026-09-15 | 20d | 8d | 5.74h | 0% | On Time | Mechanical | 0,00% | 0% | 0% | 0,00% | 60% | CHS001-000-ME7-DS-003 |
| 351 | 1.6.3.3.4 | Mechanical Datasheet- Beer Column Internals | 20d | 2026-08-19 | 2026-09-15 | 28, 229FS-15d | 2026-08-19 | 2026-09-15 | 20d | 8d | 5.74h | 0% | On Time | Mechanical | 0,00% | 0% | 0% | 0,00% | 60% | CHS001-000-ME7-DS-004 |
| 352 | 1.6.3.3.5 | Mechanical Datasheet- Reboiler | 20d | 2026-08-19 | 2026-09-15 | 28, 229FS-15d | 2026-08-19 | 2026-09-15 | 20d | 8d | 5.74h | 0% | On Time | Mechanical | 0,00% | 0% | 0% | 0,00% | 60% | CHS001-000-ME7-DS-005 |
| 353 | 1.6.3.3.6 | Mechanical Datasheet- Superheater | 20d | 2026-08-19 | 2026-09-15 | 28, 229FS-15d | 2026-08-19 | 2026-09-15 | 20d | 8d | 5.74h | 0% | On Time | Mechanical | 0,00% | 0% | 0% | 0,00% | 60% | CHS001-000-ME7-DS-006 |
| 354 | 1.6.3.3.7 | Mechanical Datasheet- Liquid Filters | 20d | 2026-08-19 | 2026-09-15 | 28, 229FS-15d | 2026-08-19 | 2026-09-15 | 20d | 8d | 5.74h | 0% | On Time | Mechanical | 0,00% | 0% | 0% | 0,00% | 60% | CHS001-000-ME7-DS-007 |
| 355 | 1.6.3.3.8 | Mechanical Datasheet- Stripper Collumn | 20d | 2026-08-19 | 2026-09-15 | 28, 229FS-15d | 2026-08-19 | 2026-09-15 | 20d | 8d | 5.74h | 0% | On Time | Mechanical | 0,00% | 0% | 0% | 0,00% | 60% | CHS001-000-ME7-DS-008 |
| 356 | 1.6.3.3.9 | Mechanical Datasheet- Stripper Collumns Internals | 20d | 2026-08-19 | 2026-09-15 | 28, 229FS-15d | 2026-08-19 | 2026-09-15 | 20d | 8d | 5.74h | 0% | On Time | Mechanical | 0,00% | 0% | 0% | 0,00% | 60% | CHS001-000-ME7-DS-009 |
| 357 | 1.6.3.3.10 | Mechanical Datasheet- Electrical Heat Tracing Modules | 20d | 2026-08-19 | 2026-09-15 | 28, 229FS-15d | 2026-08-19 | 2026-09-15 | 20d | 8d | 5.74h | 0% | On Time | Mechanical | 0,00% | 0% | 0% | 0,00% | 60% | CHS001-000-ME7-DS-010 |
| 358 | 1.6.3.3.11 | Mechanical Datasheet- Vapor Filters | 20d | 2026-08-19 | 2026-09-15 | 28, 229FS-15d | 2026-08-19 | 2026-09-15 | 20d | 8d | 5.74h | 0% | On Time | Mechanical | 0,00% | 0% | 0% | 0,00% | 60% | CHS001-000-ME7-DS-011 |
| 359 | 1.6.3.3.12 | Mechanical Datasheet- Heat Exchangers | 20d | 2026-08-19 | 2026-09-15 | 28, 229FS-15d | 2026-08-19 | 2026-09-15 | 20d | 8d | 5.74h | 0% | On Time | Mechanical | 0,00% | 0% | 0% | 0,00% | 60% | CHS001-000-ME7-DS-012 |
| 360 | 1.6.3.3.13 | Mechanical Datasheet- Evaporators | 20d | 2026-08-19 | 2026-09-15 | 28, 229FS-15d | 2026-08-19 | 2026-09-15 | 20d | 8d | 5.74h | 0% | On Time | Mechanical | 0,00% | 0% | 0% | 0,00% | 60% | CHS001-000-ME7-DS-013 |
| 361 | 1.6.3.3.14 | Mechanical Datasheet- 014 | 20d | 2026-08-19 | 2026-09-15 | 28, 229FS-15d | 2026-08-19 | 2026-09-15 | 20d | 8d | 5.74h | 0% | On Time | Mechanical | 0,00% | 0% | 0% | 0,00% | 60% | CHS001-000-ME7-DS-014 |
| 362 | 1.6.3.3.15 | Mechanical Datasheet- 015 | 20d | 2026-08-19 | 2026-09-15 | 28, 229FS-15d | 2026-08-19 | 2026-09-15 | 20d | 8d | 5.74h | 0% | On Time | Mechanical | 0,00% | 0% | 0% | 0,00% | 60% | CHS001-000-ME7-DS-015 |
| 363 | 1.6.3.3.16 | Mechanical Datasheet- Rectifier Bottom Heater | 20d | 2026-08-19 | 2026-09-15 | 28, 229FS-15d | 2026-08-19 | 2026-09-15 | 20d | 8d | 5.74h | 0% | On Time | Mechanical | 0,00% | 0% | 0% | 0,00% | 60% | CHS001-000-ME7-DS-016 |
| 364 | 1.6.3.3.17 | Mechanical Datasheet- 190p Heater | 20d | 2026-08-19 | 2026-09-15 | 28, 229FS-15d | 2026-08-19 | 2026-09-15 | 20d | 8d | 5.74h | 0% | On Time | Mechanical | 0,00% | 0% | 0% | 0,00% | 60% | CHS001-000-ME7-DS-017 |
| 365 | 1.6.3.3.18 | Mechanical Datasheet- Permeate Condenser | 20d | 2026-08-19 | 2026-09-15 | 28, 229FS-15d | 2026-08-19 | 2026-09-15 | 20d | 8d | 5.74h | 0% | On Time | Mechanical | 0,00% | 0% | 0% | 0,00% | 60% | CHS001-000-ME7-DS-018 |
| 366 | 1.6.3.3.19 | Mechanical Datasheet- 019 | 20d | 2026-08-19 | 2026-09-15 | 28, 229FS-15d | 2026-08-19 | 2026-09-15 | 20d | 8d | 5.74h | 0% | On Time | Mechanical | 0,00% | 0% | 0% | 0,00% | 60% | CHS001-000-ME7-DS-019 |
| 367 | 1.6.3.3.20 | Mechanical Datasheet- Rectifier Bottom Vessel | 20d | 2026-08-19 | 2026-09-15 | 28, 229FS-15d | 2026-08-19 | 2026-09-15 | 20d | 8d | 5.74h | 0% | On Time | Mechanical | 0,00% | 0% | 0% | 0,00% | 60% | CHS001-000-ME7-DS-020 |
| 368 | 1.6.3.3.21 | Mechanical Datasheet- 021 | 20d | 2026-08-19 | 2026-09-15 | 28, 229FS-15d | 2026-08-19 | 2026-09-15 | 20d | 8d | 5.74h | 0% | On Time | Mechanical | 0,00% | 0% | 0% | 0,00% | 60% | CHS001-000-ME7-DS-021 |
| 369 | 1.6.3.3.22 | Mechanical Datasheet- Steam Condensate Vessel | 20d | 2026-08-19 | 2026-09-15 | 28, 229FS-15d | 2026-08-19 | 2026-09-15 | 20d | 8d | 5.74h | 0% | On Time | Mechanical | 0,00% | 0% | 0% | 0,00% | 60% | CHS001-000-ME7-DS-022 |
| 370 | 1.6.3.3.23 | Mechanical Datasheet- Permeate Vessel | 20d | 2026-08-19 | 2026-09-15 | 28, 229FS-15d | 2026-08-19 | 2026-09-15 | 20d | 8d | 5.74h | 0% | On Time | Mechanical | 0,00% | 0% | 0% | 0,00% | 60% | CHS001-000-ME7-DS-023 |
| 371 | 1.6.3.3.24 | Mechanical Datasheet- Rectifier Condenser vacuum pump - train 01 | 20d | 2026-08-19 | 2026-09-15 | 28, 229FS-15d | 2026-08-19 | 2026-09-15 | 20d | 8d | 5.74h | 0% | On Time | Mechanical | 0,00% | 0% | 0% | 0,00% | 60% | CHS001-000-ME7-DS-024 |
| 372 | 1.6.3.3.25 | Mechanical Datasheet- Rectifier Condenser vacuum pump - train 02 | 20d | 2026-08-19 | 2026-09-15 | 28, 229FS-15d | 2026-08-19 | 2026-09-15 | 20d | 8d | 5.74h | 0% | On Time | Mechanical | 0,00% | 0% | 0% | 0,00% | 60% | CHS001-000-ME7-DS-025 |
| 373 | 1.6.3.3.26 | Mechanical Datasheet- Dehydration vacuum pump - Train 01 | 20d | 2026-08-19 | 2026-09-15 | 28, 229FS-15d | 2026-08-19 | 2026-09-15 | 20d | 8d | 5.74h | 0% | On Time | Mechanical | 0,00% | 0% | 0% | 0,00% | 60% | CHS001-000-ME7-DS-026 |
| 374 | 1.6.3.3.27 | Mechanical Datasheet- Dehydration vacuum pump - Train 02 | 20d | 2026-08-19 | 2026-09-15 | 28, 229FS-15d | 2026-08-19 | 2026-09-15 | 20d | 8d | 5.74h | 0% | On Time | Mechanical | 0,00% | 0% | 0% | 0,00% | 60% | CHS001-000-ME7-DS-027 |

| ID | WBS | Task | Duration | Start | Finish | Predecessors | Baseline start | Baseline finish | Baseline duration | Total slack | Work | Text3 | Status1 | Disciplina | %Desvio Padrão | % Previsto Reprog. | Text12 | Text15 | Fase | NA DOCUMENT NUMBER |
| --- | --- | --- | --- | --- | --- | --- | --- | --- | --- | --- | --- | --- | --- | --- | --- | --- | --- | --- | --- | --- |
| 375 | 1.6.3.4 | **Technical Specification** | 20d | 2026-08-19 | 2026-09-15 |  | 2026-08-19 | 2026-09-15 | 20d | 8d | 78h | 0% | On Time | Mechanical | 0,00% | 0% | 0% | 0,00% | 60% |  |
| 376 | 1.6.3.4.1 | Technical Specification - Vessels and Tanks | 20d | 2026-08-19 | 2026-09-15 | 28, 229FS-15d | 2026-08-19 | 2026-09-15 | 20d | 8d | 6h | 0% | On Time | Mechanical | 0,00% | 0% | 0% | 0,00% | 60% | CHS001-000-ME6-TS-001 |
| 377 | 1.6.3.4.2 | Technical Specification - Process Pumps | 20d | 2026-08-19 | 2026-09-15 | 28, 229FS-15d | 2026-08-19 | 2026-09-15 | 20d | 8d | 6h | 0% | On Time | Mechanical | 0,00% | 0% | 0% | 0,00% | 60% | CHS001-000-ME6-TS-002 |
| 378 | 1.6.3.4.3 | Technical Specification - Feed Heater | 20d | 2026-08-19 | 2026-09-15 | 28, 229FS-15d | 2026-08-19 | 2026-09-15 | 20d | 8d | 6h | 0% | On Time | Mechanical | 0,00% | 0% | 0% | 0,00% | 60% | CHS001-000-ME6-TS-003 |
| 379 | 1.6.3.4.4 | Technical Specification - Beer Column Internals | 20d | 2026-08-19 | 2026-09-15 | 28, 229FS-15d | 2026-08-19 | 2026-09-15 | 20d | 8d | 6h | 0% | On Time | Mechanical | 0,00% | 0% | 0% | 0,00% | 60% | CHS001-000-ME6-TS-004 |
| 380 | 1.6.3.4.5 | Technical Specificationt- Reboiler | 20d | 2026-08-19 | 2026-09-15 | 28, 229FS-15d | 2026-08-19 | 2026-09-15 | 20d | 8d | 6h | 0% | On Time | Mechanical | 0,00% | 0% | 0% | 0,00% | 60% | CHS001-000-ME6-TS-005 |
| 381 | 1.6.3.4.6 | Technical Specification - Superheater | 20d | 2026-08-19 | 2026-09-15 | 28, 229FS-15d | 2026-08-19 | 2026-09-15 | 20d | 8d | 6h | 0% | On Time | Mechanical | 0,00% | 0% | 0% | 0,00% | 60% | CHS001-000-ME6-TS-006 |
| 382 | 1.6.3.4.7 | Technical Specification - Liquid Filters | 20d | 2026-08-19 | 2026-09-15 | 28, 229FS-15d | 2026-08-19 | 2026-09-15 | 20d | 8d | 6h | 0% | On Time | Mechanical | 0,00% | 0% | 0% | 0,00% | 60% | CHS001-000-ME6-TS-007 |
| 383 | 1.6.3.4.8 | Technical Specification - Stripper Collumn | 20d | 2026-08-19 | 2026-09-15 | 28, 229FS-15d | 2026-08-19 | 2026-09-15 | 20d | 8d | 6h | 0% | On Time | Mechanical | 0,00% | 0% | 0% | 0,00% | 60% | CHS001-000-ME6-TS-008 |
| 384 | 1.6.3.4.9 | Technical Specification - Stripper Collumns Internals | 20d | 2026-08-19 | 2026-09-15 | 28, 229FS-15d | 2026-08-19 | 2026-09-15 | 20d | 8d | 6h | 0% | On Time | Mechanical | 0,00% | 0% | 0% | 0,00% | 60% | CHS001-000-ME6-TS-009 |
| 385 | 1.6.3.4.10 | Technical Specification - Electrical Heat Tracing Modules | 20d | 2026-08-19 | 2026-09-15 | 28, 229FS-15d | 2026-08-19 | 2026-09-15 | 20d | 8d | 6h | 0% | On Time | Mechanical | 0,00% | 0% | 0% | 0,00% | 60% | CHS001-000-ME6-TS-010 |
| 386 | 1.6.3.4.11 | Technical Specification - Vapor Filters | 20d | 2026-08-19 | 2026-09-15 | 28, 229FS-15d | 2026-08-19 | 2026-09-15 | 20d | 8d | 6h | 0% | On Time | Mechanical | 0,00% | 0% | 0% | 0,00% | 60% | CHS001-000-ME6-TS-011 |
| 387 | 1.6.3.4.12 | Technical Specification - Heat Exchangers | 20d | 2026-08-19 | 2026-09-15 | 28, 229FS-15d | 2026-08-19 | 2026-09-15 | 20d | 8d | 6h | 0% | On Time | Mechanical | 0,00% | 0% | 0% | 0,00% | 60% | CHS001-000-ME6-TS-012 |
| 388 | 1.6.3.4.13 | Technical Specification - Evaporators | 20d | 2026-08-19 | 2026-09-15 | 28, 229FS-15d | 2026-08-19 | 2026-09-15 | 20d | 8d | 6h | 0% | On Time | Mechanical | 0,00% | 0% | 0% | 0,00% | 60% | CHS001-000-ME6-TS-013 |
| 389 | 1.6.4 | **Piping** | 31d | 2026-08-12 | 2026-09-23 |  | 2026-08-12 | 2026-09-23 | 31d | 2d | 288.02h | 0% | On Time | Piping | 0,00% | 0% | 0% | 0,00% | 60% |  |
| 390 | 1.6.4.1 | **Piping Desig Criteria** | 5d | 2026-08-12 | 2026-08-18 |  | 2026-08-12 | 2026-08-18 | 5d | 28d | 24h | 0% | On Time | Piping | 0,00% | 0% | 0% | 0,00% | 60% |  |
| 391 | 1.6.4.1.1 | Piping Desig Criteria | 5d | 2026-08-12 | 2026-08-18 | 28 | 2026-08-12 | 2026-08-18 | 5d | 28d | 24h | 0% | On Time | Piping | 0,00% | 0% | 0% | 0,00% | 60% | CHS001-000-PI1-TS-001 |
| 392 | 1.6.4.2 | **Arrangement** | 3d | 2026-09-09 | 2026-09-11 |  | 2026-09-09 | 2026-09-11 | 3d | 0d | 24h | 0% | On Time | Piping | 0,00% | 0% | 0% | 0,00% | 60% |  |
| 393 | 1.6.4.2.1 | Equipment General Arrangement | 3d | 2026-09-09 | 2026-09-11 | 491 | 2026-09-09 | 2026-09-11 | 3d | 0d | 24h | 0% | On Time | Piping | 0,00% | 0% | 0% | 0,00% | 60% | CHS001-000-PI2-DR-001 |
| 394 | 1.6.4.3 | **Piping Plans** | 10d | 2026-09-09 | 2026-09-22 |  | 2026-09-09 | 2026-09-22 | 10d | 3d | 192h | 0% | On Time | Piping | 0,00% | 0% | 0% | 0,00% | 60% |  |
| 395 | 1.6.4.3.1 | Piping Plans - 01 | 10d | 2026-09-09 | 2026-09-22 | 491 | 2026-09-09 | 2026-09-22 | 10d | 3d | 16h | 0% | On Time | Piping | 0,00% | 0% | 0% | 0,00% | 60% | CHS001-000-PI3-DR-001 |
| 396 | 1.6.4.3.2 | Piping Plans - 02 | 10d | 2026-09-09 | 2026-09-22 | 491 | 2026-09-09 | 2026-09-22 | 10d | 3d | 16h | 0% | On Time | Piping | 0,00% | 0% | 0% | 0,00% | 60% | CHS001-000-PI3-DR-002 |
| 397 | 1.6.4.3.3 | Piping Plans- 03 | 10d | 2026-09-09 | 2026-09-22 | 491 | 2026-09-09 | 2026-09-22 | 10d | 3d | 16h | 0% | On Time | Piping | 0,00% | 0% | 0% | 0,00% | 60% | CHS001-000-PI3-DR-003 |
| 398 | 1.6.4.3.4 | Piping Plans- 04 | 10d | 2026-09-09 | 2026-09-22 | 491 | 2026-09-09 | 2026-09-22 | 10d | 3d | 16h | 0% | On Time | Piping | 0,00% | 0% | 0% | 0,00% | 60% | CHS001-000-PI3-DR-004 |
| 399 | 1.6.4.3.5 | Piping Plans- 05 | 10d | 2026-09-09 | 2026-09-22 | 491 | 2026-09-09 | 2026-09-22 | 10d | 3d | 16h | 0% | On Time | Piping | 0,00% | 0% | 0% | 0,00% | 60% | CHS001-000-PI3-DR-005 |
| 400 | 1.6.4.3.6 | Piping Plans- 06 | 10d | 2026-09-09 | 2026-09-22 | 491 | 2026-09-09 | 2026-09-22 | 10d | 3d | 16h | 0% | On Time | Piping | 0,00% | 0% | 0% | 0,00% | 60% | CHS001-000-PI3-DR-006 |
| 401 | 1.6.4.3.7 | Piping Plans- 07 | 10d | 2026-09-09 | 2026-09-22 | 491 | 2026-09-09 | 2026-09-22 | 10d | 3d | 16h | 0% | On Time | Piping | 0,00% | 0% | 0% | 0,00% | 60% | CHS001-000-PI3-DR-007 |
| 402 | 1.6.4.3.8 | Piping Plans- 08 | 10d | 2026-09-09 | 2026-09-22 | 491 | 2026-09-09 | 2026-09-22 | 10d | 3d | 16h | 0% | On Time | Piping | 0,00% | 0% | 0% | 0,00% | 60% | CHS001-000-PI3-DR-008 |
| 403 | 1.6.4.3.9 | Piping Plans- 09 | 10d | 2026-09-09 | 2026-09-22 | 491 | 2026-09-09 | 2026-09-22 | 10d | 3d | 16h | 0% | On Time | Piping | 0,00% | 0% | 0% | 0,00% | 60% | CHS001-000-PI3-DR-009 |
| 404 | 1.6.4.3.10 | Piping Plans- 10 | 10d | 2026-09-09 | 2026-09-22 | 491 | 2026-09-09 | 2026-09-22 | 10d | 3d | 16h | 0% | On Time | Piping | 0,00% | 0% | 0% | 0,00% | 60% | CHS001-000-PI3-DR-010 |
| 405 | 1.6.4.3.11 | Piping Plans- 11 | 10d | 2026-09-09 | 2026-09-22 | 491 | 2026-09-09 | 2026-09-22 | 10d | 3d | 16h | 0% | On Time | Piping | 0,00% | 0% | 0% | 0,00% | 60% | CHS001-000-PI3-DR-011 |
| 406 | 1.6.4.3.12 | Support Book | 10d | 2026-09-09 | 2026-09-22 | 491 | 2026-09-09 | 2026-09-22 | 10d | 3d | 16h | 0% | On Time | Piping | 0,00% | 0% | 0% | 0,00% | 60% | CHS001-000-PI3-DR-012 |

| ID | WBS | Task | Duration | Start | Finish | Predecessors | Baseline start | Baseline finish | Baseline duration | Total slack | Free slack | Work | Text3 | Status1 | Disciplina | %Desvio Padrão | % Previsto Reprog. | Text12 | Text15 | Fase | NA DOCUMENT NUMBER |
| --- | --- | --- | --- | --- | --- | --- | --- | --- | --- | --- | --- | --- | --- | --- | --- | --- | --- | --- | --- | --- | --- |
| 407 | 1.6.4.4 | **Lists** | 10d | 2026-09-09 | 2026-09-22 |  | 2026-09-09 | 2026-09-22 | 10d | 3d |  | 48h | 0% | On Time | Piping | 0,00% | 0% | 0% | 0,00% | 60% |  |
| 408 | 1.6.4.4.1 | Pipe Suport List | 10d | 2026-09-09 | 2026-09-22 | 491 | 2026-09-09 | 2026-09-22 | 10d | 3d |  | 16h | 0% | On Time | Piping | 0,00% | 0% | 0% | 0,00% | 60% | CHS001-000-PI8-LI-001 |
| 409 | 1.6.4.4.2 | Speciality Intens List | 10d | 2026-09-09 | 2026-09-22 | 491 | 2026-09-09 | 2026-09-22 | 10d | 3d |  | 16h | 0% | On Time | Piping | 0,00% | 0% | 0% | 0,00% | 60% | CHS001-000-PI8-LI-002 |
| 410 | 1.6.4.4.3 | Piping and acessories Material Take-off | 10d | 2026-09-09 | 2026-09-22 | 491 | 2026-09-09 | 2026-09-22 | 10d | 3d |  | 16h | 0% | On Time | Piping | 0,00% | 0% | 0% | 0,00% | 60% | CHS001-000-PI8-LI-003 |
| 411 | 1.6.4.5 | **Calculation Sheets** | 20d | 2026-08-19 | 2026-09-15 |  | 2026-08-19 | 2026-09-15 | 20d | 2d |  | 0.01h | 0% | On Time | Piping | 0,00% | 0% | 0% | 0,00% | 60% |  |
| 412 | 1.6.4.5.1 | Stress analysys Preliminary calculation Sheets | 20d | 2026-08-19 | 2026-09-15 | 491FF+5d | 2026-08-19 | 2026-09-15 | 20d | 2d | 0d | 0.01h | 0% | On Time | Piping | 0,00% | 0% | 0% | 0,00% | 60% | CHS001-000-PI5-CS-001 |
| 413 | 1.6.4.6 | **Data Sheet** | 6d | 2026-09-16 | 2026-09-23 |  | 2026-09-16 | 2026-09-23 | 6d | 2d |  | 0.01h | 0% | On Time | Piping | 0,00% | 0% | 0% | 0,00% | 60% |  |
| 414 | 1.6.4.6.1 | Expansion Joints Data Sheet | 6d | 2026-09-16 | 2026-09-23 | 412 | 2026-09-16 | 2026-09-23 | 6d | 2d |  | 0.01h | 0% | On Time | Piping | 0,00% | 0% | 0% | 0,00% | 60% | CHS001-000-PI7-DS-001 |
| 415 | 1.6.5 | **Electrical** | 33d | 2026-08-12 | 2026-09-25 |  | 2026-08-12 | 2026-09-25 | 33d | 0d |  | 500h | 0% | On Time | Electrical | 0,00% | 0% | 0% | 0,00% | 60% |  |
| 416 | 1.6.5.1 | **Electrical Desig Criteria** | 2d | 2026-08-12 | 2026-08-13 |  | 2026-08-12 | 2026-08-13 | 2d | 31d |  | 12h | 0% | On Time | Electrical | 0,00% | 0% | 0% | 0,00% | 60% |  |
| 417 | 1.6.5.1.1 | Electrical Desig Criteria | 2d | 2026-08-12 | 2026-08-13 | 28 | 2026-08-12 | 2026-08-13 | 2d | 31d |  | 12h | 0% | On Time | Electrical | 0,00% | 0% | 0% | 0,00% | 60% | CHS001-000-EL1-TS-001 |
| 418 | 1.6.5.2 | **Descriptive Memorandum** | 15d | 2026-08-12 | 2026-09-01 |  | 2026-08-12 | 2026-09-01 | 15d | 18d |  | 24h | 0% | On Time | Electrical | 0,00% | 0% | 0% | 0,00% | 60% |  |
| 419 | 1.6.5.2.1 | Descriptive Memorandum | 15d | 2026-08-12 | 2026-09-01 | 28 | 2026-08-12 | 2026-09-01 | 15d | 18d |  | 24h | 0% | On Time | Electrical | 0,00% | 0% | 0% | 0,00% | 60% | CHS001-000-EL1-DM-001 |
| 420 | 1.6.5.3 | **Lists** | 27d | 2026-08-12 | 2026-09-17 |  | 2026-08-12 | 2026-09-17 | 27d | 2d |  | 64h | 0% | On Time | Electrical | 0,00% | 0% | 0% | 0,00% | 60% |  |
| 421 | 1.6.5.3.1 | Electrical Load List | 10d | 2026-08-12 | 2026-08-25 | 28 | 2026-08-12 | 2026-08-25 | 10d | 2d | 0d | 8h | 0% | On Time | Electrical | 0,00% | 0% | 0% | 0,00% | 60% | CHS001-000-EL2-LI-001 |
| 422 | 1.6.5.3.2 | Electrical Equipment List | 10d | 2026-08-12 | 2026-08-25 | 28 | 2026-08-12 | 2026-08-25 | 10d | 18d | 0d | 8h | 0% | On Time | Electrical | 0,00% | 0% | 0% | 0,00% | 60% | CHS001-000-EL2-LI-002 |
| 423 | 1.6.5.3.3 | Force ditribution - Material Takeoff | 7d | 2026-09-09 | 2026-09-17 | 491 | 2026-09-09 | 2026-09-17 | 7d | 6d |  | 16h | 0% | On Time | Electrical | 0,00% | 0% | 0% | 0,00% | 60% | CHS001-000-EL8-LI-001 |
| 424 | 1.6.5.3.4 | Lighting - Material Takeoff | 7d | 2026-09-09 | 2026-09-17 | 491 | 2026-09-09 | 2026-09-17 | 7d | 6d |  | 16h | 0% | On Time | Electrical | 0,00% | 0% | 0% | 0,00% | 60% | CHS001-000-EL8-LI-002 |
| 425 | 1.6.5.3.5 | Grounding and Lighting Protection Sytem - Material Takeoff | 7d | 2026-09-09 | 2026-09-17 | 491 | 2026-09-09 | 2026-09-17 | 7d | 6d |  | 16h | 0% | On Time | Electrical | 0,00% | 0% | 0% | 0,00% | 60% | CHS001-000-EL8-LI-003 |
| 426 | 1.6.5.4 | **Single Line Diagram** | 3d | 2026-08-26 | 2026-08-28 |  | 2026-08-26 | 2026-08-28 | 3d | 20d |  | 12h | 0% | On Time | Electrical | 0,00% | 0% | 0% | 0,00% | 60% |  |
| 427 | 1.6.5.4.1 | Single Line Diagram | 3d | 2026-08-26 | 2026-08-28 | 422 | 2026-08-26 | 2026-08-28 | 3d | 20d |  | 12h | 0% | On Time | Electrical | 0,00% | 0% | 0% | 0,00% | 60% | CHS001-000-EL2-DR-001 |
| 428 | 1.6.5.5 | **Electrical Plans** | 12d | 2026-09-10 | 2026-09-25 |  | 2026-09-10 | 2026-09-25 | 12d | 0d |  | 100h | 0% | On Time | Electrical | 0,00% | 0% | 0% | 0,00% | 60% |  |
| 429 | 1.6.5.5.1 | Power Distribution Plan -Part 01 | 10d | 2026-09-10 | 2026-09-23 | 491, 438 | 2026-09-10 | 2026-09-23 | 10d | 2d |  | 12h | 0% | On Time | Electrical | 0,00% | 0% | 0% | 0,00% | 60% | CHS001-000-EL3-DR-001 |
| 430 | 1.6.5.5.2 | Power Distribution Plan -Part 02 | 10d | 2026-09-10 | 2026-09-23 | 491, 438 | 2026-09-10 | 2026-09-23 | 10d | 2d |  | 12h | 0% | On Time | Electrical | 0,00% | 0% | 0% | 0,00% | 60% | CHS001-000-EL3-DR-002 |
| 431 | 1.6.5.5.3 | Heat tracing Plan- part 01 | 10d | 2026-09-10 | 2026-09-23 | 491, 438 | 2026-09-10 | 2026-09-23 | 10d | 2d |  | 12h | 0% | On Time | Electrical | 0,00% | 0% | 0% | 0,00% | 60% | CHS001-000-EL3-DR-003 |
| 432 | 1.6.5.5.4 | Heat tracing Plan- part 02 | 10d | 2026-09-10 | 2026-09-23 | 491, 438 | 2026-09-10 | 2026-09-23 | 10d | 2d |  | 12h | 0% | On Time | Electrical | 0,00% | 0% | 0% | 0,00% | 60% | CHS001-000-EL3-DR-004 |
| 433 | 1.6.5.5.5 | Ligthing Protection Plan- Part 01 | 10d | 2026-09-10 | 2026-09-23 | 491, 439 | 2026-09-10 | 2026-09-23 | 10d | 2d |  | 12h | 0% | On Time | Electrical | 0,00% | 0% | 0% | 0,00% | 60% | CHS001-000-EL3-DR-005 |
| 434 | 1.6.5.5.6 | Ligthing Protection Plan- Part 02 | 10d | 2026-09-10 | 2026-09-23 | 491, 439 | 2026-09-10 | 2026-09-23 | 10d | 2d |  | 12h | 0% | On Time | Electrical | 0,00% | 0% | 0% | 0,00% | 60% | CHS001-000-EL3-DR-006 |
| 435 | 1.6.5.5.7 | Area Classification Plan | 10d | 2026-09-14 | 2026-09-25 | 393 | 2026-09-14 | 2026-09-25 | 10d | 0d |  | 16h | 0% | On Time | Electrical | 0,00% | 0% | 0% | 0,00% | 60% | CHS001-000-EL3-DR-007 |
| 436 | 1.6.5.5.8 | Grounding Plan | 10d | 2026-09-10 | 2026-09-23 | 491, 438 | 2026-09-10 | 2026-09-23 | 10d | 2d |  | 12h | 0% | On Time | Electrical | 0,00% | 0% | 0% | 0,00% | 60% | CHS001-000-EL3-DR-008 |

| ID | WBS | Task | Duration | Start | Finish | Predecessors | Baseline start | Baseline finish | Baseline duration | Total slack | Free slack | Work | Text3 | Status1 | Disciplina | %Desvio Padrão | % Previsto Reprog. | Text12 | Text15 | Fase | NA DOCUMENT NUMBER |
| --- | --- | --- | --- | --- | --- | --- | --- | --- | --- | --- | --- | --- | --- | --- | --- | --- | --- | --- | --- | --- | --- |
| 437 | 1.6.5.6 | **Calculation Sheets** | 11d | 2026-08-26 | 2026-09-09 |  | 2026-08-26 | 2026-09-09 | 11d | 2d |  | 120h | 0% | On Time | Electrical | 0,00% | 0% | 0% | 0,00% | 60% |  |
| 438 | 1.6.5.6.1 | Force Calcluation Sheet | 11d | 2026-08-26 | 2026-09-09 | 421 | 2026-08-26 | 2026-09-09 | 11d | 2d | 0d | 24h | 0% | On Time | Electrical | 0,00% | 0% | 0% | 0,00% | 60% | CHS001-000-EL5-CS-001 |
| 439 | 1.6.5.6.2 | Lighting Calculation Sheet | 11d | 2026-08-26 | 2026-09-09 | 421 | 2026-08-26 | 2026-09-09 | 11d | 2d | 0d | 24h | 0% | On Time | Electrical | 0,00% | 0% | 0% | 0,00% | 60% | CHS001-000-EL5-CS-002 |
| 440 | 1.6.5.6.3 | Grounding Calculation Sheet | 11d | 2026-08-26 | 2026-09-09 | 421 | 2026-08-26 | 2026-09-09 | 11d | 12d |  | 24h | 0% | On Time | Electrical | 0,00% | 0% | 0% | 0,00% | 60% | CHS001-000-EL5-CS-003 |
| 441 | 1.6.5.6.4 | Lighting Calculation Sheet | 11d | 2026-08-26 | 2026-09-09 | 421 | 2026-08-26 | 2026-09-09 | 11d | 12d |  | 24h | 0% | On Time | Electrical | 0,00% | 0% | 0% | 0,00% | 60% | CHS001-000-EL5-CS-004 |
| 442 | 1.6.5.6.5 | Heat tracing Calculation Sheet | 11d | 2026-08-26 | 2026-09-09 | 421 | 2026-08-26 | 2026-09-09 | 11d | 12d |  | 24h | 0% | On Time | Electrical | 0,00% | 0% | 0% | 0,00% | 60% | CHS001-000-EL5-CS-005 |
| 443 | 1.6.5.7 | **Electrical Studies** | 15d | 2026-08-26 | 2026-09-15 |  | 2026-08-26 | 2026-09-15 | 15d | 8d |  | 120h | 0% | On Time | Electrical | 0,00% | 0% | 0% | 0,00% | 60% |  |
| 444 | 1.6.5.7.1 | Electrical Studies -Coordination and Selectivity | 15d | 2026-08-26 | 2026-09-15 | 421 | 2026-08-26 | 2026-09-15 | 15d | 8d |  | 40h | 0% | On Time | Electrical | 0,00% | 0% | 0% | 0,00% | 60% | CHS001-000-EL5-RE-001 |
| 445 | 1.6.5.7.2 | Electrical Studies - Power Flow | 15d | 2026-08-26 | 2026-09-15 | 421 | 2026-08-26 | 2026-09-15 | 15d | 8d |  | 40h | 0% | On Time | Electrical | 0,00% | 0% | 0% | 0,00% | 60% | CHS001-000-EL5-RE-002 |
| 446 | 1.6.5.7.3 | Electrical Studies - Short-Circuit | 15d | 2026-08-26 | 2026-09-15 | 421 | 2026-08-26 | 2026-09-15 | 15d | 8d |  | 40h | 0% | On Time | Electrical | 0,00% | 0% | 0% | 0,00% | 60% | CHS001-000-EL5-RE-003 |
| 447 | 1.6.5.8 | **Techinical Specification** | 5d | 2026-08-26 | 2026-09-01 |  | 2026-08-26 | 2026-09-01 | 5d | 18d |  | 48h | 0% | On Time | Electrical | 0,00% | 0% | 0% | 0,00% | 60% |  |
| 448 | 1.6.5.8.1 | Panels-Techinical Specification | 5d | 2026-08-26 | 2026-09-01 | 422 | 2026-08-26 | 2026-09-01 | 5d | 18d |  | 24h | 0% | On Time | Electrical | 0,00% | 0% | 0% | 0,00% | 60% | CHS001-000-EL6-TS-001 |
| 449 | 1.6.5.8.2 | Transformers-Techinical Specification | 5d | 2026-08-26 | 2026-09-01 | 422 | 2026-08-26 | 2026-09-01 | 5d | 18d |  | 24h | 0% | On Time | Electrical | 0,00% | 0% | 0% | 0,00% | 60% | CHS001-000-EL6-TS-002 |
| 450 | 1.6.6 | **Civil** | 32d | 2026-08-12 | 2026-09-24 |  | 2026-08-12 | 2026-09-24 | 32d | 1d |  | 204h | 0% | On Time | Civil | 0,00% | 0% | 0% | 0,00% | 60% |  |
| 451 | 1.6.6.1 | **Civil Design Criteria** | 3d | 2026-08-12 | 2026-08-14 |  | 2026-08-12 | 2026-08-14 | 3d | 30d |  | 16h | 0% | On Time | Civil | 0,00% | 0% | 0% | 0,00% | 60% |  |
| 452 | 1.6.6.1.1 | Civil Design Criteria | 3d | 2026-08-12 | 2026-08-14 | 28 | 2026-08-12 | 2026-08-14 | 3d | 30d |  | 16h | 0% | On Time | Civil | 0,00% | 0% | 0% | 0,00% | 60% | CHS001-000-CV1-TS-001 |
| 453 | 1.6.6.2 | **Descriptive Memorandum** | 5d | 2026-09-18 | 2026-09-24 |  | 2026-09-18 | 2026-09-24 | 5d | 1d |  | 24h | 0% | On Time | Civil | 0,00% | 0% | 0% | 0,00% | 60% |  |
| 454 | 1.6.6.2.1 | Descriptive Memorandum | 5d | 2026-09-18 | 2026-09-24 | 464FF | 2026-09-18 | 2026-09-24 | 5d | 1d |  | 24h | 0% | On Time | Civil | 0,00% | 0% | 0% | 0,00% | 60% | CHS001-000-CV1-DM-001 |
| 455 | 1.6.6.3 | **Civil Plans** | 1.5d | 2026-09-09 | 2026-09-10 |  | 2026-09-09 | 2026-09-10 | 1.5d | 11.5d |  | 60h | 0% | On Time | Civil | 0,00% | 0% | 0% | 0,00% | 60% |  |
| 456 | 1.6.6.3.1 | Mebrane Building - Formwork Plan | 1.5d | 2026-09-09 | 2026-09-10 | 491 | 2026-09-09 | 2026-09-10 | 1.5d | 11.5d |  | 12h | 0% | On Time | Civil | 0,00% | 0% | 0% | 0,00% | 60% | CHS001-000-CV4-DR-001 |
| 457 | 1.6.6.3.2 | Piperack and Steel Structure - Formwork Plan | 1.5d | 2026-09-09 | 2026-09-10 | 491 | 2026-09-09 | 2026-09-10 | 1.5d | 11.5d |  | 12h | 0% | On Time | Civil | 0,00% | 0% | 0% | 0,00% | 60% | CHS001-000-CV4-DR-002 |
| 458 | 1.6.6.3.3 | Evaporator- Formwork plan | 1.5d | 2026-09-09 | 2026-09-10 | 491 | 2026-09-09 | 2026-09-10 | 1.5d | 11.5d |  | 12h | 0% | On Time | Civil | 0,00% | 0% | 0% | 0,00% | 60% | CHS001-000-CV4-DR-003 |
| 459 | 1.6.6.3.4 | Striper Column and reboiler - Formwork Plan | 1.5d | 2026-09-09 | 2026-09-10 | 491 | 2026-09-09 | 2026-09-10 | 1.5d | 11.5d |  | 12h | 0% | On Time | Civil | 0,00% | 0% | 0% | 0,00% | 60% | CHS001-000-CV4-DR-004 |
| 460 | 1.6.6.3.5 | Feed tank and vessel - Formwork Plan | 1.5d | 2026-09-09 | 2026-09-10 | 491 | 2026-09-09 | 2026-09-10 | 1.5d | 11.5d |  | 12h | 0% | On Time | Civil | 0,00% | 0% | 0% | 0,00% | 60% | CHS001-000-CV4-DR-005 |

| ID | WBS | Task | Duration | Start | Finish | Predecessors | Baseline start | Baseline finish | Baseline duration | Total slack | Free slack | Work | Text3 | Status1 | Disciplina | %Desvio Padrão | % Previsto Reprog. | Text12 | Text15 | Fase | NA DOCUMENT NUMBER |
| --- | --- | --- | --- | --- | --- | --- | --- | --- | --- | --- | --- | --- | --- | --- | --- | --- | --- | --- | --- | --- | --- |
| 461 | 1.6.6.4 | **Calculation Sheet** | 15d | 2026-08-31 | 2026-09-18 |  | 2026-08-31 | 2026-09-18 | 15d | 1d |  | 80h | 0% | On Time | Civil | 0,00% | 0% | 0% | 0,00% | 60% |  |
| 462 | 1.6.6.4.1 | Foundations Calculation Sheet | 15d | 2026-08-31 | 2026-09-18 | 28FS+8d, 491FS-7d | 2026-08-31 | 2026-09-18 | 15d | 1d | 0d | 80h | 0% | On Time | Civil | 0,00% | 0% | 0% | 0,00% | 60% | CHS001-000-CV5-CS-001 |
| 463 | 1.6.6.5 | **List** | 4d | 2026-09-21 | 2026-09-24 |  | 2026-09-21 | 2026-09-24 | 4d | 1d |  | 24h | 0% | On Time | Civil | 0,00% | 0% | 0% | 0,00% | 60% |  |
| 464 | 1.6.6.5.1 | Material Take-off | 4d | 2026-09-21 | 2026-09-24 | 462, 491 | 2026-09-21 | 2026-09-24 | 4d | 1d | 0d | 24h | 0% | On Time | Civil | 0,00% | 0% | 0% | 0,00% | 60% | CHS001-000-CV8-LI-001 |
| 465 | 1.6.7 | **Steel Structure** | 30d | 2026-08-12 | 2026-09-22 |  | 2026-08-12 | 2026-09-22 | 30d | 3d |  | 192h | 0% | On Time | Steel Structure | 0,00% | 0% | 0% | 0,00% | 60% |  |
| 466 | 1.6.7.1 | **Steel Structure Design Citeria** | 5d | 2026-08-12 | 2026-08-18 |  | 2026-08-12 | 2026-08-18 | 5d | 28d |  | 12h | 0% | On Time | Steel Structure | 0,00% | 0% | 0% | 0,00% | 60% |  |
| 467 | 1.6.7.1.1 | Steel Structure Design Citeria | 5d | 2026-08-12 | 2026-08-18 | 28 | 2026-08-12 | 2026-08-18 | 5d | 28d |  | 12h | 0% | On Time | Steel Structure | 0,00% | 0% | 0% | 0,00% | 60% | CHS001-000-ST1-TS-001 |
| 468 | 1.6.7.2 | **Descriptive Memorandum** | 5d | 2026-09-16 | 2026-09-22 |  | 2026-09-16 | 2026-09-22 | 5d | 3d |  | 24h | 0% | On Time | Steel Structure | 0,00% | 0% | 0% | 0,00% | 60% |  |
| 469 | 1.6.7.2.1 | Descriptive Memorandun | 5d | 2026-09-16 | 2026-09-22 | 472 | 2026-09-16 | 2026-09-22 | 5d | 3d |  | 24h | 0% | On Time | Steel Structure | 0,00% | 0% | 0% | 0,00% | 60% | CHS001-000-ST1-DM-001 |
| 470 | 1.6.7.3 | **Calculation Sheet** | 15d | 2026-08-19 | 2026-09-08 |  | 2026-08-19 | 2026-09-08 | 15d | 13d |  | 80h | 0% | On Time | Steel Structure | 0,00% | 0% | 0% | 0,00% | 60% |  |
| 471 | 1.6.7.3.1 | Steel Structure Calculation sheet | 15d | 2026-08-19 | 2026-09-08 | 28, 491FF | 2026-08-19 | 2026-09-08 | 15d | 13d |  | 80h | 0% | On Time | Steel Structure | 0,00% | 0% | 0% | 0,00% | 60% | CHS001-000-ST5-CS-001 |
| 472 | 1.6.7.4 | **Steel Structure Plans** | 5d | 2026-09-09 | 2026-09-15 |  | 2026-09-09 | 2026-09-15 | 5d | 3d | 0d | 60h | 0% | On Time | Steel Structure | 0,00% | 0% | 0% | 0,00% | 60% |  |
| 473 | 1.6.7.4.1 | Steel Structure - Menbrana Building - Plan e Details - Part 01 | 5d | 2026-09-09 | 2026-09-15 | 491 | 2026-09-09 | 2026-09-15 | 5d | 3d |  | 12h | 0% | On Time | Steel Structure | 0,00% | 0% | 0% | 0,00% | 60% | CHS001-000-ST4-DR-001 |
| 474 | 1.6.7.4.2 | Steel Structure - Menbrana Building - Plan e Details - Part 02 | 5d | 2026-09-09 | 2026-09-15 | 491 | 2026-09-09 | 2026-09-15 | 5d | 3d |  | 12h | 0% | On Time | Steel Structure | 0,00% | 0% | 0% | 0,00% | 60% | CHS001-000-ST4-DR-002 |
| 475 | 1.6.7.4.3 | Steel Structure - Menbrana Building - Plan e Details - Part 03 | 5d | 2026-09-09 | 2026-09-15 | 491 | 2026-09-09 | 2026-09-15 | 5d | 3d |  | 12h | 0% | On Time | Steel Structure | 0,00% | 0% | 0% | 0,00% | 60% | CHS001-000-ST4-DR-003 |
| 476 | 1.6.7.4.4 | Steel Structure - Piperack- - Plan e Details - Part 01 | 5d | 2026-09-09 | 2026-09-15 | 491 | 2026-09-09 | 2026-09-15 | 5d | 3d |  | 12h | 0% | On Time | Steel Structure | 0,00% | 0% | 0% | 0,00% | 60% | CHS001-000-ST4-DR-004 |
| 477 | 1.6.7.4.5 | Steel Structure - Piperack- - Plan e Details - Part 02 | 5d | 2026-09-09 | 2026-09-15 | 491 | 2026-09-09 | 2026-09-15 | 5d | 3d |  | 12h | 0% | On Time | Steel Structure | 0,00% | 0% | 0% | 0,00% | 60% | CHS001-000-ST4-DR-005 |
| 478 | 1.6.7.5 | **List** | 7d | 2026-09-09 | 2026-09-17 |  | 2026-09-09 | 2026-09-17 | 7d | 6d |  | 16h | 0% | On Time | Steel Structure | 0,00% | 0% | 0% | 0,00% | 60% |  |
| 479 | 1.6.7.5.1 | Steel Structure - Material takeoff | 7d | 2026-09-09 | 2026-09-17 | 491 | 2026-09-09 | 2026-09-17 | 7d | 6d |  | 16h | 0% | On Time | Steel Structure | 0,00% | 0% | 0% | 0,00% | 60% | CHS001-000-ST8-LI-001 |
| 480 | 1.6.8 | **Infrastrcutre** | 32d | 2026-08-12 | 2026-09-24 |  | 2026-08-12 | 2026-09-24 | 32d | 1d |  | 100h | 0% | On Time | Infrastructure | 0,00% | 0% | 0% | 0,00% | 60% |  |
| 481 | 1.6.8.1 | **Infrastrcutre Design Citeria** | 3d | 2026-08-12 | 2026-08-14 |  | 2026-08-12 | 2026-08-14 | 3d | 30d |  | 12h | 0% | On Time | Infrastructure | 0,00% | 0% | 0% | 0,00% | 60% |  |
| 482 | 1.6.8.1.1 | Infrastrcutre Design Citeria | 3d | 2026-08-12 | 2026-08-14 | 28 | 2026-08-12 | 2026-08-14 | 3d | 30d |  | 12h | 0% | On Time | Infrastructure | 0,00% | 0% | 0% | 0,00% | 60% | CHS001-000-IH1-TS-001 |
| 483 | 1.6.8.2 | **Descriptive Memorandum** | 5d | 2026-09-18 | 2026-09-24 |  | 2026-09-18 | 2026-09-24 | 5d | 1d |  | 24h | 0% | On Time | Infrastructure | 0,00% | 0% | 0% | 0,00% | 60% |  |
| 484 | 1.6.8.2.1 | Descriptive Memorandun | 5d | 2026-09-18 | 2026-09-24 | 485 | 2026-09-18 | 2026-09-24 | 5d | 1d |  | 24h | 0% | On Time | Infrastructure | 0,00% | 0% | 0% | 0,00% | 60% | CHS001-000-IH1-DM-001 |

| ID | WBS | Task | Duration | Start | Finish | Predecessors | Baseline start | Baseline finish | Baseline duration | Total slack | Free slack | Work | Text3 | Status1 | Disciplina | %Desvio Padrão | % Previsto Reprog. | Text12 | Text15 | Fase | NA DOCUMENT NUMBER |
| --- | --- | --- | --- | --- | --- | --- | --- | --- | --- | --- | --- | --- | --- | --- | --- | --- | --- | --- | --- | --- | --- |
| 485 | 1.6.8.3 | **Infrastrcutre Plans** | 7d | 2026-09-09 | 2026-09-17 |  | 2026-09-09 | 2026-09-17 | 7d | 1d | 0d | 48h | 0% | On Time | Infrastructure | 0,00% | 0% | 0% | 0,00% | 60% |  |
| 486 | 1.6.8.3.1 | Storn Water Plan | 7d | 2026-09-09 | 2026-09-17 | 491 | 2026-09-09 | 2026-09-17 | 7d | 1d |  | 16h | 0% | On Time | Infrastructure | 0,00% | 0% | 0% | 0,00% | 60% | CHS001-000-IH4-DR-001 |
| 487 | 1.6.8.3.2 | Effluent Discharge Plan | 7d | 2026-09-09 | 2026-09-17 | 491 | 2026-09-09 | 2026-09-17 | 7d | 1d |  | 16h | 0% | On Time | Infrastructure | 0,00% | 0% | 0% | 0,00% | 60% | CHS001-000-IH4-DR-002 |
| 488 | 1.6.8.3.3 | Undergound Plan | 7d | 2026-09-09 | 2026-09-17 | 491 | 2026-09-09 | 2026-09-17 | 7d | 1d |  | 16h | 0% | On Time | Infrastructure | 0,00% | 0% | 0% | 0,00% | 60% | CHS001-000-IH4-DR-003 |
| 489 | 1.6.8.4 | **List** | 7d | 2026-09-09 | 2026-09-17 |  | 2026-09-09 | 2026-09-17 | 7d | 6d |  | 16h | 0% | On Time | Infrastructure | 0,00% | 0% | 0% | 0,00% | 60% |  |
| 490 | 1.6.8.4.1 | Infrastrcutre - Material takeoff | 7d | 2026-09-09 | 2026-09-17 | 491 | 2026-09-09 | 2026-09-17 | 7d | 6d |  | 16h | 0% | On Time | Infrastructure | 0,00% | 0% | 0% | 0,00% | 60% | CHS001-000-IH8-LI-001 |
| 491 | 1.6.9 | **3D Model** | 20d | 2026-08-12 | 2026-09-08 |  | 2026-08-12 | 2026-09-08 | 20d | 0d |  | 1596h | 0% | On Time | 3D | 0,00% | 0% | 0% | 0,00% | 60% |  |
| 492 | 1.6.9.1 | Infrastructure | 20d | 2026-08-12 | 2026-09-08 | 28 | 2026-08-12 | 2026-09-08 | 20d | 0d |  | 32h | 0% | On Time | 3D | 0,00% | 0% | 0% | 0,00% | 60% | CHS001-000-IHM-3D-001 |
| 493 | 1.6.9.2 | Civil | 20d | 2026-08-12 | 2026-09-08 | 28 | 2026-08-12 | 2026-09-08 | 20d | 0d |  | 24h | 0% | On Time | 3D | 0,00% | 0% | 0% | 0,00% | 60% | CHS001-000-CVM-3D-001 |
| 494 | 1.6.9.3 | Steel Structure | 20d | 2026-08-12 | 2026-09-08 | 28 | 2026-08-12 | 2026-09-08 | 20d | 0d |  | 40h | 0% | On Time | 3D | 0,00% | 0% | 0% | 0,00% | 60% | CHS001-000-STM-3D-001 |
| 495 | 1.6.9.4 | Mechanical | 20d | 2026-08-12 | 2026-09-08 | 28 | 2026-08-12 | 2026-09-08 | 20d | 0d |  | 100h | 0% | On Time | 3D | 0,00% | 0% | 0% | 0,00% | 60% | CHS001-000-MEM-3D-001 |
| 496 | 1.6.9.5 | Piping | 20d | 2026-08-12 | 2026-09-08 | 28 | 2026-08-12 | 2026-09-08 | 20d | 0d |  | 1000h | 0% | On Time | 3D | 0,00% | 0% | 0% | 0,00% | 60% | CHS001-000-PIM-3D-001 |
| 497 | 1.6.9.6 | Electric | 20d | 2026-08-12 | 2026-09-08 | 28 | 2026-08-12 | 2026-09-08 | 20d | 0d |  | 200h | 0% | On Time | 3D | 0,00% | 0% | 0% | 0,00% | 60% | CHS001-000-ELM-3D-001 |
| 498 | 1.6.9.7 | Instrumentation | 20d | 2026-08-12 | 2026-09-08 | 28 | 2026-08-12 | 2026-09-08 | 20d | 0d |  | 200h | 0% | On Time | 3D | 0,00% | 0% | 0% | 0,00% | 60% | CHS001-000-IAM-3D-001 |
| 499 | 1.7 | **Engineering - 90%** | 16d | 2026-09-28 | 2026-10-19 |  | 2026-09-28 | 2026-10-19 | 16d | 0d |  | 1204h | 0% | On Time |  | 0,00% | 0% | 0% | 0,00% | 90& |  |
| 500 | 1.7.1 | **Process** | 7d | 2026-09-28 | 2026-10-06 |  | 2026-09-28 | 2026-10-06 | 7d | 4d |  | 300h | 0% | On Time | Process | 0,00% | 0% | 0% | 0,00% | 90& |  |
| 501 | 1.7.1.1 | **Process Instrumentation Diagram PI&Ds** | 7d | 2026-09-28 | 2026-10-06 |  | 2026-09-28 | 2026-10-06 | 7d | 4d | 0d | 240h | 0% | On Time | Process | 0,00% | 0% | 0% | 0,00% | 90& |  |
| 502 | 1.7.1.1.1 | Process Instrumentation Diagram - 01 | 7d | 2026-09-28 | 2026-10-06 | 198 | 2026-09-28 | 2026-10-06 | 7d | 4d |  | 4h | 0% | On Time | Process | 0,00% | 0% | 0% | 0,00% | 90& | CHS001-000-PC3-DR-001 |
| 503 | 1.7.1.1.2 | Process Instrumentation Diagram - 02 | 7d | 2026-09-28 | 2026-10-06 | 198 | 2026-09-28 | 2026-10-06 | 7d | 4d |  | 4h | 0% | On Time | Process | 0,00% | 0% | 0% | 0,00% | 90& | CHS001-000-PC3-DR-002 |
| 504 | 1.7.1.1.3 | Process Instrumentation Diagram - 03 | 7d | 2026-09-28 | 2026-10-06 | 198 | 2026-09-28 | 2026-10-06 | 7d | 4d |  | 4h | 0% | On Time | Process | 0,00% | 0% | 0% | 0,00% | 90& | CHS001-000-PC3-DR-003 |
| 505 | 1.7.1.1.4 | Process Instrumentation Diagram - 04 | 7d | 2026-09-28 | 2026-10-06 | 198 | 2026-09-28 | 2026-10-06 | 7d | 4d |  | 4h | 0% | On Time | Process | 0,00% | 0% | 0% | 0,00% | 90& | CHS001-000-PC3-DR-004 |
| 506 | 1.7.1.1.5 | Process Instrumentation Diagram - 05 | 7d | 2026-09-28 | 2026-10-06 | 198 | 2026-09-28 | 2026-10-06 | 7d | 4d |  | 4h | 0% | On Time | Process | 0,00% | 0% | 0% | 0,00% | 90& | CHS001-000-PC3-DR-005 |
| 507 | 1.7.1.1.6 | Process Instrumentation Diagram - 06 | 7d | 2026-09-28 | 2026-10-06 | 198 | 2026-09-28 | 2026-10-06 | 7d | 4d |  | 4h | 0% | On Time | Process | 0,00% | 0% | 0% | 0,00% | 90& | CHS001-000-PC3-DR-006 |
| 508 | 1.7.1.1.7 | Process Instrumentation Diagram - 07 | 7d | 2026-09-28 | 2026-10-06 | 198 | 2026-09-28 | 2026-10-06 | 7d | 4d |  | 4h | 0% | On Time | Process | 0,00% | 0% | 0% | 0,00% | 90& | CHS001-000-PC3-DR-007 |
| 509 | 1.7.1.1.8 | Process Instrumentation Diagram - 08 | 7d | 2026-09-28 | 2026-10-06 | 198 | 2026-09-28 | 2026-10-06 | 7d | 4d |  | 4h | 0% | On Time | Process | 0,00% | 0% | 0% | 0,00% | 90& | CHS001-000-PC3-DR-008 |
| 510 | 1.7.1.1.9 | Process Instrumentation Diagram - 09 | 7d | 2026-09-28 | 2026-10-06 | 198 | 2026-09-28 | 2026-10-06 | 7d | 4d |  | 4h | 0% | On Time | Process | 0,00% | 0% | 0% | 0,00% | 90& | CHS001-000-PC3-DR-009 |
| 511 | 1.7.1.1.10 | Process Instrumentation Diagram - 10 | 7d | 2026-09-28 | 2026-10-06 | 198 | 2026-09-28 | 2026-10-06 | 7d | 4d |  | 4h | 0% | On Time | Process | 0,00% | 0% | 0% | 0,00% | 90& | CHS001-000-PC3-DR-010 |
| 512 | 1.7.1.1.11 | Process Instrumentation Diagram - 11 | 7d | 2026-09-28 | 2026-10-06 | 198 | 2026-09-28 | 2026-10-06 | 7d | 4d |  | 4h | 0% | On Time | Process | 0,00% | 0% | 0% | 0,00% | 90& | CHS001-000-PC3-DR-011 |
| 513 | 1.7.1.1.12 | Process Instrumentation Diagram - 12 | 7d | 2026-09-28 | 2026-10-06 | 198 | 2026-09-28 | 2026-10-06 | 7d | 4d |  | 4h | 0% | On Time | Process | 0,00% | 0% | 0% | 0,00% | 90& | CHS001-000-PC3-DR-012 |
| 514 | 1.7.1.1.13 | Process Instrumentation Diagram - 13 | 7d | 2026-09-28 | 2026-10-06 | 198 | 2026-09-28 | 2026-10-06 | 7d | 4d |  | 4h | 0% | On Time | Process | 0,00% | 0% | 0% | 0,00% | 90& | CHS001-000-PC3-DR-013 |
| 515 | 1.7.1.1.14 | Process Instrumentation Diagram - 14 | 7d | 2026-09-28 | 2026-10-06 | 198 | 2026-09-28 | 2026-10-06 | 7d | 4d |  | 4h | 0% | On Time | Process | 0,00% | 0% | 0% | 0,00% | 90& | CHS001-000-PC3-DR-014 |
| 516 | 1.7.1.1.15 | Process Instrumentation Diagram - 15 | 7d | 2026-09-28 | 2026-10-06 | 198 | 2026-09-28 | 2026-10-06 | 7d | 4d |  | 4h | 0% | On Time | Process | 0,00% | 0% | 0% | 0,00% | 90& | CHS001-000-PC3-DR-015 |
| 517 | 1.7.1.1.16 | Process Instrumentation Diagram - 16 | 7d | 2026-09-28 | 2026-10-06 | 198 | 2026-09-28 | 2026-10-06 | 7d | 4d |  | 4h | 0% | On Time | Process | 0,00% | 0% | 0% | 0,00% | 90& | CHS001-000-PC3-DR-016 |
| 518 | 1.7.1.1.17 | Process Instrumentation Diagram - 17 | 7d | 2026-09-28 | 2026-10-06 | 198 | 2026-09-28 | 2026-10-06 | 7d | 4d |  | 4h | 0% | On Time | Process | 0,00% | 0% | 0% | 0,00% | 90& | CHS001-000-PC3-DR-017 |
| 519 | 1.7.1.1.18 | Process Instrumentation Diagram - 18 | 7d | 2026-09-28 | 2026-10-06 | 198 | 2026-09-28 | 2026-10-06 | 7d | 4d |  | 4h | 0% | On Time | Process | 0,00% | 0% | 0% | 0,00% | 90& | CHS001-000-PC3-DR-018 |
| 520 | 1.7.1.1.19 | Process Instrumentation Diagram - 19 | 7d | 2026-09-28 | 2026-10-06 | 198 | 2026-09-28 | 2026-10-06 | 7d | 4d |  | 4h | 0% | On Time | Process | 0,00% | 0% | 0% | 0,00% | 90& | CHS001-000-PC3-DR-019 |
| 521 | 1.7.1.1.20 | Process Instrumentation Diagram - 20 | 7d | 2026-09-28 | 2026-10-06 | 198 | 2026-09-28 | 2026-10-06 | 7d | 4d |  | 4h | 0% | On Time | Process | 0,00% | 0% | 0% | 0,00% | 90& | CHS001-000-PC3-DR-020 |
| 522 | 1.7.1.1.21 | Process Instrumentation Diagram - 21 | 7d | 2026-09-28 | 2026-10-06 | 198 | 2026-09-28 | 2026-10-06 | 7d | 4d |  | 4h | 0% | On Time | Process | 0,00% | 0% | 0% | 0,00% | 90& | CHS001-000-PC3-DR-021 |
| 523 | 1.7.1.1.22 | Process Instrumentation Diagram - 22 | 7d | 2026-09-28 | 2026-10-06 | 198 | 2026-09-28 | 2026-10-06 | 7d | 4d |  | 4h | 0% | On Time | Process | 0,00% | 0% | 0% | 0,00% | 90& | CHS001-000-PC3-DR-022 |
| 524 | 1.7.1.1.23 | Process Instrumentation Diagram - 23 | 7d | 2026-09-28 | 2026-10-06 | 198 | 2026-09-28 | 2026-10-06 | 7d | 4d |  | 4h | 0% | On Time | Process | 0,00% | 0% | 0% | 0,00% | 90& | CHS001-000-PC3-DR-023 |
| 525 | 1.7.1.1.24 | Process Instrumentation Diagram - 24 | 7d | 2026-09-28 | 2026-10-06 | 198 | 2026-09-28 | 2026-10-06 | 7d | 4d |  | 4h | 0% | On Time | Process | 0,00% | 0% | 0% | 0,00% | 90& | CHS001-000-PC3-DR-024 |
| 526 | 1.7.1.1.25 | Process Instrumentation Diagram - 25 | 7d | 2026-09-28 | 2026-10-06 | 198 | 2026-09-28 | 2026-10-06 | 7d | 4d |  | 4h | 0% | On Time | Process | 0,00% | 0% | 0% | 0,00% | 90& | CHS001-000-PC3-DR-025 |
| 527 | 1.7.1.1.26 | Process Instrumentation Diagram - 26 | 7d | 2026-09-28 | 2026-10-06 | 198 | 2026-09-28 | 2026-10-06 | 7d | 4d |  | 4h | 0% | On Time | Process | 0,00% | 0% | 0% | 0,00% | 90& | CHS001-000-PC3-DR-026 |
| 528 | 1.7.1.1.27 | Process Instrumentation Diagram - 27 | 7d | 2026-09-28 | 2026-10-06 | 198 | 2026-09-28 | 2026-10-06 | 7d | 4d |  | 4h | 0% | On Time | Process | 0,00% | 0% | 0% | 0,00% | 90& | CHS001-000-PC3-DR-027 |
| 529 | 1.7.1.1.28 | Process Instrumentation Diagram - 28 | 7d | 2026-09-28 | 2026-10-06 | 198 | 2026-09-28 | 2026-10-06 | 7d | 4d |  | 4h | 0% | On Time | Process | 0,00% | 0% | 0% | 0,00% | 90& | CHS001-000-PC3-DR-028 |
| 530 | 1.7.1.1.29 | Process Instrumentation Diagram - 29 | 7d | 2026-09-28 | 2026-10-06 | 198 | 2026-09-28 | 2026-10-06 | 7d | 4d |  | 4h | 0% | On Time | Process | 0,00% | 0% | 0% | 0,00% | 90& | CHS001-000-PC3-DR-029 |
| 531 | 1.7.1.1.30 | Process Instrumentation Diagram - 30 | 7d | 2026-09-28 | 2026-10-06 | 198 | 2026-09-28 | 2026-10-06 | 7d | 4d |  | 4h | 0% | On Time | Process | 0,00% | 0% | 0% | 0,00% | 90& | CHS001-000-PC3-DR-030 |
| 532 | 1.7.1.1.31 | Process Instrumentation Diagram - 31 | 7d | 2026-09-28 | 2026-10-06 | 198 | 2026-09-28 | 2026-10-06 | 7d | 4d |  | 4h | 0% | On Time | Process | 0,00% | 0% | 0% | 0,00% | 90& | CHS001-000-PC3-DR-031 |
| 533 | 1.7.1.1.32 | Process Instrumentation Diagram - 32 | 7d | 2026-09-28 | 2026-10-06 | 198 | 2026-09-28 | 2026-10-06 | 7d | 4d |  | 4h | 0% | On Time | Process | 0,00% | 0% | 0% | 0,00% | 90& | CHS001-000-PC3-DR-032 |
| 534 | 1.7.1.1.33 | Process Instrumentation Diagram - 33 | 7d | 2026-09-28 | 2026-10-06 | 198 | 2026-09-28 | 2026-10-06 | 7d | 4d |  | 4h | 0% | On Time | Process | 0,00% | 0% | 0% | 0,00% | 90& | CHS001-000-PC3-DR-033 |
| 535 | 1.7.1.1.34 | Process Instrumentation Diagram - 34 | 7d | 2026-09-28 | 2026-10-06 | 198 | 2026-09-28 | 2026-10-06 | 7d | 4d |  | 4h | 0% | On Time | Process | 0,00% | 0% | 0% | 0,00% | 90& | CHS001-000-PC3-DR-034 |
| 536 | 1.7.1.1.35 | Process Instrumentation Diagram - 35 | 7d | 2026-09-28 | 2026-10-06 | 198 | 2026-09-28 | 2026-10-06 | 7d | 4d |  | 4h | 0% | On Time | Process | 0,00% | 0% | 0% | 0,00% | 90& | CHS001-000-PC3-DR-035 |
| 537 | 1.7.1.1.36 | Process Instrumentation Diagram - 36 | 7d | 2026-09-28 | 2026-10-06 | 198 | 2026-09-28 | 2026-10-06 | 7d | 4d |  | 4h | 0% | On Time | Process | 0,00% | 0% | 0% | 0,00% | 90& | CHS001-000-PC3-DR-036 |
| 538 | 1.7.1.1.37 | Process Instrumentation Diagram - 37 | 7d | 2026-09-28 | 2026-10-06 | 198 | 2026-09-28 | 2026-10-06 | 7d | 4d |  | 4h | 0% | On Time | Process | 0,00% | 0% | 0% | 0,00% | 90& | CHS001-000-PC3-DR-037 |
| 539 | 1.7.1.1.38 | Process Instrumentation Diagram - 38 | 7d | 2026-09-28 | 2026-10-06 | 198 | 2026-09-28 | 2026-10-06 | 7d | 4d |  | 4h | 0% | On Time | Process | 0,00% | 0% | 0% | 0,00% | 90& | CHS001-000-PC3-DR-038 |
| 540 | 1.7.1.1.39 | Process Instrumentation Diagram - 39 | 7d | 2026-09-28 | 2026-10-06 | 198 | 2026-09-28 | 2026-10-06 | 7d | 4d |  | 4h | 0% | On Time | Process | 0,00% | 0% | 0% | 0,00% | 90& | CHS001-000-PC3-DR-039 |
| 541 | 1.7.1.1.40 | Process Instrumentation Diagram - 40 | 7d | 2026-09-28 | 2026-10-06 | 198 | 2026-09-28 | 2026-10-06 | 7d | 4d |  | 4h | 0% | On Time | Process | 0,00% | 0% | 0% | 0,00% | 90& | CHS001-000-PC3-DR-040 |
| 542 | 1.7.1.1.41 | Process Instrumentation Diagram - 41 | 7d | 2026-09-28 | 2026-10-06 | 198 | 2026-09-28 | 2026-10-06 | 7d | 4d |  | 4h | 0% | On Time | Process | 0,00% | 0% | 0% | 0,00% | 90& | CHS001-000-PC3-DR-041 |
| 543 | 1.7.1.1.42 | Process Instrumentation Diagram - 42 | 7d | 2026-09-28 | 2026-10-06 | 198 | 2026-09-28 | 2026-10-06 | 7d | 4d |  | 4h | 0% | On Time | Process | 0,00% | 0% | 0% | 0,00% | 90& | CHS001-000-PC3-DR-042 |
| 544 | 1.7.1.1.43 | Process Instrumentation Diagram - 43 | 7d | 2026-09-28 | 2026-10-06 | 198 | 2026-09-28 | 2026-10-06 | 7d | 4d |  | 4h | 0% | On Time | Process | 0,00% | 0% | 0% | 0,00% | 90& | CHS001-000-PC3-DR-043 |
| 545 | 1.7.1.1.44 | Process Instrumentation Diagram - 44 | 7d | 2026-09-28 | 2026-10-06 | 198 | 2026-09-28 | 2026-10-06 | 7d | 4d |  | 4h | 0% | On Time | Process | 0,00% | 0% | 0% | 0,00% | 90& | CHS001-000-PC3-DR-044 |
| 546 | 1.7.1.1.45 | Process Instrumentation Diagram - 45 | 7d | 2026-09-28 | 2026-10-06 | 198 | 2026-09-28 | 2026-10-06 | 7d | 4d |  | 4h | 0% | On Time | Process | 0,00% | 0% | 0% | 0,00% | 90& | CHS001-000-PC3-DR-045 |
| 547 | 1.7.1.1.46 | Process Instrumentation Diagram - 46 | 7d | 2026-09-28 | 2026-10-06 | 198 | 2026-09-28 | 2026-10-06 | 7d | 4d |  | 4h | 0% | On Time | Process | 0,00% | 0% | 0% | 0,00% | 90& | CHS001-000-PC3-DR-046 |
| 548 | 1.7.1.1.47 | Process Instrumentation Diagram - 47 | 7d | 2026-09-28 | 2026-10-06 | 198 | 2026-09-28 | 2026-10-06 | 7d | 4d |  | 4h | 0% | On Time | Process | 0,00% | 0% | 0% | 0,00% | 90& | CHS001-000-PC3-DR-047 |
| 549 | 1.7.1.1.48 | Process Instrumentation Diagram - 48 | 7d | 2026-09-28 | 2026-10-06 | 198 | 2026-09-28 | 2026-10-06 | 7d | 4d |  | 4h | 0% | On Time | Process | 0,00% | 0% | 0% | 0,00% | 90& | CHS001-000-PC3-DR-048 |
| 550 | 1.7.1.1.49 | Process Instrumentation Diagram - 49 | 7d | 2026-09-28 | 2026-10-06 | 198 | 2026-09-28 | 2026-10-06 | 7d | 4d |  | 4h | 0% | On Time | Process | 0,00% | 0% | 0% | 0,00% | 90& | CHS001-000-PC3-DR-049 |
| 551 | 1.7.1.1.50 | Process Instrumentation Diagram - 50 | 7d | 2026-09-28 | 2026-10-06 | 198 | 2026-09-28 | 2026-10-06 | 7d | 4d |  | 4h | 0% | On Time | Process | 0,00% | 0% | 0% | 0,00% | 90& | CHS001-000-PC3-DR-050 |
| 552 | 1.7.1.1.51 | Process Instrumentation Diagram - 51 | 7d | 2026-09-28 | 2026-10-06 | 198 | 2026-09-28 | 2026-10-06 | 7d | 4d |  | 4h | 0% | On Time | Process | 0,00% | 0% | 0% | 0,00% | 90& | CHS001-000-PC3-DR-051 |
| 553 | 1.7.1.1.52 | Process Instrumentation Diagram - 52 | 7d | 2026-09-28 | 2026-10-06 | 198 | 2026-09-28 | 2026-10-06 | 7d | 4d |  | 4h | 0% | On Time | Process | 0,00% | 0% | 0% | 0,00% | 90& | CHS001-000-PC3-DR-052 |
| 554 | 1.7.1.1.53 | Process Instrumentation Diagram - 53 | 7d | 2026-09-28 | 2026-10-06 | 198 | 2026-09-28 | 2026-10-06 | 7d | 4d |  | 4h | 0% | On Time | Process | 0,00% | 0% | 0% | 0,00% | 90& | CHS001-000-PC3-DR-053 |

| ID | WBS | Task | Duration | Start | Finish | Predecessors | Baseline start | Baseline finish | Baseline duration | Total slack | Work | NA DOCUMENT NUMBER | Text3 | Status1 | Disciplina | %Desvio Padrão | % Previsto Reprog. | Text12 | Text15 | Fase |
| --- | --- | --- | --- | --- | --- | --- | --- | --- | --- | --- | --- | --- | --- | --- | --- | --- | --- | --- | --- | --- |
| 555 | 1.7.1.1.54 | Process Instrumentation Diagram - 54 | 7d | 2026-09-28 | 2026-10-06 | 198 | 2026-09-28 | 2026-10-06 | 7d | 4d | 4h | CHS001-000-PC3-DR-054 | 0% | On Time | Process | 0,00% | 0% | 0% | 0,00% | 90& |
| 556 | 1.7.1.1.55 | Process Instrumentation Diagram - 55 | 7d | 2026-09-28 | 2026-10-06 | 198 | 2026-09-28 | 2026-10-06 | 7d | 4d | 4h | CHS001-000-PC3-DR-055 | 0% | On Time | Process | 0,00% | 0% | 0% | 0,00% | 90& |
| 557 | 1.7.1.1.56 | Process Instrumentation Diagram - 56 | 7d | 2026-09-28 | 2026-10-06 | 198 | 2026-09-28 | 2026-10-06 | 7d | 4d | 4h | CHS001-000-PC3-DR-056 | 0% | On Time | Process | 0,00% | 0% | 0% | 0,00% | 90& |
| 558 | 1.7.1.1.57 | Process Instrumentation Diagram - 57 | 7d | 2026-09-28 | 2026-10-06 | 198 | 2026-09-28 | 2026-10-06 | 7d | 4d | 4h | CHS001-000-PC3-DR-057 | 0% | On Time | Process | 0,00% | 0% | 0% | 0,00% | 90& |
| 559 | 1.7.1.1.58 | Process Instrumentation Diagram - 58 | 7d | 2026-09-28 | 2026-10-06 | 198 | 2026-09-28 | 2026-10-06 | 7d | 4d | 4h | CHS001-000-PC3-DR-058 | 0% | On Time | Process | 0,00% | 0% | 0% | 0,00% | 90& |
| 560 | 1.7.1.1.59 | Process Instrumentation Diagram - 59 | 7d | 2026-09-28 | 2026-10-06 | 198 | 2026-09-28 | 2026-10-06 | 7d | 4d | 4h | CHS001-000-PC3-DR-059 | 0% | On Time | Process | 0,00% | 0% | 0% | 0,00% | 90& |
| 561 | 1.7.1.1.60 | Process Instrumentation Diagram - 60 | 7d | 2026-09-28 | 2026-10-06 | 198 | 2026-09-28 | 2026-10-06 | 7d | 4d | 4h | CHS001-000-PC3-DR-060 | 0% | On Time | Process | 0,00% | 0% | 0% | 0,00% | 90& |
| 562 | 1.7.1.2 | **Process Data Sheet** | 7d | 2026-09-28 | 2026-10-06 |  | 2026-09-28 | 2026-10-06 | 7d | 9d | 4h |  | 0% | On Time | Process | 0,00% | 0% | 0% | 0,00% | 90& |
| 563 | 1.7.1.2.1 | Process Data Sheet - Area Classification | 7d | 2026-09-28 | 2026-10-06 | 198 | 2026-09-28 | 2026-10-06 | 7d | 9d | 4h | CHS001-000-PC7-DS-001 | 0% | On Time | Process | 0,00% | 0% | 0% | 0,00% | 90& |
| 564 | 1.7.1.3 | **Lists** | 7d | 2026-09-28 | 2026-10-06 |  | 2026-09-28 | 2026-10-06 | 7d | 9d | 56h |  | 0% | On Time | Process | 0,00% | 0% | 0% | 0,00% | 90& |
| 565 | 1.7.1.3.1 | Line List | 7d | 2026-09-28 | 2026-10-06 | 198 | 2026-09-28 | 2026-10-06 | 7d | 9d | 16h | CHS001-000-PC4-LI-001 | 0% | On Time | Process | 0,00% | 0% | 0% | 0,00% | 90& |
| 566 | 1.7.1.3.2 | Tie In List | 7d | 2026-09-28 | 2026-10-06 | 198 | 2026-09-28 | 2026-10-06 | 7d | 9d | 16h | CHS001-000-PC4-LI-002 | 0% | On Time | Process | 0,00% | 0% | 0% | 0,00% | 90& |
| 567 | 1.7.1.3.3 | Set Point And Alarm List | 7d | 2026-09-28 | 2026-10-06 | 198 | 2026-09-28 | 2026-10-06 | 7d | 9d | 24h | CHS001-000-PC4-LI-003 | 0% | On Time | Process | 0,00% | 0% | 0% | 0,00% | 90& |
| 568 | 1.7.2 | **Instrumentation** | 15d | 2026-09-28 | 2026-10-16 |  | 2026-09-28 | 2026-10-16 | 15d | 1d | 176h |  | 0% | On Time | Instrumentation | 0,00% | 0% | 0% | 0,00% | 90& |
| 569 | 1.7.2.1 | **Descpritive Memorandum** | 3d | 2026-10-14 | 2026-10-16 |  | 2026-10-14 | 2026-10-16 | 3d | 1d | 8h |  | 0% | On Time | Instrumentation | 0,00% | 0% | 0% | 0,00% | 90& |
| 570 | 1.7.2.1.1 | Descpritive Memorandum | 3d | 2026-10-14 | 2026-10-16 | 584 | 2026-10-14 | 2026-10-16 | 3d | 1d | 8h | CHS001-000-IA1-DM-001 | 0% | On Time | Instrumentation | 0,00% | 0% | 0% | 0,00% | 90& |
| 571 | 1.7.2.2 | **Lists** | 7d | 2026-10-05 | 2026-10-13 |  | 2026-10-05 | 2026-10-13 | 7d | 4d | 80h |  | 0% | On Time | Instrumentation | 0,00% | 0% | 0% | 0,00% | 90& |
| 572 | 1.7.2.2.1 | Instrument List | 5d | 2026-10-07 | 2026-10-13 | 501 | 2026-10-07 | 2026-10-13 | 5d | 4d | 8h | CHS001-000-IA2-LI-001 | 0% | On Time | Instrumentation | 0,00% | 0% | 0% | 0,00% | 90& |
| 573 | 1.7.2.2.2 | IO List | 5d | 2026-10-07 | 2026-10-13 | 501 | 2026-10-07 | 2026-10-13 | 5d | 4d | 8h | CHS001-000-IA2-LI-002 | 0% | On Time | Instrumentation | 0,00% | 0% | 0% | 0,00% | 90& |
| 574 | 1.7.2.2.3 | Communication List | 5d | 2026-10-07 | 2026-10-13 | 501 | 2026-10-07 | 2026-10-13 | 5d | 4d | 8h | CHS001-000-IA2-LI-003 | 0% | On Time | Instrumentation | 0,00% | 0% | 0% | 0,00% | 90& |
| 575 | 1.7.2.2.4 | Equipment List | 5d | 2026-10-07 | 2026-10-13 | 501 | 2026-10-07 | 2026-10-13 | 5d | 4d | 8h | CHS001-000-IA2-LI-004 | 0% | On Time | Instrumentation | 0,00% | 0% | 0% | 0,00% | 90& |
| 576 | 1.7.2.2.5 | SIS Function List | 5d | 2026-10-07 | 2026-10-13 | 501 | 2026-10-07 | 2026-10-13 | 5d | 4d | 8h | CHS001-000-IA2-LI-005 | 0% | On Time | Instrumentation | 0,00% | 0% | 0% | 0,00% | 90& |
| 577 | 1.7.2.2.6 | Setpoints and Alarms List | 5d | 2026-10-07 | 2026-10-13 | 501 | 2026-10-07 | 2026-10-13 | 5d | 4d | 8h | CHS001-000-IA2-LI-006 | 0% | On Time | Instrumentation | 0,00% | 0% | 0% | 0,00% | 90& |
| 578 | 1.7.2.2.7 | Network Segment List | 5d | 2026-10-07 | 2026-10-13 | 501 | 2026-10-07 | 2026-10-13 | 5d | 4d | 8h | CHS001-000-IA2-LI-007 | 0% | On Time | Instrumentation | 0,00% | 0% | 0% | 0,00% | 90& |
| 579 | 1.7.2.2.8 | Pneumatic Consumers List | 5d | 2026-10-07 | 2026-10-13 | 501 | 2026-10-07 | 2026-10-13 | 5d | 4d | 8h | CHS001-000-IA2-LI-008 | 0% | On Time | Instrumentation | 0,00% | 0% | 0% | 0,00% | 90& |
| 580 | 1.7.2.2.9 | Electrical Load List | 5d | 2026-10-07 | 2026-10-13 | 501 | 2026-10-07 | 2026-10-13 | 5d | 4d | 8h | CHS001-000-IA2-LI-009 | 0% | On Time | Instrumentation | 0,00% | 0% | 0% | 0,00% | 90& |
| 581 | 1.7.2.2.10 | Instrument and acessories Material Takeoff | 7d | 2026-10-05 | 2026-10-13 | 673 | 2026-10-05 | 2026-10-13 | 7d | 4d | 8h | CHS001-000-IA8-LI-001 | 0% | On Time | Instrumentation | 0,00% | 0% | 0% | 0,00% | 90& |

| ID | WBS | Task | Duration | Start | Finish | Predecessors | Baseline start | Baseline finish | Baseline duration | Total slack | Free slack | Work | Text3 | Status1 | Disciplina | %Desvio Padrão | % Previsto Reprog. | Text12 | Text15 | Fase | NA DOCUMENT NUMBER |
| --- | --- | --- | --- | --- | --- | --- | --- | --- | --- | --- | --- | --- | --- | --- | --- | --- | --- | --- | --- | --- | --- |
| 582 | 1.7.2.3 | **Network Architecture** | 6d | 2026-09-28 | 2026-10-05 |  | 2026-09-28 | 2026-10-05 | 6d | 10d |  | 8h | 0% | On Time | Instrumentation | 0,00% | 0% | 0% | 0,00% | 90& |  |
| 583 | 1.7.2.3.1 | Network Architecture | 6d | 2026-09-28 | 2026-10-05 | 198 | 2026-09-28 | 2026-10-05 | 6d | 10d |  | 8h | 0% | On Time | Instrumentation | 0,00% | 0% | 0% | 0,00% | 90& | CHS001-000-IA3-DR-001 |
| 584 | 1.7.2.4 | **Instrumentation Plans** | 7d | 2026-10-05 | 2026-10-13 |  | 2026-10-05 | 2026-10-13 | 7d | 1d | 0d | 72h | 0% | On Time | Instrumentation | 0,00% | 0% | 0% | 0,00% | 90& |  |
| 585 | 1.7.2.4.1 | Junction box Location Plan | 7d | 2026-10-05 | 2026-10-13 | 673 | 2026-10-05 | 2026-10-13 | 7d | 1d |  | 12h | 0% | On Time | Instrumentation | 0,00% | 0% | 0% | 0,00% | 90& | CHS001-000-IA3-DR-002 |
| 586 | 1.7.2.4.2 | Instrument Location Plan- Part 01 | 7d | 2026-10-05 | 2026-10-13 | 673 | 2026-10-05 | 2026-10-13 | 7d | 1d |  | 12h | 0% | On Time | Instrumentation | 0,00% | 0% | 0% | 0,00% | 90& | CHS001-000-IA3-DR-003 |
| 587 | 1.7.2.4.3 | Instrument Location Plan- Part 02 | 7d | 2026-10-05 | 2026-10-13 | 673 | 2026-10-05 | 2026-10-13 | 7d | 1d |  | 12h | 0% | On Time | Instrumentation | 0,00% | 0% | 0% | 0,00% | 90& | CHS001-000-IA3-DR-004 |
| 588 | 1.7.2.4.4 | Control / Network Routing Plan-Part 01 | 7d | 2026-10-05 | 2026-10-13 | 673 | 2026-10-05 | 2026-10-13 | 7d | 1d |  | 12h | 0% | On Time | Instrumentation | 0,00% | 0% | 0% | 0,00% | 90& | CHS001-000-IA3-DR-005 |
| 589 | 1.7.2.4.5 | Control / Network Routing Plan-Part 02 | 7d | 2026-10-05 | 2026-10-13 | 673 | 2026-10-05 | 2026-10-13 | 7d | 1d |  | 12h | 0% | On Time | Instrumentation | 0,00% | 0% | 0% | 0,00% | 90& | CHS001-000-IA3-DR-006 |
| 590 | 1.7.2.4.6 | Instrumenttion location Plan | 7d | 2026-10-05 | 2026-10-13 | 673 | 2026-10-05 | 2026-10-13 | 7d | 1d |  | 12h | 0% | On Time | Instrumentation | 0,00% | 0% | 0% | 0,00% | 90& | CHS001-000-IA3-DR-008 |
| 591 | 1.7.2.5 | **Typical Installation Details** | 7d | 2026-10-05 | 2026-10-13 |  | 2026-10-05 | 2026-10-13 | 7d | 4d |  | 8h | 0% | On Time | Instrumentation | 0,00% | 0% | 0% | 0,00% | 90& |  |
| 592 | 1.7.2.5.1 | Typical Installation Details | 7d | 2026-10-05 | 2026-10-13 | 673 | 2026-10-05 | 2026-10-13 | 7d | 4d |  | 8h | 0% | On Time | Instrumentation | 0,00% | 0% | 0% | 0,00% | 90& | CHS001-000-IA3-DR-007 |
| 593 | 1.7.3 | **Piping** | 10d | 2026-10-05 | 2026-10-16 |  | 2026-10-05 | 2026-10-16 | 10d | 1d |  | 128h | 0% | On Time | Piping | 0,00% | 0% | 0% | 0,00% | 90& |  |
| 594 | 1.7.3.1 | **Arrangement** | 3d | 2026-10-05 | 2026-10-07 |  | 2026-10-05 | 2026-10-07 | 3d | 8d |  | 8h | 0% | On Time | Piping | 0,00% | 0% | 0% | 0,00% | 90& |  |
| 595 | 1.7.3.1.1 | Equipment General Arrangement | 3d | 2026-10-05 | 2026-10-07 | 673 | 2026-10-05 | 2026-10-07 | 3d | 8d |  | 8h | 0% | On Time | Piping | 0,00% | 0% | 0% | 0,00% | 90& | CHS001-000-PI2-DR-001 |
| 596 | 1.7.3.2 | **Piping Plans** | 10d | 2026-10-05 | 2026-10-16 |  | 2026-10-05 | 2026-10-16 | 10d | 1d |  | 96h | 0% | On Time | Piping | 0,00% | 0% | 0% | 0,00% | 90& |  |
| 597 | 1.7.3.2.1 | Piping Plans - 01 | 10d | 2026-10-05 | 2026-10-16 | 673 | 2026-10-05 | 2026-10-16 | 10d | 1d |  | 8h | 0% | On Time | Piping | 0,00% | 0% | 0% | 0,00% | 90& | CHS001-000-PI3-DR-001 |
| 598 | 1.7.3.2.2 | Piping Plans - 02 | 10d | 2026-10-05 | 2026-10-16 | 673 | 2026-10-05 | 2026-10-16 | 10d | 1d |  | 8h | 0% | On Time | Piping | 0,00% | 0% | 0% | 0,00% | 90& | CHS001-000-PI3-DR-002 |
| 599 | 1.7.3.2.3 | Piping Plans- 03 | 10d | 2026-10-05 | 2026-10-16 | 673 | 2026-10-05 | 2026-10-16 | 10d | 1d |  | 8h | 0% | On Time | Piping | 0,00% | 0% | 0% | 0,00% | 90& | CHS001-000-PI3-DR-003 |
| 600 | 1.7.3.2.4 | Piping Plans- 04 | 10d | 2026-10-05 | 2026-10-16 | 673 | 2026-10-05 | 2026-10-16 | 10d | 1d |  | 8h | 0% | On Time | Piping | 0,00% | 0% | 0% | 0,00% | 90& | CHS001-000-PI3-DR-004 |
| 601 | 1.7.3.2.5 | Piping Plans- 05 | 10d | 2026-10-05 | 2026-10-16 | 673 | 2026-10-05 | 2026-10-16 | 10d | 1d |  | 8h | 0% | On Time | Piping | 0,00% | 0% | 0% | 0,00% | 90& | CHS001-000-PI3-DR-005 |
| 602 | 1.7.3.2.6 | Piping Plans- 06 | 10d | 2026-10-05 | 2026-10-16 | 673 | 2026-10-05 | 2026-10-16 | 10d | 1d |  | 8h | 0% | On Time | Piping | 0,00% | 0% | 0% | 0,00% | 90& | CHS001-000-PI3-DR-006 |
| 603 | 1.7.3.2.7 | Piping Plans- 07 | 10d | 2026-10-05 | 2026-10-16 | 673 | 2026-10-05 | 2026-10-16 | 10d | 1d |  | 8h | 0% | On Time | Piping | 0,00% | 0% | 0% | 0,00% | 90& | CHS001-000-PI3-DR-007 |
| 604 | 1.7.3.2.8 | Piping Plans- 08 | 10d | 2026-10-05 | 2026-10-16 | 673 | 2026-10-05 | 2026-10-16 | 10d | 1d |  | 8h | 0% | On Time | Piping | 0,00% | 0% | 0% | 0,00% | 90& | CHS001-000-PI3-DR-008 |
| 605 | 1.7.3.2.9 | Piping Plans- 09 | 10d | 2026-10-05 | 2026-10-16 | 673 | 2026-10-05 | 2026-10-16 | 10d | 1d |  | 8h | 0% | On Time | Piping | 0,00% | 0% | 0% | 0,00% | 90& | CHS001-000-PI3-DR-009 |
| 606 | 1.7.3.2.10 | Piping Plans- 10 | 10d | 2026-10-05 | 2026-10-16 | 673 | 2026-10-05 | 2026-10-16 | 10d | 1d |  | 8h | 0% | On Time | Piping | 0,00% | 0% | 0% | 0,00% | 90& | CHS001-000-PI3-DR-010 |
| 607 | 1.7.3.2.11 | Piping Plans- 11 | 10d | 2026-10-05 | 2026-10-16 | 673 | 2026-10-05 | 2026-10-16 | 10d | 1d |  | 8h | 0% | On Time | Piping | 0,00% | 0% | 0% | 0,00% | 90& | CHS001-000-PI3-DR-011 |
| 608 | 1.7.3.2.12 | Support Book | 10d | 2026-10-05 | 2026-10-16 | 673 | 2026-10-05 | 2026-10-16 | 10d | 1d |  | 8h | 0% | On Time | Piping | 0,00% | 0% | 0% | 0,00% | 90& | CHS001-000-PI3-DR-012 |

| ID | WBS | Task | Duration | Start | Finish | Predecessors | Baseline start | Baseline finish | Baseline duration | Total slack | Free slack | Work | Text3 | Status1 | Disciplina | %Desvio Padrão | % Previsto Reprog. | Text12 | Text15 | Fase | NA DOCUMENT NUMBER |
| --- | --- | --- | --- | --- | --- | --- | --- | --- | --- | --- | --- | --- | --- | --- | --- | --- | --- | --- | --- | --- | --- |
| 609 | 1.7.3.3 | **Lists** | 5d | 2026-10-08 | 2026-10-14 |  | 2026-10-08 | 2026-10-14 | 5d | 3d |  | 24h | 0% | On Time | Piping | 0,00% | 0% | 0% | 0,00% | 90& |  |
| 610 | 1.7.3.3.1 | Pipe Suport List | 5d | 2026-10-08 | 2026-10-14 | 673FS+3d | 2026-10-08 | 2026-10-14 | 5d | 3d |  | 8h | 0% | On Time | Piping | 0,00% | 0% | 0% | 0,00% | 90& | CHS001-000-PI8-LI-001 |
| 611 | 1.7.3.3.2 | Speciality Intens List | 5d | 2026-10-08 | 2026-10-14 | 673FS+3d | 2026-10-08 | 2026-10-14 | 5d | 3d |  | 8h | 0% | On Time | Piping | 0,00% | 0% | 0% | 0,00% | 90& | CHS001-000-PI8-LI-002 |
| 612 | 1.7.3.3.3 | Piping and acessories Material Take-off | 5d | 2026-10-08 | 2026-10-14 | 673FS+3d | 2026-10-08 | 2026-10-14 | 5d | 3d |  | 8h | 0% | On Time | Piping | 0,00% | 0% | 0% | 0,00% | 90& | CHS001-000-PI8-LI-003 |
| 613 | 1.7.4 | **Electrical** | 15d | 2026-09-28 | 2026-10-16 |  | 2026-09-28 | 2026-10-16 | 15d | 1d |  | 152h | 0% | On Time | Electrical | 0,00% | 0% | 0% | 0,00% | 90& |  |
| 614 | 1.7.4.1 | **Descriptive Memorandum** | 5d | 2026-10-12 | 2026-10-16 |  | 2026-10-12 | 2026-10-16 | 5d | 1d |  | 8h | 0% | On Time | Electrical | 0,00% | 0% | 0% | 0,00% | 90& |  |
| 615 | 1.7.4.1.1 | Descriptive Memorandum | 5d | 2026-10-12 | 2026-10-16 | 626 | 2026-10-12 | 2026-10-16 | 5d | 1d |  | 8h | 0% | On Time | Electrical | 0,00% | 0% | 0% | 0,00% | 90& | CHS001-000-EL1-DM-001 |
| 616 | 1.7.4.2 | **Calculation Sheets** | 5d | 2026-09-28 | 2026-10-02 |  | 2026-09-28 | 2026-10-02 | 5d | 1d | 0d | 40h | 0% | On Time | Electrical | 0,00% | 0% | 0% | 0,00% | 90& |  |
| 617 | 1.7.4.2.1 | Force Calcluation Sheet | 5d | 2026-09-28 | 2026-10-02 | 198 | 2026-09-28 | 2026-10-02 | 5d | 1d |  | 8h | 0% | On Time | Electrical | 0,00% | 0% | 0% | 0,00% | 90& | CHS001-000-EL5-CS-001 |
| 618 | 1.7.4.2.2 | Lighting Calculation Sheet | 5d | 2026-09-28 | 2026-10-02 | 198 | 2026-09-28 | 2026-10-02 | 5d | 1d |  | 8h | 0% | On Time | Electrical | 0,00% | 0% | 0% | 0,00% | 90& | CHS001-000-EL5-CS-002 |
| 619 | 1.7.4.2.3 | Grounding Calculation Sheet | 5d | 2026-09-28 | 2026-10-02 | 198 | 2026-09-28 | 2026-10-02 | 5d | 1d |  | 8h | 0% | On Time | Electrical | 0,00% | 0% | 0% | 0,00% | 90& | CHS001-000-EL5-CS-003 |
| 620 | 1.7.4.2.4 | Lighting Calculation Sheet | 5d | 2026-09-28 | 2026-10-02 | 198 | 2026-09-28 | 2026-10-02 | 5d | 1d |  | 8h | 0% | On Time | Electrical | 0,00% | 0% | 0% | 0,00% | 90& | CHS001-000-EL5-CS-004 |
| 621 | 1.7.4.2.5 | Heat tracing Calculation Sheet | 5d | 2026-09-28 | 2026-10-02 | 198 | 2026-09-28 | 2026-10-02 | 5d | 1d |  | 8h | 0% | On Time | Electrical | 0,00% | 0% | 0% | 0,00% | 90& | CHS001-000-EL5-CS-005 |
| 622 | 1.7.4.3 | **Electrical Studies** | 10d | 2026-10-05 | 2026-10-16 |  | 2026-10-05 | 2026-10-16 | 10d | 1d |  | 24h | 0% | On Time | Electrical | 0,00% | 0% | 0% | 0,00% | 90& |  |
| 623 | 1.7.4.3.1 | Electrical Studies -Coordination and Selectivity | 10d | 2026-10-05 | 2026-10-16 | 616 | 2026-10-05 | 2026-10-16 | 10d | 1d |  | 8h | 0% | On Time | Electrical | 0,00% | 0% | 0% | 0,00% | 90& | CHS001-000-EL5-RE-001 |
| 624 | 1.7.4.3.2 | Electrical Studies - Power Flow | 10d | 2026-10-05 | 2026-10-16 | 616 | 2026-10-05 | 2026-10-16 | 10d | 1d |  | 8h | 0% | On Time | Electrical | 0,00% | 0% | 0% | 0,00% | 90& | CHS001-000-EL5-RE-002 |
| 625 | 1.7.4.3.3 | Electrical Studies - Short-Circuit | 10d | 2026-10-05 | 2026-10-16 | 616 | 2026-10-05 | 2026-10-16 | 10d | 1d |  | 8h | 0% | On Time | Electrical | 0,00% | 0% | 0% | 0,00% | 90& | CHS001-000-EL5-RE-003 |
| 626 | 1.7.4.4 | **Plans** | 5d | 2026-10-05 | 2026-10-09 |  | 2026-10-05 | 2026-10-09 | 5d | 1d | 0d | 48h | 0% | On Time | Electrical | 0,00% | 0% | 0% | 0,00% | 90& |  |
| 627 | 1.7.4.4.1 | Power Distribution Plan -Part 01 | 5d | 2026-10-05 | 2026-10-09 | 673 | 2026-10-05 | 2026-10-09 | 5d | 1d |  | 6h | 0% | On Time | Electrical | 0,00% | 0% | 0% | 0,00% | 90& | CHS001-000-EL3-DR-001 |
| 628 | 1.7.4.4.2 | Power Distribution Plan -Part 02 | 5d | 2026-10-05 | 2026-10-09 | 673 | 2026-10-05 | 2026-10-09 | 5d | 1d |  | 6h | 0% | On Time | Electrical | 0,00% | 0% | 0% | 0,00% | 90& | CHS001-000-EL3-DR-002 |
| 629 | 1.7.4.4.3 | Heat tracing Plan- part 01 | 5d | 2026-10-05 | 2026-10-09 | 673 | 2026-10-05 | 2026-10-09 | 5d | 1d |  | 6h | 0% | On Time | Electrical | 0,00% | 0% | 0% | 0,00% | 90& | CHS001-000-EL3-DR-003 |
| 630 | 1.7.4.4.4 | Heat tracing Plan- part 02 | 5d | 2026-10-05 | 2026-10-09 | 673 | 2026-10-05 | 2026-10-09 | 5d | 1d |  | 6h | 0% | On Time | Electrical | 0,00% | 0% | 0% | 0,00% | 90& | CHS001-000-EL3-DR-004 |
| 631 | 1.7.4.4.5 | Ligthing Protection Plan- Part 01 | 5d | 2026-10-05 | 2026-10-09 | 673 | 2026-10-05 | 2026-10-09 | 5d | 1d |  | 6h | 0% | On Time | Electrical | 0,00% | 0% | 0% | 0,00% | 90& | CHS001-000-EL3-DR-005 |
| 632 | 1.7.4.4.6 | Ligthing Protection Plan- Part 02 | 5d | 2026-10-05 | 2026-10-09 | 673 | 2026-10-05 | 2026-10-09 | 5d | 1d |  | 6h | 0% | On Time | Electrical | 0,00% | 0% | 0% | 0,00% | 90& | CHS001-000-EL3-DR-006 |
| 633 | 1.7.4.4.7 | Area Classification Plan | 5d | 2026-10-05 | 2026-10-09 | 673 | 2026-10-05 | 2026-10-09 | 5d | 1d |  | 6h | 0% | On Time | Electrical | 0,00% | 0% | 0% | 0,00% | 90& | CHS001-000-EL3-DR-007 |
| 634 | 1.7.4.4.8 | Grounding Plan | 5d | 2026-10-05 | 2026-10-09 | 673 | 2026-10-05 | 2026-10-09 | 5d | 1d |  | 6h | 0% | On Time | Electrical | 0,00% | 0% | 0% | 0,00% | 90& | CHS001-000-EL3-DR-008 |

| ID | WBS | Task | Duration | Start | Finish | Predecessors | Baseline start | Baseline finish | Baseline duration | Total slack | Work | Text3 | Status1 | Disciplina | %Desvio Padrão | % Previsto Reprog. | Text12 | Text15 | Fase | NA DOCUMENT NUMBER |
| --- | --- | --- | --- | --- | --- | --- | --- | --- | --- | --- | --- | --- | --- | --- | --- | --- | --- | --- | --- | --- |
| 635 | 1.7.4.5 | **Lists** | 7d | 2026-10-05 | 2026-10-13 |  | 2026-10-05 | 2026-10-13 | 7d | 4d | 24h | 0% | On Time | Electrical | 0,00% | 0% | 0% | 0,00% | 90& |  |
| 636 | 1.7.4.5.1 | Force ditribution - Material Takeoff | 7d | 2026-10-05 | 2026-10-13 | 673 | 2026-10-05 | 2026-10-13 | 7d | 4d | 8h | 0% | On Time | Electrical | 0,00% | 0% | 0% | 0,00% | 90& | CHS001-000-EL8-LI-001 |
| 637 | 1.7.4.5.2 | Lighting - Material Takeoff | 7d | 2026-10-05 | 2026-10-13 | 673 | 2026-10-05 | 2026-10-13 | 7d | 4d | 8h | 0% | On Time | Electrical | 0,00% | 0% | 0% | 0,00% | 90& | CHS001-000-EL8-LI-002 |
| 638 | 1.7.4.5.3 | Grounding and Lighting Protection Sytem - Material Takeoff | 7d | 2026-10-05 | 2026-10-13 | 673 | 2026-10-05 | 2026-10-13 | 7d | 4d | 8h | 0% | On Time | Electrical | 0,00% | 0% | 0% | 0,00% | 90& | CHS001-000-EL8-LI-003 |
| 639 | 1.7.4.6 | **Single Line Diagram** | 5d | 2026-09-28 | 2026-10-02 |  | 2026-09-28 | 2026-10-02 | 5d | 11d | 8h | 0% | On Time | Electrical | 0,00% | 0% | 0% | 0,00% | 90& |  |
| 640 | 1.7.4.6.1 | Single Line Diagram | 5d | 2026-09-28 | 2026-10-02 | 198 | 2026-09-28 | 2026-10-02 | 5d | 11d | 8h | 0% | On Time | Electrical | 0,00% | 0% | 0% | 0,00% | 90& | CHS001-000-EL2-DR-001 |
| 641 | 1.7.5 | **Civil** | 11d | 2026-10-05 | 2026-10-19 |  | 2026-10-05 | 2026-10-19 | 11d | 0d | 64h | 0% | On Time | Civil | 0,00% | 0% | 0% | 0,00% | 90& |  |
| 642 | 1.7.5.1 | **Descriptive Memorandum** | 3d | 2026-10-15 | 2026-10-19 |  | 2026-10-15 | 2026-10-19 | 3d | 0d | 8h | 0% | On Time | Civil | 0,00% | 0% | 0% | 0,00% | 90& |  |
| 643 | 1.7.5.1.1 | Descriptive Memorandum | 3d | 2026-10-15 | 2026-10-19 | 652FF | 2026-10-15 | 2026-10-19 | 3d | 0d | 8h | 0% | On Time | Civil | 0,00% | 0% | 0% | 0,00% | 90& | CHS001-000-CV1-DM-001 |
| 644 | 1.7.5.2 | **Plans** | 7d | 2026-10-05 | 2026-10-13 |  | 2026-10-05 | 2026-10-13 | 7d | 0d | 48h | 0% | On Time | Civil | 0,00% | 0% | 0% | 0,00% | 90& |  |
| 645 | 1.7.5.2.1 | Fundation Location Plan | 7d | 2026-10-05 | 2026-10-13 | 673 | 2026-10-05 | 2026-10-13 | 7d | 0d | 8h | 0% | On Time | Civil | 0,00% | 0% | 0% | 0,00% | 90& | CHS001-000-CV2-DR-001 |
| 646 | 1.7.5.2.2 | Mebrane Building - Formwork Plan | 7d | 2026-10-05 | 2026-10-13 | 673 | 2026-10-05 | 2026-10-13 | 7d | 0d | 8h | 0% | On Time | Civil | 0,00% | 0% | 0% | 0,00% | 90& | CHS001-000-CV4-DR-001 |
| 647 | 1.7.5.2.3 | Piperack and Steel Structure - Formwork Plan | 7d | 2026-10-05 | 2026-10-13 | 673 | 2026-10-05 | 2026-10-13 | 7d | 0d | 8h | 0% | On Time | Civil | 0,00% | 0% | 0% | 0,00% | 90& | CHS001-000-CV4-DR-002 |
| 648 | 1.7.5.2.4 | Evaporator- Formwork Plan | 7d | 2026-10-05 | 2026-10-13 | 673 | 2026-10-05 | 2026-10-13 | 7d | 0d | 8h | 0% | On Time | Civil | 0,00% | 0% | 0% | 0,00% | 90& | CHS001-000-CV4-DR-003 |
| 649 | 1.7.5.2.5 | Striper Column and reboiler - Formwork Plan | 7d | 2026-10-05 | 2026-10-13 | 673 | 2026-10-05 | 2026-10-13 | 7d | 0d | 8h | 0% | On Time | Civil | 0,00% | 0% | 0% | 0,00% | 90& | CHS001-000-CV4-DR-004 |
| 650 | 1.7.5.2.6 | Feed tank and vessel - Formwork Plan | 7d | 2026-10-05 | 2026-10-13 | 673 | 2026-10-05 | 2026-10-13 | 7d | 0d | 8h | 0% | On Time | Civil | 0,00% | 0% | 0% | 0,00% | 90& | CHS001-000-CV4-DR-005 |
| 651 | 1.7.5.3 | **List** | 4d | 2026-10-14 | 2026-10-19 |  | 2026-10-14 | 2026-10-19 | 4d | 0d | 8h | 0% | On Time | Civil | 0,00% | 0% | 0% | 0,00% | 90& |  |
| 652 | 1.7.5.3.1 | Material Take-off | 4d | 2026-10-14 | 2026-10-19 | 644 | 2026-10-14 | 2026-10-19 | 4d | 0d | 8h | 0% | On Time | Civil | 0,00% | 0% | 0% | 0,00% | 90& | CHS001-000-CV8-LI-001 |
| 653 | 1.7.6 | **Steel Structure** | 11d | 2026-10-05 | 2026-10-19 |  | 2026-10-05 | 2026-10-19 | 11d | 0d | 56h | 0% | On Time | Steel Structure | 0,00% | 0% | 0% | 0,00% | 90& |  |
| 654 | 1.7.6.1 | **Descriptive Memorandum** | 4d | 2026-10-14 | 2026-10-19 |  | 2026-10-14 | 2026-10-19 | 4d | 0d | 8h | 0% | On Time | Steel Structure | 0,00% | 0% | 0% | 0,00% | 90& |  |
| 655 | 1.7.6.1.1 | Descriptive Memorandun | 4d | 2026-10-14 | 2026-10-19 | 656 | 2026-10-14 | 2026-10-19 | 4d | 0d | 8h | 0% | On Time | Steel Structure | 0,00% | 0% | 0% | 0,00% | 90& | CHS001-000-ST1-DM-001 |
| 656 | 1.7.6.2 | **Steel Structure Plans** | 7d | 2026-10-05 | 2026-10-13 |  | 2026-10-05 | 2026-10-13 | 7d | 0d | 40h | 0% | On Time | Steel Structure | 0,00% | 0% | 0% | 0,00% | 90& |  |
| 657 | 1.7.6.2.1 | Steel Structure - Menbrana Building - Plan e Details - Part 01 | 7d | 2026-10-05 | 2026-10-13 | 673 | 2026-10-05 | 2026-10-13 | 7d | 0d | 8h | 0% | On Time | Steel Structure | 0,00% | 0% | 0% | 0,00% | 90& | CHS001-000-ST4-DR-001 |
| 658 | 1.7.6.2.2 | Steel Structure - Menbrana Building - Plan e Details - Part 02 | 7d | 2026-10-05 | 2026-10-13 | 673 | 2026-10-05 | 2026-10-13 | 7d | 0d | 8h | 0% | On Time | Steel Structure | 0,00% | 0% | 0% | 0,00% | 90& | CHS001-000-ST4-DR-002 |
| 659 | 1.7.6.2.3 | Steel Structure - Menbrana Building - Plan e Details - Part 03 | 7d | 2026-10-05 | 2026-10-13 | 673 | 2026-10-05 | 2026-10-13 | 7d | 0d | 8h | 0% | On Time | Steel Structure | 0,00% | 0% | 0% | 0,00% | 90& | CHS001-000-ST4-DR-003 |
| 660 | 1.7.6.2.4 | Steel Structure - Piperack- - Plan e Details - Part 01 | 7d | 2026-10-05 | 2026-10-13 | 673 | 2026-10-05 | 2026-10-13 | 7d | 0d | 8h | 0% | On Time | Steel Structure | 0,00% | 0% | 0% | 0,00% | 90& | CHS001-000-ST4-DR-004 |
| 661 | 1.7.6.2.5 | Steel Structure - Piperack- - Plan e Details - Part 02 | 7d | 2026-10-05 | 2026-10-13 | 673 | 2026-10-05 | 2026-10-13 | 7d | 0d | 8h | 0% | On Time | Steel Structure | 0,00% | 0% | 0% | 0,00% | 90& | CHS001-000-ST4-DR-005 |

| ID | WBS | Task | Duration | Start | Finish | Predecessors | Baseline start | Baseline finish | Baseline duration | Total slack | Work | Text3 | Status1 | Disciplina | %Desvio Padrão | % Previsto Reprog. | Text12 | Text15 | Fase | NA DOCUMENT NUMBER |
| --- | --- | --- | --- | --- | --- | --- | --- | --- | --- | --- | --- | --- | --- | --- | --- | --- | --- | --- | --- | --- |
| 662 | 1.7.6.3 | **List** | 10d | 2026-10-05 | 2026-10-16 |  | 2026-10-05 | 2026-10-16 | 10d | 1d | 8h | 0% | On Time | Steel Structure | 0,00% | 0% | 0% | 0,00% | 90& |  |
| 663 | 1.7.6.3.1 | Steel Structure - Material takeoff | 10d | 2026-10-05 | 2026-10-16 | 673 | 2026-10-05 | 2026-10-16 | 10d | 1d | 8h | 0% | On Time | Steel Structure | 0,00% | 0% | 0% | 0,00% | 90& | CHS001-000-ST8-LI-001 |
| 664 | 1.7.7 | **Infrastrcutre** | 11d | 2026-10-05 | 2026-10-19 |  | 2026-10-05 | 2026-10-19 | 11d | 0d | 40h | 0% | On Time | Infrastructure | 0,00% | 0% | 0% | 0,00% | 90& |  |
| 665 | 1.7.7.1 | **Descriptive Memorandum** | 3d | 2026-10-15 | 2026-10-19 |  | 2026-10-15 | 2026-10-19 | 3d | 0d | 8h | 0% | On Time | Infrastructure | 0,00% | 0% | 0% | 0,00% | 90& |  |
| 666 | 1.7.7.1.1 | Descriptive Memorandun | 3d | 2026-10-15 | 2026-10-19 | 672 | 2026-10-15 | 2026-10-19 | 3d | 0d | 8h | 0% | On Time | Infrastructure | 0,00% | 0% | 0% | 0,00% | 90& | CHS001-000-IH1-DM-001 |
| 667 | 1.7.7.2 | **Infrastrcutre Plans** | 5d | 2026-10-05 | 2026-10-09 |  | 2026-10-05 | 2026-10-09 | 5d | 0d | 24h | 0% | On Time | Infrastructure | 0,00% | 0% | 0% | 0,00% | 90& |  |
| 668 | 1.7.7.2.1 | Storn Water Plan | 5d | 2026-10-05 | 2026-10-09 | 673 | 2026-10-05 | 2026-10-09 | 5d | 0d | 8h | 0% | On Time | Infrastructure | 0,00% | 0% | 0% | 0,00% | 90& | CHS001-000-IH4-DR-001 |
| 669 | 1.7.7.2.2 | Effluent Discharge Plan | 5d | 2026-10-05 | 2026-10-09 | 673 | 2026-10-05 | 2026-10-09 | 5d | 0d | 8h | 0% | On Time | Infrastructure | 0,00% | 0% | 0% | 0,00% | 90& | CHS001-000-IH4-DR-002 |
| 670 | 1.7.7.2.3 | Undergound Plan | 5d | 2026-10-05 | 2026-10-09 | 673 | 2026-10-05 | 2026-10-09 | 5d | 0d | 8h | 0% | On Time | Infrastructure | 0,00% | 0% | 0% | 0,00% | 90& | CHS001-000-IH4-DR-003 |
| 671 | 1.7.7.3 | **List** | 3d | 2026-10-12 | 2026-10-14 |  | 2026-10-12 | 2026-10-14 | 3d | 0d | 8h | 0% | On Time | Infrastructure | 0,00% | 0% | 0% | 0,00% | 90& |  |
| 672 | 1.7.7.3.1 | Infrastrcutre - Material takeoff | 3d | 2026-10-12 | 2026-10-14 | 667 | 2026-10-12 | 2026-10-14 | 3d | 0d | 8h | 0% | On Time | Infrastructure | 0,00% | 0% | 0% | 0,00% | 90& | CHS001-000-IH8-LI-001 |
| 673 | 1.7.8 | **3D Model** | 5d | 2026-09-28 | 2026-10-02 |  | 2026-09-28 | 2026-10-02 | 5d | 0d | 288h | 0% | On Time | 3D | 0,00% | 0% | 0% | 0,00% | 90& |  |
| 674 | 1.7.8.1 | Infrastructure | 5d | 2026-09-28 | 2026-10-02 | 198 | 2026-09-28 | 2026-10-02 | 5d | 0d | 8h | 0% | On Time | 3D | 0,00% | 0% | 0% | 0,00% | 90& | CHS001-000-IHM-3D-001 |
| 675 | 1.7.8.2 | Civil | 5d | 2026-09-28 | 2026-10-02 | 198 | 2026-09-28 | 2026-10-02 | 5d | 0d | 8h | 0% | On Time | 3D | 0,00% | 0% | 0% | 0,00% | 90& | CHS001-000-CVM-3D-001 |
| 676 | 1.7.8.3 | Steel Structure | 5d | 2026-09-28 | 2026-10-02 | 198 | 2026-09-28 | 2026-10-02 | 5d | 0d | 8h | 0% | On Time | 3D | 0,00% | 0% | 0% | 0,00% | 90& | CHS001-000-STM-3D-001 |
| 677 | 1.7.8.4 | Mechanical | 5d | 2026-09-28 | 2026-10-02 | 198 | 2026-09-28 | 2026-10-02 | 5d | 0d | 24h | 0% | On Time | 3D | 0,00% | 0% | 0% | 0,00% | 90& | CHS001-000-MEM-3D-001 |
| 678 | 1.7.8.5 | Piping | 5d | 2026-09-28 | 2026-10-02 | 198 | 2026-09-28 | 2026-10-02 | 5d | 0d | 160h | 0% | On Time | 3D | 0,00% | 0% | 0% | 0,00% | 90& | CHS001-000-PIM-3D-001 |
| 679 | 1.7.8.6 | Electric | 5d | 2026-09-28 | 2026-10-02 | 198 | 2026-09-28 | 2026-10-02 | 5d | 0d | 40h | 0% | On Time | 3D | 0,00% | 0% | 0% | 0,00% | 90& | CHS001-000-ELM-3D-001 |
| 680 | 1.7.8.7 | Instrumentation | 5d | 2026-09-28 | 2026-10-02 | 198 | 2026-09-28 | 2026-10-02 | 5d | 0d | 40h | 0% | On Time | 3D | 0,00% | 0% | 0% | 0,00% | 90& | CHS001-000-IAM-3D-001 |
